# L9911 Raw Water Intake Facility Installation

Schedule from Primavera P6, 2024-09-23 to 2024-11-21, data date 2024-09-22.

## Calendars

- PCL 5day Workweek w Holidays: Mon-Fri 07:00-12:00, 12:30-17:30; Sat-Sun off. Exceptions (off unless hours are given): 2024-10-14 08:00-16:00, 2024-11-11.

## Resources

| Resource | Group |
| --- | --- |
| Subcontractor | labor |
| Civil | labor |
| Mechanical | labor |
| Pipe | labor |
| Electrical | labor |
| Instrumentation | labor |
| Indirect - Staff | labor |

## Schedule

| ID | WBS | Activity | Duration | Start | Finish | Predecessors | Total float | Free float | Resources |
| --- | --- | --- | --- | --- | --- | --- | --- | --- | --- |
|  | 3 | **Construction** |  | 2024-09-23 | 2024-11-21 |  |  |  |  |
|  | 1 | **Civil** |  | 2024-09-23 | 2024-11-05 |  |  |  |  |
| CON-CIV-1000 |  | Install Pile | 10d | 2024-09-23 | 2024-10-04 |  | 0d |  | Subcontractor [254.24 h]; Civil [753.76 h] |
| CON-CIV-1010 |  | Excavation & Backfill | 3d | 2024-10-31 | 2024-11-05 | CON-ELE-1030 | 11d |  | Civil [32 h] |
|  | 2 | **Mechanical** |  | 2024-10-07 | 2024-11-08 |  |  |  |  |
| CON-MECH-1000 |  | Level Rig and Align Pump Module(WLP1) | 4d | 2024-10-07 | 2024-10-10 | CON-CIV-1000 | 0d |  | Mechanical [409 h] |
| CON-MECH-1010 |  | Install Pump Platform and Walkway(WPP1) | 3d | 2024-10-11 | 2024-10-16 | CON-MECH-1000 | 0d |  | Mechanical [371 h] |
| CON-MECH-1020 |  | Align Final and Stress Pipe Pumps | 3d | 2024-10-16 | 2024-10-21 | CON-MECH-1010 | 0d |  | Mechanical [312 h] |
| CON-MECH-1030 |  | Rig, Level, and Align Valve Module(WPV1) | 4d | 2024-10-16 | 2024-10-22 | CON-MECH-1020 SS | 0d |  | Mechanical [412 h] |
| CON-MECH-1040 |  | Install Platform Handrails and Stairs | 3d | 2024-10-22 | 2024-10-25 | CON-MECH-1030 | 8d | 0d | Mechanical [399 h] |
| CON-MECH-1050 |  | Install Catwalks 6 tons(WPP1) | 10d | 2024-10-25 | 2024-11-08 | CON-MECH-1040 | 8d | 0d | Mechanical [2359 h] |
| CON-MECH-1060 |  | Weld Support Header | 4d | 2024-11-04 | 2024-11-08 | CON-MECH-1050 FF | 8d |  | Mechanical [509 h] |
|  | 3 | **Piping** |  | 2024-09-30 | 2024-11-04 |  |  |  |  |
| CON-PIPE-1000 |  | Install Piping | 25d | 2024-09-30 | 2024-11-04 | CON-CIV-1000 SS+5d | 12d | 0d | Pipe [3056 h] |
| CON-PIPE-1010 |  | Pipe Testing | 5d | 2024-10-28 | 2024-11-04 | CON-PIPE-1000 FF | 12d |  | Pipe [540 h] |
|  | 4 | **Electrical** |  | 2024-10-29 | 2024-11-18 |  |  |  |  |
| CON-ELE-1030 |  | Cable Tray | 2d | 2024-10-29 | 2024-10-31 | CON-MECH-1030 FS+5d | 0d |  | Electrical [124 h] |
| CON-ELE-1000 |  | Install Low Voltage Cables | 6d | 2024-10-31 | 2024-11-08 | CON-ELE-1030 | 0d |  | Electrical [935 h] |
| CON-ELE-1010 |  | Install Medium Voltage Cables | 1d | 2024-11-07 | 2024-11-08 | CON-ELE-1000 FF | 0d |  | Electrical [78 h] |
| CON-ELE-1050 |  | Grounding System | 3d | 2024-11-08 | 2024-11-14 | CON-ELE-1010 | 0d |  | Electrical [252 h] |
| CON-ELE-1020 |  | Terminations | 3d | 2024-11-13 | 2024-11-18 | CON-ELE-1070 FF | 0d |  | Electrical [263 h] |
| CON-ELE-1040 |  | Conduit System | 1d | 2024-11-13 | 2024-11-14 | CON-ELE-1050 FF | 0d |  | Electrical [113 h] |
| CON-ELE-1060 |  | Install Electrical Equipment | 2d | 2024-11-14 | 2024-11-18 | CON-ELE-1040 | 0d |  | Electrical [132 h] |
| CON-ELE-1070 |  | Install Light Fixtures | 2d | 2024-11-14 | 2024-11-18 | CON-ELE-1060 SS | 0d |  | Electrical [204 h] |

| ID | WBS | Activity | Type | Duration | Start | Finish | Predecessors | Total float | Resources |
| --- | --- | --- | --- | --- | --- | --- | --- | --- | --- |
|  | 5 | **Instrumentation** |  |  | 2024-11-18 | 2024-11-21 |  |  |  |
| CON-INS-1000 |  | Install Instrumentation |  | 2d | 2024-11-18 | 2024-11-20 | CON-ELE-1020 | 0d | Instrumentation [49 h] |
| CON-INS-1010 |  | Instrumentation Testing |  | 1d | 2024-11-20 | 2024-11-21 | CON-INS-1000 | 0d |  |
|  | 6 | **Craft Support - Indirects** |  |  | 2024-09-25 | 2024-11-20 |  |  |  |
| CON-CFS-1000 |  | Craft Support - Indirects | level of effort | 39d | 2024-09-25 | 2024-11-20 | CON-CIV-1000 SS+2d, CON-INS-1000 FF | 0d | Indirect - Staff [3676 h] |
