# WOLF SUMMIT - KINDLE ENERGY - WSC SCHEDULE - JV Current

Schedule from Primavera P6, 2025-12-10 to 2028-07-20, data date 2026-01-11, A marks actual dates.

## Calendars

- WSC 10hr 5day with Holidays: Mon-Fri 06:00-12:00, 13:00-17:00; Sat-Sun off. Exceptions (off unless hours are given): 2025-12-25 to 2025-12-26, 2026-01-01, 2026-02-16, 2026-05-25, 2026-07-03, 2026-09-07, 2026-11-26 to 2026-11-27, 2026-12-24 to 2026-12-25, 2026-12-28 06:00-12:00, 13:00-17:00, 2027-01-01, 2027-02-15, 2027-05-31, 2027-07-05, 2027-09-06, 2027-11-25 to 2027-11-26, 2027-12-24, 2027-12-27, 2027-12-31, 2028-02-21, 2028-05-29, 2028-07-04.
- 10hr 7day No Holidays: Mon-Sun 8:00-18:00.
- Standard 7 Day Workweek: Mon-Sun 08:00-12:00, 13:00-17:00.
- 7 Day Workweek: Mon-Sun 7:00-17:00.
- 7-Day Workweek: Mon-Sun 08:00-16:00.

## Resources

| Resource | Group |
| --- | --- |
| Mechanical | labor |
| Structural Steel | labor |
| Subcontractor | labor |
| Electrical | labor |
| Concrete | labor |
| Pipe | labor |

## Schedule

| WBS | Activity |
| --- | --- |
| U1 | **Owner** |
| OWMS | **Owner Obligations** |
| PRMS | **Project Major Milestones** |
| CMMS | **Contractor Major Milestones** |
| 1 | **Baker** |
| 2 | **WSC** |
| PIE | **Owner Supplied Power Island Equipment and Engineering** |
| ENG | **GE Drawings Schedule** |
| MS | **Contract Milestones** |
| 1 | **Gas Turbine Drawings Schedule and Descriptions** |
| 2 | **Generator Drawing Schedule and Descriptions** |
| 3 | **Steam Turbine Drawing Schedule and Descriptions** |
| 4 | **Heat Recovery Steam Generator (HRSG) Drawing Schedule and Descriptions** |
| 5 | **HRSG Deign Input** |
| 6 | **DCS Drawing Schedule and Descriptions** |
| 7 | **BOP - Bypass Valves Drawing Schedule and Descriptions** |
| 8 | **BOP - CEMS Drawing Schedule and Descriptions** |
| 9 | **BOP - Systems Drawing Schedule and Descriptions** |
| GEMAJ | **GE MAJOR Equipment and Deliveries** |
| GEMIN | **GE MINOR Equipment and Deliveries** |
| OPER | **Owner Supplied Permits** |
| BOPE | **Owner Supplied BOP Equipment** |
| 1 | **MAJOR MECHANICAL** |
| AUXB | **5011 - Auxiliary Boiler Package (Including Stack, Tanks, Feed Pumps, Regulation)** |
| CCWHX | **5390 - CCW Heat Exchangers (Fin Fan Coolers)** |
| FG3 | **5040 - Fuel Gas Performance (Water Bath) Heater** |
| FG1 | **5041 - Fuel Gas reg valves / isolation valves (regulating station) - Aux Boiler and Duct Burner** |
| FG2 | **5041 - Fuel Gas reg valves / isolation valves (regulating station) - Main** |
| FG31 | **5041 - Fuel Gas Knockout Drum** |
| FG32 | **5040 - Fuel Gas Drains Tank** |
| ACC | **5050 - Air Cooled Condenser (ACC)** |
| 2 | **MINOR MECHANICAL** |
| SHOWER | **5150 - Safety Showers and Eyewash Stations ( w/ heaters )** |
| BFWP | **5162 - Boiler Feed Water Pumps HP** |
| BFWPST | **5162 - Suction Strainers - Boiler Feed Water Pumps** |
| CONDP | **5163 - Condensate Pumps (100% Base Load)** |
| CONDPST | **5163 - Suction Strainers - Condensate Pumps** |
| CCWP | **5168 - Closed Cooling Water Pumps w/ Motors - (2X100%)** |
| CONDDR | **5168 - Pumps, Condenate Drains Forwarding - Skid (2X100%)** |
| SWP | **5168 - Pumps, Service Water Forwarding - Skid (2x100%)** |
| DWP | **5168 - Pumps, Demin Water Forwarding - Skid (2x100%)** |
| WWP | **5168 - Pumps, Wastewater** |
| SUMP | **5168 - Pumps, sumps Miscellaneous** |
| SUMPHRSG | **5168 - Pumps, sumps HRSG Blowdown** |
| SUMPOIL | **5168 - Pumps, sumps Turbine Bldg - Oily Water** |
| SUMPWW | **5168 - Pumps, sumps Facility Wastewater** |
| AMMFW | **5022 - Pumps Ammonia Forwarding - Skid (2x100%)** |
| VALVE1 | **4116 - Valves - Gate, Globe, Ball, Butterfly & Check** |
| VALVE2 | **4121 - Valves, Control** |
| ADMIN111 | **4125 - Valve, Safety Relief** |
| FWP | **5171 - Fire Water Pump House** |
| SAMP | **5182 - Steam & Water Sampling System** |
| CHEMCYCLE | **5184 - Chemical Feed System - Cycle** |
| CHEMTANK | **5395 - Tote - Chem Feed Systems (Main & Aux Boiler Systems)** |
| COMP | **5185 - Air Compressors (2X100%) 5185 - w dryers, filters, receivers** |
| SUPPORTS | **4130 - Engineered Pipe Supports** |
| SILENCERS | **5391 - Vent Silencers** |
| 3 | **ELECTRICAL** |
| GSU | **5201 - Main Step-up Transformers (GSU)** |
| UAT | **5202 - Auxiliary Transformers (SST)** |
| ISOP | **5206 - 23kV Iso-Phase Bus** |
| BUS1 | **5208 - 600 LVDC Bus excitation** |
| RELAY | **5211 - Relay Protection & Metering** |
| RTU | **5211 - RTU** |
| BUS3 | **5208 - 6.9kV Non-Seg Bus** |
| HVB | **5222 - High Voltage Plant Switch Yard Breakers** |
| HVS | **5221 - High Voltage Plant Switch Yard Disconnects** |
| MVXMFR | **5218 - Stand Alone MV (6.9kV) Pad Mount Transformers** |
| LV Gear | **5215 - LV PDC with MCC** |
| LVXMFR | **5219 - Stand Alone LV (480V) Auxiliary Pad Mount Transformers** |

| ID | WBS | Activity | Duration | Start | Finish | Predecessors | Total float | Free float | Calendar | Crew Size | WS EPC | WS Resp | WS Area |
| --- | --- | --- | --- | --- | --- | --- | --- | --- | --- | --- | --- | --- | --- |
|  | LVMCC | **5212 - Stand Alone LV - 480V MCC's & Switchgear** |  |  |  |  |  |  |  |  |  |  |  |
|  | ACCPDC | **5216 - ACC PDC with MCCs** |  |  |  |  |  |  |  |  |  |  |  |
|  | BOPPDC | **5216 - BOP PDC with MCCs** |  |  |  |  |  |  |  |  |  |  |  |
|  | MV Gear | **5216 - MV PDC With 6.9 kV Switchgear and MCC** |  |  |  |  |  |  |  |  |  |  |  |
|  | DCUPS | **5230 - DC Power & UPS System w/ Batteries** |  |  |  |  |  |  |  |  |  |  |  |
|  | INST | **4501 - Field Instruments** |  |  |  |  |  |  |  |  |  |  |  |
|  | INST1 | **4521 - Instrument Enclosures** |  |  |  |  |  |  |  |  |  |  |  |
|  | EDG | **5240 - Standby Diesel Generator (1,250kW)** |  |  |  |  |  |  |  |  |  |  |  |
|  | COMM | **4365 - Communications and Security Systems** |  |  |  |  |  |  |  |  |  |  |  |
|  | 4 | **MISC EQUIPMENT AND TANKS** |  |  |  |  |  |  |  |  |  |  |  |
|  | OWS | **5375 - Oil & Water Separator** |  |  |  |  |  |  |  |  |  |  |  |
|  | BDHX | **5390 - Blowdown Heat Exchanger** |  |  |  |  |  |  |  |  |  |  |  |
|  | AMMTANK | **5395 - Tanks, Shop Fab, Metal (Ammonia Storage Tank) - 20,000gal** |  |  |  |  |  |  |  |  |  |  |  |
|  | VACT | **5395 - Tanks, Shop Fab, Metal (Vacum Drains Tank)** |  |  |  |  |  |  |  |  |  |  |  |
|  | CTTANK | **5395 - Tanks, Shop Fab, Metal (CT False Start Drains Tanks)** |  |  |  |  |  |  |  |  |  |  |  |
|  | CCWTANK | **5395 - Tanks, Shop Fab, Metal (CCW Expansion Tank)** |  |  |  |  |  |  |  |  |  |  |  |
|  | STTANK | **5395 - Tanks, Shop Fab, Metal (ST Atmospheric Drains Tank)** |  |  |  |  |  |  |  |  |  |  |  |
|  | CITTANK | **5395 - Tanks, Shop Fab, (Leak detection separator tank)** |  |  |  |  |  |  |  |  |  |  |  |
|  | CONDTANK | **5395 - Tanks, Shop Fab, Metal (Condensate Drains / Receiver Tank)** |  |  |  |  |  |  |  |  |  |  |  |
|  | OSE | **Owner Supplied Engineering** |  |  |  |  |  |  |  |  |  |  |  |
|  | ENG | **Engineering** |  |  |  |  |  |  |  |  |  |  |  |
|  | CSA | **CSA** |  |  |  |  |  |  |  |  |  |  |  |
|  | PIPE | **Piping** |  |  |  |  |  |  |  |  |  |  |  |
|  | ELEC | **Electrical** |  |  |  |  |  |  |  |  |  |  |  |
|  | OSP | **Owner Supplied Procurement** |  |  |  |  |  |  |  |  |  |  |  |
|  | PROC | **Procurement** |  |  |  |  |  |  |  |  |  |  |  |
|  | CSA | **CSA** |  |  |  |  |  |  |  |  |  |  |  |
|  | MECH | **Mechanical** |  |  |  |  |  |  |  |  |  |  |  |
|  | PIPE | **Piping** |  |  |  |  |  |  |  |  |  |  |  |
|  | ELEC | **Electrical** |  |  |  |  |  |  |  |  |  |  |  |
|  | Contractor | **Construction** |  | 2025-12-10 | 2028-07-20 |  |  |  |  |  |  |  |  |
|  | CSA | **Civil Structural Architectural** |  |  |  |  |  |  |  |  |  |  |  |
|  | 1 | **Site Work** |  |  |  |  |  |  |  |  |  |  |  |
|  | 2 | **Pilings** |  |  |  |  |  |  |  |  |  |  |  |
|  | 3 | **Foundations** |  |  |  |  |  |  |  |  |  |  |  |
|  | 5 | **UG Piping and Ductbank** |  |  |  |  |  |  |  |  |  |  |  |
|  | 4 | **Buildings** |  |  |  |  |  |  |  |  |  |  |  |
|  | ELEC | **GSU Supplier** |  |  |  |  |  |  |  |  |  |  |  |
|  | WSC | **Wolf Summit Constructors** |  | 2025-12-10 | 2028-07-20 |  |  |  |  |  |  |  |  |
|  | 1 | **WSC Procurement** |  | 2026-10-09 | 2027-09-16 |  |  |  |  |  |  |  |  |
| WSC-DEL-STR-1050 |  | Structural Steel Fabrication and Delivery | 140d | 2026-10-09 | 2027-04-30 | WSC-INT-MIL-2030, WSC-INT-MIL-2060 | -119.8d | 0d |  | 0 | PRO | PCL | WS G |
| WSC-DEL-PIP-1050 |  | Fabricate and Deliver LB Piping | 120d | 2027-05-19 | 2027-09-16 | WSC-INT-MIL-2020, WSC-INT-MIL-2070 | 238.9d | 308d | 10hr 7day No Holidays | 0 | PRO | PCL | WS G |
| WSC-DEL-PIP-1060 |  | Fabricate and Deliver SB Piping | 120d | 2027-05-19 | 2027-09-16 | WSC-INT-MIL-2010, WSC-INT-MIL-2080 | 238.9d | 308d | 10hr 7day No Holidays | 0 | PRO | PCL | WS G |

| ID | WBS | Activity | Type | Duration | Start | Finish | Predecessors | Complete | Total float | Free float | Constraint | Calendar | Resources | zInteger_01 | Crew Size | WS Sequence | WS EPC | WS Resp | WS Area | WS Milestone Type | WS Discipline | WS Equipment Set | WS Sub Area | WS CCWA Area |
| --- | --- | --- | --- | --- | --- | --- | --- | --- | --- | --- | --- | --- | --- | --- | --- | --- | --- | --- | --- | --- | --- | --- | --- | --- |
|  | 2 | **WSC Construction** |  |  | 2025-12-10 | 2028-07-20 |  |  |  |  |  |  |  |  |  |  |  |  |  |  |  |  |  |  |
|  | 1 | **General** |  |  | 2025-12-10 | 2028-07-20 |  |  |  |  |  |  |  |  |  |  |  |  |  |  |  |  |  |  |
| WSC-GEN-MIL-1210 |  | WSC Site Mobilization |  | 20d | 2026-03-23 | 2026-04-17 | WSC-CON-MIL1010 |  | -46d | 0d |  |  | Concrete | 0 | 0 | 120 | CON | PCL | WS G |  |  |  |  |  |
|  | 1 | **Milestones** |  |  | 2025-12-10 | 2028-07-20 |  |  |  |  |  |  |  |  |  |  |  |  |  |  |  |  |  |  |
| WSC-CON-MIL1000 |  | KE Wolf Summit WSC Project Start FNTP | milestone | 0d | 2025-12-10 A | 2025-12-10 A |  | 100% |  |  |  |  |  |  | 0 |  | CON | PCL | WS G |  |  |  |  |  |
| WSC-CON-MIL1010 |  | WSC Mobilization To Site | milestone | 0d | 2026-03-23 | 2026-03-23 | WSC-CON-MIL1000 |  | -46d | 0d | start on or after 2026-03-23 |  |  |  | 0 | 120 | CON | PCL | WS G |  |  |  |  |  |
| WSC-CON-MIL1020 |  | WSC Construction Start | milestone | 0d | 2026-04-20 | 2026-04-20 | WSC-GEN-MIL-1210, WSC-CON-MIL1010 |  | -46d | 1d | start on or after 2026-04-20 |  |  |  | 0 | 120 | CON | PCL | WS G |  |  |  |  |  |
| WSC-CON-MIL1030 |  | Set First HRSG Module | milestone | 0d | 2026-07-08 | 2026-07-08 | WSC-HRSG-MEC-1220 |  | 49.6d | 0d |  | 10hr 7day No Holidays |  |  | 0 | 120 | CON | PCL | WS HRSG |  |  |  |  |  |
| WSC-CON-MIL1040 |  | Begin Erection Combustion Turbine Air Intake | milestone | 0d | 2027-03-14 | 2027-03-14 | WSC-CT-MEC-1080 |  | 221.1d | 163.3d |  | 10hr 7day No Holidays |  |  | 0 |  | CON | PCL | WS CT |  |  |  |  |  |
| WSC-CON-MIL1050 |  | Pipe Works Complete | milestone | 0d | 2027-11-05 | 2027-11-05 | WSC-CT-PIP-1000 FF, WSC-CON-MIL1060 FF |  | 96.15d | 258.1d |  | 10hr 7day No Holidays |  |  | 0 |  | CON | PCL | WS G |  |  |  |  |  |
| WSC-CON-MIL1060 |  | Complete Hydro - HRSG | milestone | 0d | 2027-11-05 | 2027-11-05 | WSC-HRSG-MEC-1210 FF |  | 96.15d | 0d |  | 10hr 7day No Holidays |  |  | 0 |  | CON | PCL | WS HRSG |  |  |  |  |  |
| WSC-CON-MIL1070 |  | Civil Works Complete | milestone | 0d | 2027-11-24 | 2027-11-24 | WSC-GEN-CIV-1070 FF, WSC-GEN-CIV-1050 FF, WSC-HRSG-CIV-1040 FF |  | 62.1d | 239d |  | 10hr 7day No Holidays |  |  | 0 |  | CON | PCL | WS G |  |  |  |  |  |
| WSC-CON-MIL1090 |  | Mechanical Works Complete | milestone | 0d | 2028-01-19 | 2028-01-19 | WSC-INT-MIL-1500 FF, WSC-INT-MIL-1070 FF, WSC-HRSG-MEC-1200 FF, WSC-BOP-MEC-1180 FF, WSC-ST-MEC-1070 FF, WSC-HRSG-SUB-1010 FF, WSC-HRSG-MEC-1160 FF, WSC-HRSG-MEC-1140 FF, WSC-HRSG-MEC-1150 FF, WSC-HRSG-MEC-1210 FF, WSC-CT-PIP-1060 FF, WSC-CT-PIP-1070 FF, WSC-GEN-MEC-1020 FF, WSC-ACC-MEC-1100, WSC-ST-MEC-1080 FF, WSC-ST-MEC-1060 FF, WSC-ST-MEC-1050 FF, WSC-CT-MEC-1000 FF, WSC-CT-MEC-1010, WSC-CT-MEC-1090, WSC-CT-MEC-1080 FF, WSC-GEN-MEC-1010 FF, WSC-HRSG-MEC-1200, WSC-HRSG-MEC-1190 FF, WSC-HRSG-MEC-1180 FF, WSC-HRSG-MEC-1170 FF, WSC-CON-MIL1040, WSC-CON-MIL1030 |  | 69.05d | 0d |  | 10hr 7day No Holidays |  |  | 0 |  | CON | PCL | WS G |  |  |  |  |  |
| WSC-CON-MIL1080 |  | Structural Steel Works Complete | milestone | 0d | 2028-01-31 | 2028-01-31 | WSC-ST-MEC-1060 FF, WSC-ACC-STR-1010 FF, WSC-PR-STL-1000 FF, WSC-ST-STR-1000 FF, WSC-BOP-STL-1000 FF, WSC-HRSG-STL-1010 FF, WSC-HRSG-STL-1000 FF, WSC-HRSG-STL-1030 FF, WSC-HRSG-STL-1040 FF, WSC-HRSG-STL-1020 FF, WSC-CT-STR-1000 FF |  | 101.9d | 171d |  | 10hr 7day No Holidays |  |  | 0 |  | CON | PCL | WS G |  |  |  |  |  |
| WSC-CON-MIL1100 |  | Electrical & Instrumentation Works Complete | milestone | 0d | 2028-02-04 | 2028-02-04 | WSC-INT-MIL-1700 FF, WSC-INT-MIL-1710 FF, WSC-ACC-E&I-1010 FF, WSC-ACC-E&I-1000 FF, WSC-PR-E&I-1000 FF, WSC-HRSG-E&I-1000 FF, WSC-CT-E&I-1000 FF, WSC-HRSG-E&I-1010 FF, WSC-HRSG-E&I-1020 FF |  | 97.9d | 167d |  | 10hr 7day No Holidays |  |  | 0 |  | CON | PCL | WS G |  |  |  |  |  |
| WSC-CON-MIL1110 |  | Insulation Works Complete | milestone | 0d | 2028-04-13 | 2028-04-13 | WSC-HRSG-MEC-1170 FF, WSC-HRSG-MEC-1200 FF, WSC-HRSG-SUB-1010 FF, WSC-HRSG-SUB-1000 FF, WSC-CT-SUB-1000 FF, WSC-ARCH-STL-1080 FF, WSC-ST-SUB-1010 FF |  | 28.9d | 28d |  | 10hr 7day No Holidays |  |  | 0 |  | CON | P-SUB | WS G |  |  |  |  |  |
| WSC-CON-MIL1150 |  | First Fire - CT | milestone | 0d | 2028-05-04 | 2028-05-04 | Comm-06 FF |  | 7.9d | 77d |  | 10hr 7day No Holidays |  |  | 0 |  | GEN | Client | WS G |  |  |  |  |  |
| WSC-CON-MIL1120 |  | Prime General Contractor Demobilization | milestone | 0d | 2028-07-20 | 2028-07-20 | WSC-CON-MIL9999 |  | 0d |  |  | 10hr 7day No Holidays |  |  | 0 |  | GEN | Client | WS G |  |  |  |  |  |
| WSC-CON-MIL9990 |  | WSC Mechanical Completion | milestone | 0d | 2028-07-20 | 2028-07-20 | WSC-BOP-MEC-1240 FF, WSC-ST-MEC-1040 FF, WSC-ACC-MEC-1060 FF, WSC-BOP-CIV-1070 FF, WSC-BOP-CIV-1020 FF, WSC-ST-CIV-1210 FF, WSC-GEN-CIV-1200 FF, WSC-WT-CIV-1000 FF, WSC-BOP-CIV-1000 FF, WSC-WT-E&I-1010 FF, WSC-WT-E&I-1080 FF, WSC-WT-E&I-1130 FF, WSC-BOP-E&I-1090 FF, WSC-BOP-E&I-1010 FF, WSC-BOP-E&I-1140 FF, WSC-BOP-MEC-1130 FF, WSC-BOP-E&I-1330 FF, WSC-BOP-E&I-1460 FF, WSC-BOP-E&I-1410 FF, WSC-BOP-CIV-1050 FF, WSC-BOP-E&I-1480 FF, WSC-BOP-E&I-1610 FF, WSC-BOP-E&I-1560 FF, WSC-BOP-STL-1040 FF, WSC-BOP-CIV-1060 FF, WSC-BOP-E&I-1630 FF, WSC-BOP-E&I-1760 FF, WSC-BOP-E&I-1710 FF, WSC-BOP-MEC-1330 FF, WSC-BOP-E&I-1780 FF, WSC-BOP-E&I-1910 FF, WSC-BOP-E&I-1860 FF, WSC-BOP-E&I-2060 FF, WSC-BOP-E&I-2010 FF, WSC-BOP-PIP-1320 FF, WSC-BOP-E&I-2070 FF, WSC-ARCH-STL-1030 FF, WSC-ARCH-SUB-1070 FF, WSC-ARCH-SUB-1040 FF, WSC-PR-CIV-1110 FF, WSC-ACC-CIV-1010 FF, WSC-ACC-CIV-1000 FF, WSC-ST-MEC-1240 FF, WSC-ST-CIV-1220 FF, WSC-HRSG-E&I-1040 FF, WSC-BOP-MEC-1300 FF, WSC-BOP-MEC-1320 FF, WSC-BOP-CIV-1030 FF, WSC-WT-SUB-1000 FF, WSC-WT-MEC-1080 FF, WSC-BOP-MEC-1260 FF, WSC-HRSG-MEC-1350 FF, WSC-HRSG-STL-1150 FF, WSC-HRSG-MEC-1300 FF, WSC-HRSG-MEC-1310 FF, WSC-HRSG-MEC-1320 FF, WSC-HRSG-MEC-1330 FF, WSC-BOP-MEC-1000 FF, WSC-BOP-MEC-1010 FF, WSC-BOP-MEC-1030 FF, WSC-BOP-MEC-1250 FF, WSC-BOP-MEC-1280 FF, WSC-BOP-MEC-1290 FF, WSC-BOP-MEC-1120 FF, WSC-ARCH-STL-1070, WSC-BOP-MEC-1040 FF, WSC-BOP-MEC-1060 FF, WSC-BOP-E&I-1310 FF, WSC-BOP-MEC-1020 FF, WSC-ACC-E&I-1030, WSC-BOP-E&I-1930 FF, WSC-ST-E&I-1000 FF, WSC-GEN-CIV-1190 FF, WSC-CT-CIV-1030 FF, WSC-CT-CIV-1000 FF, WSC-CT-CIV-1010 FF, WSC-CT-MEC-1310 FF, WSC-CT-E&I-1020 FF, WSC-BOP-MEC-1410 FF, WSC-BOP-E&I-1160 FF, WSC-PR-E&I-1020 FF, WSC-PR-E&I-1060 FF, WSC-ARCH-STL-1160, WSC-BOP-STL-1000 FF, WSC-ST-MEC-1060 FF, WSC-ST-MEC-1230, WSC-CON-MIL1070, WSC-CON-MIL1080, WSC-CON-MIL1050, WSC-CON-MIL1090, WSC-CON-MIL1100, WSC-CON-MIL1110, WSC-HRSG-SUB-1000 FF, WSC-CT-SUB-1000 FF, WSC-GEN-CIV-1070 FF, WSC-HRSG-SUB-1010 FF, WSC-ST-SUB-1010 FF, WSC-ARCH-STL-1090 FF, WSC-DEL-PIP-1050, WSC-DEL-PIP-1060, WSC-CON-MIL1150, WSC-INT-MIL-2560, WSC-INT-MIL-2620, WSC-INT-MIL-2650, WSC-INT-MIL-2660, WSC-INT-MIL-2670, WSC-INT-MIL-2740, WSC-INT-MIL-2760, WSC-INT-MIL-2610, WSC-INT-MIL-2640, WSC-INT-MIL-2680, WSC-INT-MIL-2380, WSC-INT-MIL-2390, WSC-INT-MIL-2400, WSC-INT-MIL-2630, WSC-INT-MIL-2410, WSC-INT-MIL-2420, WSC-INT-MIL-2160, WSC-INT-MIL-2440, WSC-INT-MIL-2350, WSC-INT-MIL-2500, WSC-INT-MIL-2250, WSC-INT-MIL-2510, WSC-INT-MIL-2430, WSC-INT-MIL-2290, WSC-INT-MIL-2490, WSC-INT-MIL-2520, WSC-INT-MIL-2300, WSC-INT-MIL-2360, WSC-INT-MIL-2310, WSC-INT-MIL-2320, WSC-INT-MIL-2330, WSC-INT-MIL-2340, WSC-INT-MIL-2530, WSC-INT-MIL-2110, WSC-INT-MIL-2540, WSC-INT-MIL-2120, WSC-INT-MIL-2130, WSC-INT-MIL-2170, WSC-INT-MIL-2180, WSC-INT-MIL-2190, WSC-INT-MIL-2450, WSC-INT-MIL-2200, WSC-INT-MIL-2100, WSC-INT-MIL-2210, WSC-INT-MIL-2470, WSC-INT-MIL-2460, WSC-INT-MIL-2750, WSC-INT-MIL-2220, WSC-INT-MIL-2260, WSC-INT-MIL-2270, WSC-INT-MIL-2230, WSC-INT-MIL-2240, WSC-INT-MIL-2280, WSC-INT-MIL-2370, WSC-INT-MIL-2140, WSC-INT-MIL-2150, WSC-INT-MIL-2720, WSC-INT-MIL-2570, WSC-INT-MIL-2590, WSC-INT-MIL-1610, WSC-INT-MIL-2730, WSC-INT-MIL-2550, WSC-INT-MIL-1230, WSC-INT-MIL-1220, WSC-HRSG-STL-1120, WSC-BOP-MEC-1270 |  | -69.1d | 0d | finish on or before 2028-05-12 | 10hr 7day No Holidays |  |  | 0 |  | CON | PCL | WS G |  |  |  |  |  |
| WSC-CON-MIL9999 |  | KE Wolf Summit WSC Project Complete | milestone | 0d | 2028-07-20 | 2028-07-20 | WSC-ST-E&I-1000 FF, WSC-ARCH-STL-1160 FF, WSC-ST-MEC-1230 FF, WSC-CON-MIL9990 |  | -40d | 0d | finish on or before 2028-05-23 |  |  |  | 0 |  | CON | PCL | WS G |  |  |  |  |  |
|  | 2 | **Interface Milestones** |  |  | 2026-01-12 | 2027-12-28 |  |  |  |  |  |  |  |  |  |  |  |  |  |  |  |  |  |  |
| WSC-INT-MIL-2560 |  | Engineering Complete Misc Electrical Equipment | milestone | 0d | 2026-01-12 | 2026-01-12 | WSC-CON-MIL1000 |  | 590.9d | 638d |  |  |  |  | 0 |  | CON | PCL | WS G | ENG | Elect |  |  |  |
| WSC-INT-MIL-2620 |  | Engineering Complete Architectural Building Design BFW Building | milestone | 0d | 2026-01-12 | 2026-01-12 | WSC-CON-MIL1000 |  | 590.9d | 638d |  |  |  |  | 0 |  | CON | PCL | WS G | ENG | Architectural |  |  |  |
| WSC-INT-MIL-2650 |  | Engineering Complete Architectural Building Design HRSG Penthouse | milestone | 0d | 2026-01-12 | 2026-01-12 | WSC-CON-MIL1000 |  | 590.9d | 638d |  |  |  |  | 0 |  | CON | PCL | WS G | ENG | Architectural |  |  |  |
| WSC-INT-MIL-2660 |  | Engineering Complete Architectural Building Design Turbine Building | milestone | 0d | 2026-01-12 | 2026-01-12 | WSC-CON-MIL1000 |  | 590.9d | 638d |  |  |  |  | 0 |  | CON | PCL | WS G | ENG | Architectural |  |  |  |
| WSC-INT-MIL-2670 |  | Engineering Complete Demin / Fire Water / Waste Water Tanks | milestone | 0d | 2026-01-12 | 2026-01-12 | WSC-CON-MIL1000 |  | 590.9d | 638d |  |  |  |  | 0 |  | CON | PCL | WS G | ENG | Tanks |  |  |  |
| WSC-INT-MIL-2740 |  | Engineering Complete Conduit | milestone | 0d | 2026-01-12 | 2026-01-12 | WSC-CON-MIL1000 |  | 590.9d | 638d |  |  |  |  | 0 |  | CON | PCL | WS G | ENG | Elect |  |  |  |
| WSC-INT-MIL-2760 |  | Engineering Complete Transformers | milestone | 0d | 2026-01-12 | 2026-01-12 | WSC-CON-MIL1000 |  | 590.9d | 638d |  |  |  |  | 0 |  | CON | PCL | WS G | ENG | Elect |  |  |  |
| WSC-INT-MIL-1320 |  | Delivered at Site (GE) GT / ST Foundation Plates (1-18-26) | milestone | 0d | 2026-01-19 | 2026-01-19 | GE-MAJ-02 (other project) FF |  | 204.4d | 166.4d |  |  |  |  | 0 |  | CON | PCL | WS G | PRO |  | FND | ST On | CCWA_02 |
| WSC-INT-MIL-1330 |  | Delivered at Site (GE) Generator Foundation Plates (2-1-26) | milestone | 0d | 2026-02-02 | 2026-02-02 | GE-MAJ-03 (other project) FF |  | 404d | 365d |  |  |  |  | 0 |  | CON | PCL | WS G | PRO |  | FND | ST On | CCWA_02 |
| WSC-INT-MIL-2610 |  | Engineering Complete Architectural Building Design Control/Admin Building | milestone | 0d | 2026-03-03 | 2026-03-03 | WSC-CON-MIL1000, ZE.IM.CSA.3140 (other project) |  | 554.9d | 602d |  |  |  |  | 0 |  | CON | PCL | WS G | ENG | Architectural |  |  |  |
| WSC-INT-MIL-2640 |  | Engineering Complete Architectural Building Design Warehouse Building | milestone | 0d | 2026-03-03 | 2026-03-03 | WSC-CON-MIL1000, ZE.IM.CSA.3140 (other project) |  | 554.9d | 602d |  |  |  |  | 0 |  | CON | PCL | WS G | ENG | Architectural |  |  |  |
| WSC-INT-MIL-2680 |  | Engineering Complete Interior Design Control/Admin Building | milestone | 0d | 2026-03-03 | 2026-03-03 | WSC-CON-MIL1000, ZE.IM.CSA.3140 (other project) |  | 554.9d | 602d |  |  |  |  | 0 |  | CON | PCL | WS G | ENG | Architectural |  |  |  |
| WSC-INT-MIL-1580 |  | Delivered at Site LV MCC and Switch Gear | milestone | 0d | 2026-04-17 | 2026-04-17 | WSC-GEN-MIL-1210, MST3790 (other project) FF |  | 171.2d | 276d |  |  |  |  | 0 |  | CON | PCL | WS G | PRO |  | FND | Elect Yard | CCWA_13 |
| WSC-INT-MIL-5000 |  | Foundation Complete HRSG Main (4-20-26) | milestone | 0d | 2026-04-20 | 2026-04-20 | WSC-CON-MIL1020 |  | -68d | 0d | finish on or after 2026-04-20 | 7 Day Workweek |  |  | 0 | 120 |  |  |  |  |  |  |  |  |
| WSC-INT-MIL-5010 |  | Foundation Complete HRSG South (4-27-26) | milestone | 0d | 2026-04-27 | 2026-04-27 | WSC-CON-MIL1020 |  | -60d | 0d | finish on or after 2026-04-27 | 7 Day Workweek |  |  | 0 | 120 |  |  |  |  |  |  |  |  |
| WSC-INT-MIL-1900 |  | Foundation Complete HRSG Blowdown Drain Sump | milestone | 0d | 2026-04-28 | 2026-04-28 | WSC-CON-MIL1020, CCWA_01-03670 (other project) FF |  | 75d | 189.8d |  |  |  |  | 0 |  | CON | PCL | WS G | Baker |  | FND | HRSG Off | CCWA_01 |
| WSC-INT-MIL-1340 |  | Delivered at Site (GE) HRSG Structural Steel/Casing (5-24-26) | milestone | 0d | 2026-05-26 | 2026-05-26 | GE-MAJ-04 (other project) FF |  | -51d | 0.6d |  |  |  |  | 0 | 120 | CON | PCL | WS G | PRO |  | FND | HRSG On | CCWA_01 |
| WSC-INT-MIL-1450 |  | Delivered at Site HV Disconnect Breakers | milestone | 0d | 2026-06-15 | 2026-06-15 | MST3710 (other project) FF |  | 81.2d | 84d |  |  |  |  | 0 |  | CON | PCL | WS G | PRO |  | FND | Elect Yard | CCWA_13 |
| WSC-INT-MIL-1850 |  | Foundation Complete AC Link Reactor | milestone | 0d | 2026-06-17 | 2026-06-17 | WSC-CON-MIL1020, CCWA_13-62620 (other project) FF |  | 149.2d | 279d |  |  |  |  | 0 |  | CON | PCL | WS G | Baker |  | FND | Elect Yard | CCWA_13 |
| WSC-INT-MIL-2380 |  | Foundation Complete DC Link Reactor | milestone | 0d | 2026-06-17 | 2026-06-17 | WSC-CON-MIL1020, CCWA_13-62740 (other project) FF |  | 479.9d | 527d |  |  |  |  | 0 |  | CON | PCL | WS G | Baker |  | FND | Elect Yard | CCWA_13 |
| WSC-INT-MIL-1820 |  | Foundation Complete Air Inlet Filter | milestone | 0d | 2026-06-22 | 2026-06-22 | WSC-CON-MIL1020, CCWA_09-03210 (other project) FF |  | 297.7d | 256.8d |  |  |  |  | 0 |  | CON | PCL | WS G | Baker |  | FND | CT Off | CCWA_09 |
| WSC-INT-MIL-2390 |  | Foundation Complete Generator Step-up Transformer (GSU) | milestone | 0d | 2026-06-26 | 2026-06-26 | WSC-CON-MIL1020, CCWA_13-03920 (other project) FF |  | 473.7d | 520.8d |  |  |  |  | 0 |  | CON | PCL | WS G | Baker |  | FND | Elect Yard | CCWA_13 |
| WSC-INT-MIL-1930 |  | Foundation Complete Water Wash Skid | milestone | 0d | 2026-06-29 | 2026-06-29 | WSC-CON-MIL1020, CCWA_02-03380 (other project) FF |  | 282.1d | 128d |  |  |  |  | 0 |  | CON | PCL | WS G | Baker |  | FND | CT Off | CCWA_02 |
| WSC-INT-MIL-2400 |  | Foundation Complete Unit Aux Traansformer | milestone | 0d | 2026-06-29 | 2026-06-29 | WSC-CON-MIL1020, CCWA_13-03980 (other project) FF |  | 471.9d | 519d |  |  |  |  | 0 |  | CON | PCL | WS G | Baker |  | FND | Elect Yard | CCWA_13 |
| WSC-INT-MIL-1790 |  | Foundation Complete LP Econimizer Recirc Pumps | milestone | 0d | 2026-07-06 | 2026-07-06 | WSC-CON-MIL1020, CCWA_05-61625 (other project) FF |  | 117.8d | 237.6d |  |  |  |  | 0 |  | CON | PCL | WS G | Baker |  | FND | HRSG Off | CCWA_01 |
| WSC-INT-MIL-2630 |  | Engineering Complete Architectural Building Design Aux Boiler Building | milestone | 0d | 2026-07-07 | 2026-07-07 | WSC-CON-MIL1000, ZE.IM.CSA.3160 (other project) |  | 466.9d | 514d |  |  |  |  | 0 |  | CON | PCL | WS G | ENG | Architectural |  |  |  |
| WSC-INT-MIL-2410 |  | Foundation Complete CTG Isolation Transformer | milestone | 0d | 2026-07-21 | 2026-07-21 | WSC-CON-MIL1020, CCWA_13-03950 (other project) FF |  | 457.5d | 504.6d |  |  |  |  | 0 |  | CON | PCL | WS G | Baker |  | FND | Elect Yard | CCWA_13 |
| WSC-INT-MIL-2420 |  | Foundation Complete CTG Excitation Transformer | milestone | 0d | 2026-07-23 | 2026-07-23 | WSC-CON-MIL1020, CCWA_13-03940 (other project) FF |  | 455.7d | 502.8d |  |  |  |  | 0 |  | CON | PCL | WS G | Baker |  | FND | Elect Yard | CCWA_13 |
| WSC-INT-MIL-1830 |  | Foundation Complete Fin Fan | milestone | 0d | 2026-07-23 | 2026-07-23 | WSC-CON-MIL1020, CCWA_10-03320 (other project) FF |  | 74.2d | 152d |  |  |  |  | 0 |  | CON | PCL | WS G | Baker |  | FND | CL Cool | CCWA_10 |
| WSC-INT-MIL-1350 |  | Delivered at Site Last Module (GE) HRSG Modules (7-26-26) | milestone | 0d | 2026-07-27 | 2026-07-27 | GE-MAJ-05 (other project) FF |  | -48d | 4d |  |  |  |  | 0 | 120 | CON | PCL | WS G | PRO |  | FND | HRSG On | CCWA_01 |
| WSC-INT-MIL-1810 |  | Foundation Complete Fire Pump Enclosure | milestone | 0d | 2026-08-04 | 2026-08-04 | WSC-CON-MIL1020, CCWA_21-03720 (other project) FF |  | 17.7d | 0d |  |  |  |  | 0 |  | CON | PCL | WS G | Baker |  | FND | Tank Farm | CCWA_21 |
| WSC-INT-MIL-1840 |  | Foundation Complete CT Battery Compartment | milestone | 0d | 2026-08-05 | 2026-08-05 | WSC-CON-MIL1020, CCWA_08-03300 (other project) FF |  | 7.7d | 175.5d |  |  |  |  | 0 |  | CON | PCL | WS G | Baker |  | FND | BOP Elect | CCWA_08 |
| WSC-INT-MIL-2160 |  | Foundation Complete Waste Water Tank | milestone | 0d | 2026-08-19 | 2026-08-19 | WSC-CON-MIL1020, CCWA_21-03700 (other project) FF |  | 436.3d | 483.4d |  |  |  |  | 0 |  | CON | PCL | WS G | Baker |  | FND | Tank Farm | CCWA_21 |
| WSC-INT-MIL-2440 |  | Foundation Complete Electrical Building (Redundent?) | milestone | 0d | 2026-08-19 | 2026-08-19 | WSC-CON-MIL1020, CCWA_13-03820 (other project) FF |  | 436.3d | 483.4d |  |  |  |  | 0 |  | CON | PCL | WS G | Baker |  | FND | Elect Yard | CCWA_13 |
| WSC-INT-MIL-1980 |  | Foundation Complete ACC TED | milestone | 0d | 2026-08-21 | 2026-08-21 | WSC-CON-MIL1020, CCWA_06-65326 (other project) FF |  | -25.8d | 85d |  |  |  |  | 0 |  | CON | PCL | WS G | Baker |  | FND | ACC Off | CCWA_06 |
| WSC-INT-MIL-1910 |  | Foundation Complete CT-G-ST Base | milestone | 0d | 2026-08-27 | 2026-08-27 | WSC-CON-MIL1020, CCWA_02-03740 (other project) FF |  | 48.8d | 10.8d |  |  |  |  | 0 |  | CON | PCL | WS G | Baker |  | FND | ST On | CCWA_02 |
| WSC-INT-MIL-2350 |  | Foundation Complete ACC | milestone | 0d | 2026-08-28 | 2026-08-28 | WSC-CON-MIL1020, CCWA_06-03430 (other project) FF |  | 429.7d | 476.8d |  |  |  |  | 0 |  | CON | PCL | WS G | Baker |  | FND | ACC Off | CCWA_06 |
| WSC-INT-MIL-2500 |  | Foundation Complete Turbine BuildingST Bypass Valve Access Platform | milestone | 0d | 2026-09-02 | 2026-09-02 | WSC-CON-MIL1020, CCWA_02-03750 (other project) FF |  | 425.9d | 473d |  |  |  |  | 0 |  | CON | PCL | WS G | Baker |  | FND |  | CCWA_02 |
| WSC-INT-MIL-2250 |  | Foundation Complete Utility Rack Base | milestone | 0d | 2026-09-04 | 2026-09-04 | WSC-CON-MIL1020, CCWA_05-03320 (other project) FF |  | 424.7d | 471.8d |  |  |  |  | 0 |  | CON | PCL | WS G | Baker |  | FND |  | CCWA_05 |
| WSC-INT-MIL-1960 |  | Foundation Complete Hydrogen Storage | milestone | 0d | 2026-09-08 | 2026-09-08 | WSC-CON-MIL1020, CCWA_22-03090 (other project) FF |  | 32.2d | 24d |  |  |  |  | 0 |  | CON | PCL | WS G | Baker |  | FND | HY | CCWA_22 |
| WSC-INT-MIL-2510 |  | Foundation Complete Turbine Building Air Hoting Unit | milestone | 0d | 2026-09-08 | 2026-09-08 | WSC-CON-MIL1020, CCWA_02-6386 (other project) FF |  | 422.9d | 470d |  |  |  |  | 0 |  | CON | PCL | WS G | Baker |  | FND | CT Off | CCWA_02 |
| WSC-INT-MIL-1920 |  | Foundation Complete CT-G-ST Pedestal | milestone | 0d | 2026-09-14 | 2026-09-14 | WSC-CON-MIL1020, CCWA_02-03840 (other project) FF |  | 38d | 0d |  |  |  |  | 0 |  | CON | PCL | WS G | Baker |  | FND | ST On | CCWA_02 |
| WSC-INT-MIL-2430 |  | Foundation Complete Electrical Building | milestone | 0d | 2026-09-16 | 2026-09-16 | WSC-CON-MIL1020, CCWA_13-03540 (other project) FF |  | 417.7d | 464.8d |  |  |  |  | 0 |  | CON | PCL | WS G | Baker |  | FND | Elect Yard | CCWA_13 |
| WSC-INT-MIL-2290 |  | Foundation Complete Vacuum Pump Skids | milestone | 0d | 2026-09-16 | 2026-09-16 | WSC-CON-MIL1020, CCWA_06-03270 (other project) FF |  | 417.4d | 464.5d |  |  |  |  | 0 |  | CON | PCL | WS G | Baker |  | FND | ACC Off | CCWA_06 |
| WSC-INT-MIL-2490 |  | Foundation Complete Turbine BuildingVacuum Drain Tank and Pit | milestone | 0d | 2026-09-16 | 2026-09-16 | WSC-CON-MIL1020, CCWA_02-03410 (other project) FF |  | 417.4d | 464.5d |  |  |  |  | 0 |  | CON | PCL | WS G | Baker |  | FND |  | CCWA_02 |
| WSC-INT-MIL-2520 |  | Foundation Complete Turbine Building Oily Water Seperator | milestone | 0d | 2026-09-17 | 2026-09-17 | WSC-CON-MIL1020, CCWA_02-6646 (other project) FF |  | 415.9d | 463d |  |  |  |  | 0 |  | CON | PCL | WS G | Baker |  | FND |  | CCWA_02 |
| WSC-INT-MIL-2300 |  | Foundation Complete Condensate Collection Tank/Deaerator | milestone | 0d | 2026-09-18 | 2026-09-18 | WSC-CON-MIL1020, CCWA_06-03310 (other project) FF |  | 415.9d | 463d |  |  |  |  | 0 |  | CON | PCL | WS G | Baker |  | FND | ACC Off | CCWA_06 |
| WSC-INT-MIL-2360 |  | Foundation Complete ACC PDC | milestone | 0d | 2026-09-23 | 2026-09-23 | WSC-CON-MIL1020, CCWA_06-03320 (other project) FF |  | 412.5d | 459.6d |  |  |  |  | 0 |  | CON | PCL | WS G | Baker |  | FND | ACC Off | CCWA_06 |
| WSC-INT-MIL-2310 |  | Foundation Complete ACC Drain Pot/Pumps/Pit | milestone | 0d | 2026-09-23 | 2026-09-23 | WSC-CON-MIL1020, CCWA_06-65456 (other project) FF |  | 412.3d | 459.4d |  |  |  |  | 0 |  | CON | PCL | WS G | Baker |  | FND | ACC Off | CCWA_06 |

| ID | Activity | Type | Duration | Start | Finish | Predecessors | Total float | Free float | Constraint | Crew Size | WS Milestone Type | WS Equipment Set | WS Sub Area | WS EPC | WS Resp | WS Area | WS CCWA Area | WS Discipline |
| --- | --- | --- | --- | --- | --- | --- | --- | --- | --- | --- | --- | --- | --- | --- | --- | --- | --- | --- |
| WSC-INT-MIL-2320 | Foundation Complete ACC Cleaning Pump | milestone | 0d | 2026-09-23 | 2026-09-23 | WSC-CON-MIL1020, CCWA_06-65586 (other project) FF | 412.3d | 459.4d |  | 0 | Baker | FND | ACC Off | CON | PCL | WS G | CCWA_06 |  |
| WSC-INT-MIL-2330 | Foundation Complete ACC TED (Redundent?) | milestone | 0d | 2026-09-23 | 2026-09-23 | WSC-CON-MIL1020, CCWA_06-65846 (other project) FF | 412.3d | 459.4d |  | 0 | Baker | FND | ACC Off | CON | PCL | WS G | CCWA_06 |  |
| WSC-INT-MIL-2340 | Foundation Complete ACC Condensate Pumps | milestone | 0d | 2026-09-23 | 2026-09-23 | WSC-CON-MIL1020, CCWA_06-66426 (other project) FF | 412.3d | 459.4d |  | 0 | Baker | FND | ACC Off | CON | PCL | WS G | CCWA_06 |  |
| WSC-INT-MIL-2530 | Foundation Complete CT/ST/Gen Table Top | milestone | 0d | 2026-09-23 | 2026-09-23 | WSC-CON-MIL1020, CCWA_02-03830 (other project) FF | 412.3d | 459.4d |  | 0 | Baker | FND | CT On | CON | PCL | WS G | CCWA_02 |  |
| WSC-INT-MIL-1620 | Delivered at Site Oil/Water Separator | milestone | 0d | 2026-09-28 | 2026-09-28 | MST2610 (other project) FF | 8.2d | 0d |  | 0 | PRO | FND | Aux Boiler | CON | PCL | WS G | CCWA_14 |  |
| WSC-INT-MIL-2110 | Foundation Complete PEECC | milestone | 0d | 2026-09-28 | 2026-09-28 | WSC-CON-MIL1020, CCWA_08-03310 (other project) FF | 408.9d | 456d |  | 0 | Baker | FND | BOP Elect | CON | PCL | WS G | CCWA_08 |  |
| WSC-INT-MIL-2540 | Foundation Complete Turbine Building | milestone | 0d | 2026-09-30 | 2026-09-30 | WSC-CON-MIL1020, CCWA_02-03820 (other project) FF | 407.5d | 454.6d |  | 0 | Baker | FND |  | CON | PCL | WS G | CCWA_02 |  |
| WSC-INT-MIL-2120 | Foundation Complete CT Water Mist Skid | milestone | 0d | 2026-09-30 | 2026-09-30 | WSC-CON-MIL1020, CCWA_08-03430 (other project) FF | 407.4d | 454.5d |  | 0 | Baker | FND | CL Cool | CON | PCL | WS G | CCWA_10 |  |
| WSC-INT-MIL-2130 | Foundation Complete Evap Cooling Water Skid | milestone | 0d | 2026-09-30 | 2026-09-30 | WSC-CON-MIL1020, CCWA_08-03320 (other project) FF | 407.4d | 454.5d |  | 0 | Baker | FND | CL Cool | CON | PCL | WS G | CCWA_10 |  |
| WSC-INT-MIL-2170 | Foundation Complete Waste Water Forward Pump | milestone | 0d | 2026-09-30 | 2026-09-30 | WSC-CON-MIL1020, CCWA_21-03540 (other project) FF | 407.4d | 454.5d |  | 0 | Baker | FND | Tank Farm | CON | PCL | WS G | CCWA_21 |  |
| WSC-INT-MIL-2180 | Foundation Complete Service Water Pumps | milestone | 0d | 2026-09-30 | 2026-09-30 | WSC-CON-MIL1020, CCWA_21-61122 (other project) FF | 407.4d | 454.5d |  | 0 | Baker | FND | Tank Farm | CON | PCL | WS G | CCWA_21 |  |
| WSC-INT-MIL-2190 | Foundation Complete Demin Water Tank | milestone | 0d | 2026-09-30 | 2026-09-30 | WSC-CON-MIL1020, CCWA_21-03530 (other project) FF | 407.3d | 454.4d |  | 0 | Baker | FND | Tank Farm | CON | PCL | WS G | CCWA_21 |  |
| WSC-INT-MIL-1560 | Delivered at Site HV Disconnect Switches and Breakers | milestone | 0d | 2026-09-30 | 2026-09-30 | PO-954-05 (other project) FF, MST3710 (other project) FF | 6.2d | 0d |  | 0 | PRO | FND | Elect Yard | CON | PCL | WS G | CCWA_13 |  |
| WSC-INT-MIL-2450 | Foundation Complete Equipment Fire Wall | milestone | 0d | 2026-10-06 | 2026-10-06 | WSC-CON-MIL1020, CCWA_13-03930 (other project) FF | 403.7d | 450.8d |  | 0 | Baker | FND | Elect Yard | CON | PCL | WS G | CCWA_13 |  |
| WSC-INT-MIL-1250 | Delivered at Site Fire Water Pump House | milestone | 0d | 2026-10-06 | 2026-10-06 | MST1980 (other project) FF | 186.9d | 168.2d |  | 0 | PRO | FND | Tank Farm | CON | PCL | WS G | CCWA_21 |  |
| WSC-INT-MIL-2200 | Foundation Complete Demin Water Supply Pumps | milestone | 0d | 2026-10-07 | 2026-10-07 | WSC-CON-MIL1020, CCWA_21-03710 (other project) FF | 402.4d | 449.5d |  | 0 | Baker | FND | Tank Farm | CON | PCL | WS G | CCWA_21 |  |
| WSC-INT-MIL-2030 | Engineering Milestone Utility Rack Structural Steel IFA | milestone | 0d | 2026-10-08 | 2026-10-08 | WSC-CON-MIL1000, ZE.CSA.1310 (other project) FF, ZE.CSA.9168 (other project) FF, ZE.CSA.9198 (other project) FF, ZE.CSA.9318 (other project) FF, ZE.CSA.9498 (other project) FF, ZE.CSA.9528 (other project) FF, ZE.CSA.9558 (other project) FF, ZE.CSA.9588 (other project) FF, ZE.CSA.9618 (other project) FF, ZE.CSA.9648 (other project) FF, ZE.CSA.9669 (other project) FF, ZE.CSA.9672 (other project) FF, ZE.CSA.9675 (other project) FF, ZE.CSA.9678 (other project) FF, ZE.CSA.9681 (other project) FF, ZE.CSA.9684 (other project) FF, ZE.CSA.9693 (other project) FF, ZE.CSA.9348 (other project) FF, ZE.CSA.9378 (other project) FF, ZE.CSA.3420 (other project) FF, ZE.CSA.3830 (other project) FF, ZE.CSA.9468 (other project) FF, ZE.CSA.9696 (other project) FF, ZE.CSA.9699 (other project) FF, ZE.CSA.9702 (other project) FF, ZE.CSA.9705 (other project) FF | -119.8d | 0d |  | 0 | ENG |  |  | CON | PCL | WS G |  | Structural |
| WSC-INT-MIL-2060 | Engineering Milestone Utility Rack Structural Steel IFC | milestone | 0d | 2026-10-08 | 2026-10-08 | WSC-INT-MIL-2030 | -119.8d | 0d |  | 0 | ENG |  |  | CON | PCL | WS G |  | Structural |
| WSC-INT-MIL-1860 | Foundation Complete Emergency Diesel Generator | milestone | 0d | 2026-10-12 | 2026-10-12 | WSC-CON-MIL1020, CCWA_07-03210 (other project) FF | 48.2d | 78d |  | 0 | Baker | FND | BOP Elect | CON | PCL | WS G | CCWA_07 |  |
| WSC-INT-MIL-2100 | Foundation Cooling Water Pumps | milestone | 0d | 2026-10-15 | 2026-10-15 | WSC-CON-MIL1020, CCWA_10-03280 (other project) FF | 396.7d | 443.8d |  | 0 | Baker | FND | CL Cool | CON | PCL | WS G | CCWA_10 |  |
| WSC-INT-MIL-2210 | Foundation Complete Demin Water Treatment Trailer Pad | milestone | 0d | 2026-10-21 | 2026-10-21 | WSC-CON-MIL1020, CCWA_21-03730 (other project) FF | 392.4d | 439.5d |  | 0 | Baker | FND | Tank Farm | CON | PCL | WS G | CCWA_21 |  |
| WSC-INT-MIL-2470 | Foundation Complete Generator Circuit Braker | milestone | 0d | 2026-10-22 | 2026-10-22 | WSC-CON-MIL1020, CCWA_13-03830 (other project) FF | 391.6d | 438.7d |  | 0 | Baker | FND | Elect Yard | CON | PCL | WS G | CCWA_13 |  |
| WSC-INT-MIL-2580 | Engineering Complete Large Bore Hot Iso's MR 60% | milestone | 0d | 2026-10-22 | 2026-10-22 | WSC-CON-MIL1000, ZE.IM.MECH.2060 (other project) FF, ZE.IM.MECH.2480 (other project) FF, ZE.IM.MECH.2490 (other project) FF, ZE.IM.MECH.2890 (other project) FF, ZE.IM.MECH.2120 (other project) FF, ZE.IM.MECH.2240 (other project) FF, ZE.IM.MECH.2250 (other project) FF, ZE.IM.MECH.2410 (other project) FF, ZE.IM.MECH.2420 (other project) FF, ZE.IM.MECH.2260 (other project) FF, ZE.IM.MECH.2560 (other project) FF | 390.9d | 143d |  | 0 | ENG |  |  | CON | PCL | WS G |  | Pipe |
| WSC-INT-MIL-2460 | Foundation Complete 6.9 kV Station Service Transformer | milestone | 0d | 2026-10-28 | 2026-10-28 | WSC-CON-MIL1020, CCWA_13-03810 (other project) FF | 387.3d | 434.4d |  | 0 | Baker | FND | Elect Yard | CON | PCL | WS G | CCWA_13 |  |
| WSC-INT-MIL-1680 | Delivered at Site GE High Energy Pipe | milestone | 0d | 2026-10-30 | 2026-10-30 | L2-PIPE.P02 (other project) | -41d | 20d |  | 0 | PRO |  |  | CON | PCL | WS G |  |  |
| WSC-INT-MIL-2750 | Engineering Complete Lighting | milestone | 0d | 2026-11-10 | 2026-11-10 | WSC-CON-MIL1000, ZE.IM.ELEC.2160 (other project) FF, ZE.IM.ELEC.2410 (other project) FF, ZE.IM.ELEC.2430 (other project) FF, ZE.IM.ELEC.2580 (other project) FF, ZE.IM.ELEC.2620 (other project) FF, ZE.IM.ELEC.1980 (other project) FF, ZE.IM.ELEC.1990 (other project) FF, ZE.IM.ELEC.2000 (other project) FF, ZE.IM.ELEC.2010 (other project) FF, ZE.IM.ELEC.2020 (other project) FF, ZE.IM.ELEC.2030 (other project) FF, ZE.IM.ELEC.2040 (other project) FF, ZE.IM.ELEC.2050 (other project) FF, ZE.IM.ELEC.2060 (other project) FF, ZE.IM.ELEC.2070 (other project) FF, ZE.IM.ELEC.2080 (other project) FF | 377.9d | 425d |  | 0 | ENG |  |  | CON | PCL | WS G |  | Elect |
| WSC-INT-MIL-1890 | Foundation Complete Plant Gas Metering Station | milestone | 0d | 2026-11-13 | 2026-11-13 | WSC-CON-MIL1020, CCWA_17-03110 (other project) FF | 24.4d | 98.2d |  | 0 | Baker | FND | FG Yard | CON | PCL | WS G | CCWA_17 |  |
| WSC-INT-MIL-2220 | Foundation Complete Plant Gas Dew Point Heater | milestone | 0d | 2026-11-16 | 2026-11-16 | WSC-CON-MIL1020, CCWA_17-03320 (other project) FF | 374.3d | 421.4d |  | 0 | Baker | FND | FG Yard | CON | PCL | WS G | CCWA_17 |  |
| WSC-INT-MIL-2260 | Foundation Complete CT Performance Heater | milestone | 0d | 2026-11-18 | 2026-11-18 | WSC-CON-MIL1020, CCWA_05-03250 (other project) FF | 372.4d | 419.5d |  | 0 | Baker | FND | CT Off | CON | PCL | WS G | CCWA_02 |  |
| WSC-INT-MIL-2270 | Foundation Complete H2 Blending Skid | milestone | 0d | 2026-11-18 | 2026-11-18 | WSC-CON-MIL1020, CCWA_05-03430 (other project) FF | 372.4d | 419.5d |  | 0 | Baker | FND |  | CON | PCL | WS G | CCWA_05 |  |
| WSC-INT-MIL-1360 | Delivered at Site (GE) HRSG Drums (11-22-26) | milestone | 0d | 2026-11-23 | 2026-11-23 | GE-MAJ-06 (other project) FF | -61d | 0d |  | 0 | PRO |  |  | CON | PCL | WS G |  |  |
| WSC-INT-MIL-1990 | Delivered at Site LB Piping | milestone | 0d | 2026-11-23 | 2026-11-23 | GE-MIN-22 (other project) FF | -10.8d | 0d |  | 0 | PRO |  |  | CON | PCL | WS G |  |  |
| WSC-INT-MIL-2230 | Foundation Complete Fuel Gas Drain Tank | milestone | 0d | 2026-11-23 | 2026-11-23 | WSC-CON-MIL1020, CCWA_17-64527 (other project) FF | 369.7d | 416.8d |  | 0 | Baker | FND | FG Yard | CON | PCL | WS G | CCWA_17 |  |
| WSC-INT-MIL-2240 | Foundation Complete Fuel Gas Conditioning Skid | milestone | 0d | 2026-11-25 | 2026-11-25 | WSC-CON-MIL1020, CCWA_17-03210 (other project) FF | 367.7d | 414.8d |  | 0 | Baker | FND | FG Yard | CON | PCL | WS G | CCWA_17 |  |
| WSC-INT-MIL-1970 | Foundation Complete Control/Admin/WH Building | milestone | 0d | 2026-12-04 | 2026-12-04 | WSC-CON-MIL1020, CCWA_12-03210 (other project) FF | 232.5d | 0d |  | 0 | Baker | FND | Build and Ground | CON | PCL | WS G | CCWA_12 |  |
| WSC-INT-MIL-2280 | Foundation Complete Fuel Gas Ablolute Seperator | milestone | 0d | 2026-12-16 | 2026-12-16 | WSC-CON-MIL1020, CCWA_05-03240 (other project) FF | 354.7d | 401.8d |  | 0 | Baker | FND | CT Off | CON | PCL | WS G | CCWA_02 |  |
| WSC-INT-MIL-1090 | Delivered at Site Boiler Feed Water Pumps Suction Strainers | milestone | 0d | 2026-12-17 | 2026-12-17 | MST3540 (other project) FF | 32.2d | 112d |  | 0 | PRO |  |  | CON | PCL | WS G |  |  |
| WSC-INT-MIL-1290 | Delivered at Site Air Compressors, Receivers & Dryers | milestone | 0d | 2026-12-21 | 2026-12-21 | MST2220 (other project) FF | 0.2d | 0d |  | 0 | PRO | FND | Aux Boiler | CON | PCL | WS G | CCWA_14 |  |
| WSC-INT-MIL-1470 | Delivered at Site ST Atmospheric Drains Tank | milestone | 0d | 2026-12-22 | 2026-12-22 | MST3870 (other project) FF | 297d | 71.9d |  | 0 | PRO | FND |  | CON | PCL | WS G | CCWA_05 |  |
| WSC-INT-MIL-1490 | Delivered at Site CCW Expansion Tank | milestone | 0d | 2026-12-22 | 2026-12-22 | MST3880 (other project) FF | -30.8d | 47d |  | 0 | PRO | FND | CT Off | CON | PCL | WS G | CCWA_02 |  |
| WSC-INT-MIL-1510 | Delivered at Site Condensate Drains and Receiver Tank | milestone | 0d | 2026-12-22 | 2026-12-22 | MST2730 (other project) FF | -0.8d | 0d |  | 0 | PRO | FND | HRSG Off | CON | PCL | WS G | CCWA_01 |  |
| WSC-INT-MIL-1520 | Delivered at Site Corrosion Inhibitor Tank | milestone | 0d | 2026-12-22 | 2026-12-22 | MST3950 (other project) FF | 319.9d | 30d |  | 0 | PRO | FND | Pipe Rack | CON | PCL | WS G | CCWA_05 |  |
| WSC-INT-MIL-1530 | Delivered at Site CT False Start Drains Tanks | milestone | 0d | 2026-12-22 | 2026-12-22 | MST3860 (other project) FF | 19.2d | 20d |  | 0 | PRO | FND | CT Off | CON | PCL | WS G | CCWA_02 |  |
| WSC-INT-MIL-1670 | Delivered at Site Vacuum Drains | milestone | 0d | 2026-12-22 | 2026-12-22 | MST2490 (other project) FF | 19.2d | 0d |  | 0 | PRO | FND | ACC Off | CON | PCL | WS G | CCWA_06 |  |
| WSC-INT-MIL-1000 | Delivered at Site Auxiliary Boiler | milestone | 0d | 2026-12-23 | 2026-12-23 | MST1860 (other project) FF | 18.2d | 41.4d |  | 0 | PRO | FND | Aux Boiler | CON | PCL | WS G | CCWA_14 |  |
| WSC-INT-MIL-1240 | Delivered at Site Admin / Control Room w/ Electric Room | milestone | 0d | 2027-01-04 | 2027-01-04 | WSC-GEN-MIL-1210 | 83.9d | 0d | finish on or after 2027-01-04 | 0 | PRO | FND | Build and Ground | CON | PCL | WS G | CCWA_12 |  |
| WSC-INT-MIL-1080 | Delivered at Site Boiler Feed Water Pumps | milestone | 0d | 2027-01-08 | 2027-01-08 | MST1890 (other project) FF | 19.2d | 99d |  | 0 | PRO | FND | BFW | CON | PCL | WS G | CCWA_11 |  |
| WSC-INT-MIL-1880 | Foundation Complete HRSG PDC | milestone | 0d | 2027-01-11 | 2027-01-11 | WSC-CON-MIL1020, CCWA_11-03530 (other project) FF | -1.6d | 0d |  | 0 | Baker | FND | BFW | CON | PCL | WS G | CCWA_11 |  |
| WSC-INT-MIL-2370 | Foundation Complete Cycle Chem Feed Totes and Pumps | milestone | 0d | 2027-01-13 | 2027-01-13 | WSC-CON-MIL1020, CCWA_06-65716 (other project) FF | 337.5d | 384.6d |  | 0 | Baker | FND | ACC Off | CON | PCL | WS G | CCWA_06 |  |
| WSC-INT-MIL-1130 | Delivered at Site Condensate Drains Forwarding Pumps | milestone | 0d | 2027-01-14 | 2027-01-14 | MST3570 (other project) FF | 315.9d | 26d |  | 0 | PRO | FND | ACC Off | CON | PCL | WS G | CCWA_06 |  |
| WSC-INT-MIL-2040 | Delivered at Site LP Econimizer Recirc Pumps | milestone | 0d | 2027-01-14 | 2027-01-14 | MST3570 (other project) FF | -114.8d | 0d |  | 0 | PRO | FND | HRSG Off | CON | PCL | WS G | CCWA_01 |  |
| WSC-INT-MIL-1100 | Delivered at Site Condensate Pumps | milestone | 0d | 2027-01-18 | 2027-01-18 | MST2670 (other project) FF | 314.9d | 25d |  | 0 | PRO | FND | ACC Off | CON | PCL | WS G | CCWA_06 |  |
| WSC-INT-MIL-1210 | Delivered at Site Ammonia Forwarding Pumps | milestone | 0d | 2027-01-18 | 2027-01-18 | MST3580 (other project) FF | 114.9d | 97.2d |  | 0 | PRO | FND | Tank Farm | CON | PCL | WS G | CCWA_19 |  |
| WSC-INT-MIL-1460 | Delivered at Site Ammonia Storage Tank | milestone | 0d | 2027-01-18 | 2027-01-18 | MST2250 (other project) FF | 114.9d | 96.2d |  | 0 | PRO | FND | Tank Farm | CON | PCL | WS G | CCWA_19 |  |
| WSC-INT-MIL-1590 | Delivered at Site LV PDC with MCC | milestone | 0d | 2027-01-22 | 2027-01-22 | MST2850 (other project) FF | -20d | 84.8d |  | 0 | PRO | FND | Elect Yard | CON | PCL | WS G | CCWA_13 |  |
| WSC-INT-MIL-2140 | Foundation Complete Boiler Feed Pipe Rack | milestone | 0d | 2027-01-25 | 2027-01-25 | WSC-CON-MIL1020, CCWA_11-03410 (other project) FF | 329.1d | 376.2d |  | 0 | Baker | FND | BFW | CON | PCL | WS G | CCWA_11 |  |
| WSC-INT-MIL-2150 | Foundation Complete Boiler Feed Pump Building | milestone | 0d | 2027-02-02 | 2027-02-02 | WSC-CON-MIL1020, CCWA_11-03400 (other project) FF | 323.1d | 370.2d |  | 0 | Baker | FND | BFW | CON | PCL | WS G | CCWA_11 |  |
| WSC-INT-MIL-1650 | Delivered at Site Standby Diesel Generator | milestone | 0d | 2027-02-04 | 2027-02-04 | MST1710 (other project) FF | -29.8d | 0d |  | 0 | PRO | FND | BOP Elect | CON | PCL | WS G | CCWA_07 |  |
| WSC-INT-MIL-1690 | Delivered at Site SB Piping | milestone | 0d | 2027-02-08 | 2027-02-08 | GE-MIN-23 (other project) FF | 39.2d | 0d |  | 0 | PRO |  |  | CON | PCL | WS G |  |  |
| WSC-INT-MIL-1370 | Delivered at Site (GE) Steam Turbine Bearing Pedistals and Standards (2-24-27) | milestone | 0d | 2027-02-25 | 2027-02-25 | GE-MAJ-09 (other project) FF | 81d | 113d |  | 0 | PRO | FND | ST On | CON | PCL | WS G | CCWA_02 |  |
| WSC-INT-MIL-1870 | Foundation Complete Aux Boiler Building | milestone | 0d | 2027-02-25 | 2027-02-25 | WSC-CON-MIL1020, CCWA_14-03400 (other project) FF | -3.2d | 0d |  | 0 | Baker | FND | Aux Boiler | CON | PCL | WS G | CCWA_14 |  |
| WSC-INT-MIL-1950 | Foundation Complete Ammonia Storage | milestone | 0d | 2027-02-26 | 2027-02-26 | WSC-CON-MIL1020, CCWA_19-03080 (other project) FF | 87.1d | 68.4d |  | 0 | Baker | FND | Tank Farm | CON | PCL | WS G | CCWA_19 |  |
| WSC-INT-MIL-1170 | Delivered at Site Sump Pumps Misc | milestone | 0d | 2027-03-01 | 2027-03-01 | MST3600 (other project) FF | -64.8d | 50d |  | 0 | PRO | FND | Tank Farm | CON | PCL | WS G | CCWA_21 |  |
| WSC-INT-MIL-1180 | Delivered at Site Sump Pump HRSG Blowdown | milestone | 0d | 2027-03-01 | 2027-03-01 | MST3630 (other project) FF | -104.8d | 10d |  | 0 | PRO | FND | HRSG Off | CON | PCL | WS G | CCWA_01 |  |
| WSC-INT-MIL-1190 | Delivered at Site Sump Pump TB Oily Water | milestone | 0d | 2027-03-01 | 2027-03-01 | MST3610 (other project) FF | -94.8d | 20d |  | 0 | PRO | FND | CT Off | CON | PCL | WS G | CCWA_02 |  |
| WSC-INT-MIL-1200 | Delivered at Site Sump Pump Facility Wastewater | milestone | 0d | 2027-03-01 | 2027-03-01 | MST3620 (other project) FF | -94.8d | 20d |  | 0 | PRO | FND | Tank Farm | CON | PCL | WS G | CCWA_21 |  |
| WSC-INT-MIL-1300 | Delivered at Site Engineered Pipe Supports | milestone | 0d | 2027-03-01 | 2027-03-01 | MST3680 (other project) FF | 45.2d | 85d |  | 0 | PRO |  |  | CON | PCL | WS G |  |  |
| WSC-INT-MIL-1120 | Delivered at Site Closed Cooling Water Pumps | milestone | 0d | 2027-03-03 | 2027-03-03 | MST2460 (other project) FF | -77.8d | 0d |  | 0 | PRO | FND | CL Cool | CON | PCL | WS G | CCWA_10 |  |
| WSC-INT-MIL-1140 | Delivered at Site Service Water Forwarding Pumps | milestone | 0d | 2027-03-03 | 2027-03-03 | MST2010 (other project) FF | 102.9d | 85.2d |  | 0 | PRO | FND | Tank Farm | CON | PCL | WS G | CCWA_21 |  |
| WSC-INT-MIL-1150 | Delivered at Site Demineralized Water Forwarding Pump | milestone | 0d | 2027-03-03 | 2027-03-03 | MST2100 (other project) FF | 92.9d | 75.2d |  | 0 | PRO | FND | Tank Farm | CON | PCL | WS G | CCWA_21 |  |

| ID | Activity | Type | Duration | Start | Finish | Predecessors | Total float | Free float | Calendar | Crew Size | WS Milestone Type | WS Equipment Set | WS Sub Area | WS EPC | WS Resp | WS Area | WS CCWA Area | WS Discipline |
| --- | --- | --- | --- | --- | --- | --- | --- | --- | --- | --- | --- | --- | --- | --- | --- | --- | --- | --- |
| WSC-INT-MIL-1160 | Delivered at Site Waste Water Pumps | milestone | 0d | 2027-03-03 | 2027-03-03 | MST3590 (other project) FF | 92.9d | 36d |  | 0 | PRO | FND | Tank Farm | CON | PCL | WS G | CCWA_21 |  |
| WSC-INT-MIL-1380 | Delivered at Site (GE) CTG Turbine (3-6-27) | milestone | 0d | 2027-03-07 | 2027-03-07 | GE-MAJ-10 (other project) FF | -89d | 29d | Standard 7 Day Workweek | 0 | PRO | FND | ST On | CON | PCL | WS G | CCWA_02 |  |
| WSC-INT-MIL-1480 | Delivered at Site BOP PDC with MCC | milestone | 0d | 2027-03-08 | 2027-03-08 | MST3810 (other project) FF | -49.8d | 55d |  | 0 | PRO | FND | BOP Elect | CON | PCL | WS G | CCWA_08 |  |
| WSC-INT-MIL-1390 | Delivered at Site (GE) LP Steam Turbine Inner and Outer Casing (3-24-27) | milestone | 0d | 2027-03-24 | 2027-03-24 | GE-MAJ-13 (other project) FF | -102.7d | 0d |  | 0 | PRO |  |  | CON | PCL | WS G |  |  |
| WSC-INT-MIL-1400 | Delivered at Site (GE) IP Steam Turbine Inner and Outer Casing (3-24-27) | milestone | 0d | 2027-03-24 | 2027-03-24 | GE-MAJ-14 (other project) FF | 40.1d | 72.1d |  | 0 | PRO |  |  | CON | PCL | WS G |  |  |
| WSC-INT-MIL-1010 | Delivered at Site CCW Heat Exchangers | milestone | 0d | 2027-03-24 | 2027-03-24 | MST1830 (other project) FF | -92.8d | 0d |  | 0 | PRO | FND | CL Cool | CON | PCL | WS G | CCWA_10 |  |
| WSC-INT-MIL-1260 | Delivered at Site Steam and Water Sampling System | milestone | 0d | 2027-03-30 | 2027-03-30 | MST2040 (other project) FF | -76.8d | 38d |  | 0 | PRO | FND | HRSG Off | CON | PCL | WS G | CCWA_01 |  |
| WSC-INT-MIL-1270 | Delivered at Site Chemical Feed Cycle | milestone | 0d | 2027-03-30 | 2027-03-30 | MST3660 (other project) FF | -136.8d | 31d |  | 0 | PRO | FND | Pipe Rack | CON | PCL | WS G | CCWA_05 |  |
| WSC-INT-MIL-1280 | Delivered at Site Chem Feed System | milestone | 0d | 2027-03-30 | 2027-03-30 | MST3660 (other project) FF | -136.8d | 31d |  | 0 | PRO | FND | Pipe Rack | CON | PCL | WS G | CCWA_05 |  |
| WSC-INT-MIL-1310 | Delivered at Site Vent Silencers | milestone | 0d | 2027-03-30 | 2027-03-30 | MST4050 (other project) FF | 23.9d | 0d |  | 0 | PRO |  |  | CON | PCL | WS G |  |  |
| WSC-INT-MIL-1410 | Delivered at Site (GE) Electric Generator Rotor (4-1-27) | milestone | 0d | 2027-04-01 | 2027-04-01 | GE-MAJ-11 (other project) FF | -78.4d | 1.4d |  | 0 | PRO |  |  | CON | PCL | WS G |  |  |
| WSC-INT-MIL-1570 | Delivered at Site LV Aux Pad Mount Transformers (N/A) | milestone | 0d | 2027-04-01 | 2027-04-01 | MST3770 (other project) FF | -128.8d | 39d |  | 0 | PRO |  |  | CON | PCL | WS G |  |  |
| WSC-INT-MIL-1600 | Delivered at Site MV Pad Mount Transformer | milestone | 0d | 2027-04-01 | 2027-04-01 | MST3770 (other project) FF | -38.8d | 148d |  | 0 | PRO | FND | Elect Yard | CON | PCL | WS G | CCWA_13 |  |
| WSC-INT-MIL-1420 | Delivered at Site (GE) Electric Generator Stator (4-1-27) | milestone | 0d | 2027-04-05 | 2027-04-05 | GE-MAJ-08 (other project) FF | -79.8d | 0d |  | 0 | PRO | FND | Gen On | CON | PCL | WS G | CCWA_02 |  |
| WSC-INT-MIL-1020 | Delivered at Site Fuel Gas Performance Heater | milestone | 0d | 2027-04-08 | 2027-04-08 | MST3510 (other project) FF | -83.8d | 0d |  | 0 | PRO | FND | CT Off | CON | PCL | WS G | CCWA_02 |  |
| WSC-INT-MIL-1030 | Delivered at Site Fuel Gas Valves Aux Boiler and TB | milestone | 0d | 2027-04-08 | 2027-04-08 | MST3460 (other project) FF | -83.8d | 0d |  | 0 | PRO | FND | Aux Boiler | CON | PCL | WS G | CCWA_14 |  |
| WSC-INT-MIL-1040 | Delivered at Site Fuel Gas Valves Main | milestone | 0d | 2027-04-08 | 2027-04-08 | MST3470 (other project) FF | -73.8d | 0d |  | 0 | PRO | FND | FG Yard | CON | PCL | WS G | CCWA_17 |  |
| WSC-INT-MIL-1050 | Delivered at Site Fuel Gas Knock Out Drum | milestone | 0d | 2027-04-08 | 2027-04-08 | MST4260 (other project) FF | -73.8d | 0d |  | 0 | PRO | FND | CT Off | CON | PCL | WS G | CCWA_02 |  |
| WSC-INT-MIL-1720 | Delivered at Site Fuel Gas Drains Tank | milestone | 0d | 2027-04-08 | 2027-04-08 | MST4270 (other project) FF | -73.8d | 0d |  | 0 | PRO | FND | FG Yard | CON | PCL | WS G | CCWA_17 |  |
| WSC-INT-MIL-1730 | Delivered at Site Fuel Gas Heater | milestone | 0d | 2027-04-08 | 2027-04-08 | MST3510 (other project) FF | -93.8d | 0d |  | 0 | PRO | FND | CT Off | CON | PCL | WS G | CCWA_02 |  |
| WSC-INT-MIL-2710 | Engineering Milestone Misc Structural Steel IFA | milestone | 0d | 2027-04-14 | 2027-04-14 | WSC-CON-MIL1000, ZE.IM.CSA.3520 (other project) FF, ZE.IM.CSA.3530 (other project) FF, ZE.IM.CSA.3540 (other project) FF, ZE.IM.CSA.3660 (other project) FF, ZE.IM.CSA.3700 (other project) FF, ZE.IM.CSA.3990 (other project) FF, ZE.IM.CSA.4000 (other project) FF, ZE.IM.CSA.4030 (other project) FF, ZE.IM.CSA.4020 (other project), ZE.IM.CSA.3970 (other project) | 272.9d | 15d |  | 0 | ENG |  |  | CON | PCL | WS G |  | Structural |
| WSC-INT-MIL-2000 | Delivered at Site ACC (Including Steel and All Misc Equipment) | milestone | 0d | 2027-04-30 | 2027-04-30 | WSC-CON-MIL1020 | -149.8d | 0d |  | 0 | PRO | FND | ACC ON | CON | PCL | WS G | CCWA_06 |  |
| WSC-INT-MIL-2010 | Engineering Complete Small Bore Hot Iso's MR 60% | milestone | 0d | 2027-05-05 | 2027-05-05 | ZE.MECH.7800 (other project) FF, ZE.MECH.7790 (other project) FF, ZE.MECH.7770 (other project) FF, ZE.MECH.7760 (other project) FF, ZE.MECH.7780 (other project) FF, ZE.MECH.9620 (other project) FF, ZE.MECH.9640 (other project) FF, ZE.MECH.9660 (other project) FF, ZE.MECH.9680 (other project) FF, ZE.MECH.9700 (other project) FF, ZE.MECH.9720 (other project) FF, ZE.MECH.9740 (other project) FF, ZE.MECH.9760 (other project) FF, ZE.MECH.9780 (other project) FF, ZE.MECH.9800 (other project) FF, ZE.MECH.9820 (other project) FF, ZE.MECH.5900 (other project) FF, ZE.MECH.5830 (other project) FF, ZE.MECH.5850 (other project) FF, ZE.MECH.7070 (other project) FF, ZE.MECH.7690 (other project) FF, ZE.MECH.5890 (other project) FF, ZE.MECH.5820 (other project) FF, ZE.MECH.5810 (other project) FF, ZE.MECH.5800 (other project) FF, ZE.MECH.5790 (other project) FF, ZE.MECH.5780 (other project) FF, ZE.MECH.5770 (other project) FF | 172.9d | 10d |  | 0 | ENG |  |  | CON | PCL | WS G |  | Pipe |
| WSC-INT-MIL-2020 | Engineering Complete Large Bore Cold Iso's MR 60% | milestone | 0d | 2027-05-05 | 2027-05-05 | ZE.MECH.7010 (other project) FF, ZE.MECH.6390 (other project) FF, ZE.MECH.6410 (other project) FF, ZE.MECH.6380 (other project) FF, ZE.MECH.6370 (other project) FF, ZE.MECH.7350 (other project) FF, ZE.MECH.7840 (other project) FF, ZE.MECH.7830 (other project) FF, ZE.MECH.6360 (other project) FF, ZE.MECH.7820 (other project) FF, ZE.MECH.7340 (other project) FF, ZE.MECH.6790 (other project) FF, ZE.MECH.7580 (other project) FF, ZE.MECH.5510 (other project) FF, ZE.MECH.5500 (other project) FF, ZE.MECH.5540 (other project) FF, ZE.MECH.7570 (other project) FF, ZE.MECH.5490 (other project) FF, ZE.MECH.5480 (other project) FF, ZE.MECH.5470 (other project) FF, ZE.MECH.5460 (other project) FF, ZE.MECH.5450 (other project) FF, ZE.MECH.5440 (other project) FF, ZE.MECH.5430 (other project) FF | 172.9d | 10d |  | 0 | ENG |  |  | CON | PCL | WS G |  | Pipe |
| WSC-INT-MIL-2600 | Engineering Complete Small Bore Cold Iso's MR 60% | milestone | 0d | 2027-05-05 | 2027-05-05 | WSC-CON-MIL1000, ZE.IM.MECH.2230 (other project) FF, ZE.IM.MECH.2330 (other project) FF, ZE.IM.MECH.3050 (other project) FF, ZE.IM.MECH.3040 (other project) FF, ZE.IM.MECH.2320 (other project) FF, ZE.IM.MECH.3060 (other project) FF, ZE.IM.MECH.3510 (other project) FF, ZE.IM.MECH.3660 (other project) FF, ZE.IM.MECH.3720 (other project) FF, ZE.IM.MECH.3730 (other project) FF, ZE.IM.MECH.2620 (other project) FF, ZE.IM.MECH.3290 (other project) FF, ZE.IM.MECH.3300 (other project) FF, ZE.IM.MECH.3310 (other project) FF, ZE.IM.MECH.3320 (other project) FF, ZE.IM.MECH.3810 (other project) FF | 257.9d | 10d |  | 0 | ENG |  |  | CON | PCL | WS G |  | Pipe |
| WSC-INT-MIL-2720 | Engineering Milestone Misc Structural Steel IFC | milestone | 0d | 2027-05-05 | 2027-05-05 | WSC-INT-MIL-2710, ZE.IM.CSA.3570 (other project) FF, ZE.IM.CSA.3800 (other project) FF, ZE.IM.CSA.3810 (other project) FF, ZE.IM.CSA.3930 (other project) FF, ZE.IM.CSA.3980 (other project) FF, ZE.IM.CSA.4080 (other project) FF, ZE.IM.CSA.4090 (other project) FF, ZE.IM.CSA.4100 (other project) FF, ZE.IM.CSA.4130 (other project), ZE.IM.CSA.4070 (other project) | 257.9d | 305d |  | 0 | ENG |  |  | CON | PCL | WS G |  | Structural |
| WSC-INT-MIL-1430 | Delivered at Site (GE) HP Steam Turbine Module (5-5-27) | milestone | 0d | 2027-05-06 | 2027-05-06 | GE-MAJ-07 (other project) FF | -15d | 0d |  | 0 | PRO | FND | ST On | CON | PCL | WS G | CCWA_02 |  |
| WSC-INT-MIL-1440 | Delivered at Site (GE) IP/LP Steam Turbine Rotor (5-5-27) | milestone | 0d | 2027-05-06 | 2027-05-06 | GE-MAJ-12 (other project) FF | 23d | 55d |  | 0 | PRO |  |  | CON | PCL | WS G |  |  |
| WSC-INT-MIL-2070 | Engineering Complete Large Bore Hot Iso's IFC | milestone | 0d | 2027-05-19 | 2027-05-19 | WSC-INT-MIL-2020, ZE.MECH.9325 (other project) FF, ZE.MECH.9320 (other project) FF, ZE.MECH.9397 (other project) FF, ZE.MECH.9403 (other project) FF, ZE.MECH.9405 (other project) FF, ZE.MECH.9417 (other project) FF, ZE.MECH.9413 (other project) FF, ZE.MECH.9415 (other project) FF, ZE.MECH.9419 (other project) FF, ZE.MECH.9315 (other project) FF, ZE.MECH.9290 (other project) FF, ZE.MECH.9295 (other project) FF, ZE.MECH.9305 (other project) FF, ZE.MECH.9300 (other project) FF, ZE.MECH.9395 (other project) FF, ZE.MECH.9230 (other project) FF, ZE.MECH.9407 (other project) FF, ZE.MECH.9280 (other project) FF, ZE.MECH.9310 (other project) FF, ZE.MECH.9399 (other project) FF, ZE.MECH.9401 (other project) FF, ZE.MECH.9409 (other project) FF, ZE.MECH.9411 (other project) FF, ZE.MECH.9285 (other project) FF | 162.9d | 0d |  | 0 | ENG |  |  | CON | PCL | WS G |  | Pipe |
| WSC-INT-MIL-2080 | Engineering Complete Small Bore HoT Iso's IFC | milestone | 0d | 2027-05-19 | 2027-05-19 | WSC-INT-MIL-2010, ZE.MECH.9421 (other project) FF, ZE.MECH.9423 (other project) FF, ZE.MECH.6470 (other project) FF, ZE.MECH.7880 (other project) FF, ZE.MECH.7560 (other project) FF, ZE.MECH.7860 (other project) FF, ZE.MECH.7890 (other project) FF, ZE.MECH.6450 (other project) FF, ZE.MECH.6460 (other project) FF, ZE.MECH.7310 (other project) FF, ZE.MECH.9365 (other project) FF, ZE.MECH.9380 (other project) FF, ZE.MECH.9390 (other project) FF, ZE.MECH.9385 (other project) FF, ZE.MECH.9340 (other project) FF, ZE.MECH.9335 (other project) FF, ZE.MECH.9360 (other project) FF, ZE.MECH.7870 (other project) FF, ZE.MECH.9425 (other project) FF, ZE.MECH.9350 (other project) FF, ZE.MECH.9345 (other project) FF, ZE.MECH.7750 (other project) FF, ZE.MECH.9427 (other project) FF, ZE.MECH.7300 (other project) FF, ZE.MECH.9370 (other project) FF, ZE.MECH.9355 (other project) FF, ZE.MECH.9375 (other project) FF, ZE.MECH.9429 (other project) FF | 162.9d | 0d |  | 0 | ENG |  |  | CON | PCL | WS G |  | Pipe |
| WSC-INT-MIL-2570 | Engineering Complete Large Bore Cold Iso's IFC | milestone | 0d | 2027-05-19 | 2027-05-19 | WSC-INT-MIL-2580, WSC-INT-MIL-2580 FF, ZE.IM.MECH.2300 (other project) FF, ZE.IM.MECH.3360 (other project) FF, ZE.IM.MECH.3370 (other project) FF, ZE.IM.MECH.3500 (other project) FF, ZE.IM.MECH.3550 (other project) FF, ZE.IM.MECH.3620 (other project) FF, ZE.IM.MECH.3690 (other project) FF, ZE.IM.MECH.3750 (other project) FF, ZE.IM.MECH.3470 (other project) FF, ZE.IM.MECH.2170 (other project) FF, ZE.IM.MECH.2690 (other project) FF, ZE.IM.MECH.2450 (other project) FF, ZE.IM.MECH.3850 (other project) FF | 247.9d | 295d |  | 0 | ENG |  |  | CON | PCL | WS G |  | Pipe |
| WSC-INT-MIL-2590 | Engineering Complete Small Bore Cold Iso's IFC | milestone | 0d | 2027-05-19 | 2027-05-19 | WSC-INT-MIL-2600, WSC-INT-MIL-2600 FF, ZE.IM.MECH.2340 (other project) FF, ZE.IM.MECH.2500 (other project) FF, ZE.IM.MECH.3200 (other project) FF, ZE.IM.MECH.3210 (other project) FF, ZE.IM.MECH.2510 (other project) FF, ZE.IM.MECH.3190 (other project) FF, ZE.IM.MECH.3570 (other project) FF, ZE.IM.MECH.3710 (other project) FF, ZE.IM.MECH.3790 (other project) FF, ZE.IM.MECH.3780 (other project) FF, ZE.IM.MECH.2710 (other project) FF, ZE.IM.MECH.3460 (other project) FF, ZE.IM.MECH.3450 (other project) FF, ZE.IM.MECH.3440 (other project) FF, ZE.IM.MECH.3430 (other project) FF, ZE.IM.MECH.3840 (other project) FF | 247.9d | 295d |  | 0 | ENG |  |  | CON | PCL | WS G |  | Pipe |
| WSC-INT-MIL-1540 | Delivered at Site DC Power and UPS System | milestone | 0d | 2027-05-27 | 2027-05-27 | MST3820 (other project) FF | 231.9d | 0d |  | 0 | PRO |  |  | CON | PCL | WS G |  |  |
| WSC-INT-MIL-1780 | Delivered at Site ACC PDC with MCC | milestone | 0d | 2027-06-01 | 2027-06-01 | MST3800 (other project) | -19.8d | 0d |  | 0 | PRO | FND | ACC Off | CON | PCL | WS G | CCWA_06 |  |
| WSC-INT-MIL-1610 | Delivered at Site MV PDC Switchgear and MCC | milestone | 0d | 2027-06-06 | 2027-06-06 | MST1580 (other project) FF | 341.88d | 411d | Standard 7 Day Workweek | 0 | PRO | FND | Elect Yard | CON | PCL | WS G | CCWA_13 |  |
| WSC-INT-MIL-2730 | Engineering Complete Cable Tray | milestone | 0d | 2027-06-25 | 2027-06-25 | WSC-CON-MIL1000, ZE.IM.ELEC.2720 (other project) FF, ZE.IM.ELEC.2740 (other project) FF, ZE.IM.ELEC.3300 (other project) FF, ZE.IM.ELEC.3560 (other project) FF, ZE.IM.ELEC.3640 (other project) FF, ZE.IM.ELEC.4110 (other project) FF, ZE.IM.ELEC.4120 (other project) FF, ZE.IM.ELEC.3960 (other project) FF, ZE.IM.ELEC.4150 (other project) FF, ZE.IM.ELEC.4200 (other project) FF, ZE.IM.ELEC.4210 (other project) FF, ZE.IM.ELEC.4020 (other project) FF, ZE.IM.ELEC.4030 (other project) FF, ZE.IM.ELEC.4220 (other project) FF | 221.9d | 269d |  | 0 | ENG |  |  | CON | PCL | WS G |  | Elect |
| WSC-INT-MIL-1640 | Delivered at Site RTU | milestone | 0d | 2027-06-28 | 2027-06-28 | MST3750 (other project) FF | -48.8d | 0d |  | 0 | PRO |  |  | CON | PCL | WS G |  |  |
| WSC-INT-MIL-1070 | Delivered at Site Safety Showers and Eyewash Stations | milestone | 0d | 2027-07-19 | 2027-07-19 | MST3530 (other project) FF | 174d | 126d |  | 0 | PRO |  |  | CON | PCL | WS G |  |  |
| WSC-INT-MIL-2550 | Engineering Complete Electrical Cable Bulks | milestone | 0d | 2027-07-19 | 2027-07-19 | WSC-CON-MIL1000, ZE.IM.ELEC.3010 (other project) FF, ZE.IM.ELEC.3020 (other project) FF, ZE.IM.ELEC.3030 (other project) FF, ZE.IM.ELEC.3040 (other project) FF, ZE.IM.ELEC.3610 (other project) FF, ZE.IM.ELEC.3050 (other project) FF, ZE.IM.ELEC.3060 (other project) FF, ZE.IM.ELEC.3790 (other project) FF, ZE.IM.ELEC.3440 (other project) FF, ZE.IM.ELEC.4090 (other project) FF, ZE.IM.ELEC.3070 (other project) FF, ZE.IM.ELEC.3080 (other project) FF, ZE.IM.ELEC.3970 (other project) FF, ZE.IM.ELEC.3090 (other project) FF, ZE.IM.ELEC.3450 (other project) FF, ZE.IM.ELEC.3750 (other project) FF, ZE.IM.ELEC.3460 (other project) FF, ZE.IM.ELEC.3470 (other project) FF, ZE.IM.ELEC.3100 (other project) FF, ZE.IM.ELEC.3760 (other project) FF, ZE.IM.ELEC.4250 (other project) FF, ZE.IM.ELEC.3110 (other project) FF, ZE.IM.ELEC.3710 (other project) FF, ZE.IM.ELEC.3800 (other project) FF, ZE.IM.ELEC.3480 (other project) FF, ZE.IM.ELEC.3880 (other project) FF, ZE.IM.ELEC.3120 (other project) FF, ZE.IM.ELEC.3130 (other project) FF, ZE.IM.ELEC.3490 (other project) FF, ZE.IM.ELEC.3140 (other project) FF, ZE.IM.ELEC.3150 (other project) FF, ZE.IM.ELEC.3160 (other project) FF, ZE.IM.ELEC.3500 (other project) FF, ZE.IM.ELEC.3170 (other project) FF, ZE.IM.ELEC.3980 (other project) FF, ZE.IM.ELEC.3720 (other project) FF, ZE.IM.ELEC.3510 (other project) FF, ZE.IM.ELEC.4180 (other project) FF, ZE.IM.ELEC.3180 (other project) FF, ZE.IM.ELEC.3870 (other project) FF, ZE.IM.ELEC.3770 (other project) FF, ZE.IM.ELEC.3990 (other project) FF, ZE.IM.ELEC.4000 (other project) FF, ZE.IM.ELEC.3190 (other project) FF, ZE.IM.ELEC.3520 (other project) FF, ZE.IM.ELEC.3530 (other project) FF, ZE.IM.ELEC.3200 (other project) FF, ZE.IM.ELEC.3210 (other project) FF, ZE.IM.ELEC.3890 (other project) FF, ZE.IM.ELEC.3780 (other project) FF, ZE.IM.ELEC.4190 (other project) FF, ZE.IM.ELEC.4010 (other project) FF, ZE.IM.ELEC.4100 (other project) FF, ZE.IM.ELEC.3540 (other project) FF, ZE.IM.ELEC.3550 (other project) FF, ZE.IM.ELEC.3220 (other project) FF, ZE.IM.ELEC.4260 (other project) FF | 206.9d | 254d |  | 0 | ENG |  |  | CON | PCL | WS G |  | Elect |
| WSC-INT-MIL-1110 | Delivered at Site Condensate Pumps Suction Strainers | milestone | 0d | 2027-07-26 | 2027-07-26 | MST3550 (other project) FF | 192.9d | 0d |  | 0 | PRO |  |  | CON | PCL | WS G |  |  |
| WSC-INT-MIL-1500 | Delivered at Site Communications and Security | milestone | 0d | 2027-08-09 | 2027-08-09 | MST3930 (other project) FF | 160d | 112d |  | 0 | PRO |  |  | CON | PCL | WS G |  |  |
| WSC-INT-MIL-1750 | Delivered at Site 18kV Open Aluminum Bus | milestone | 0d | 2027-10-04 | 2027-10-04 | MST3720 (other project) FF | 132.9d | 0d |  | 0 | PRO |  |  | CON | PCL | WS G |  |  |
| WSC-INT-MIL-1230 | Delivered at Site Control Valves | milestone | 0d | 2027-10-18 | 2027-10-18 | WSC-CON-MIL1020 | 142.9d | 190d |  | 0 | PRO |  |  | CON | PCL | WS G |  |  |
| WSC-INT-MIL-1660 | Delivered at Site UAT (Aux Transformer) | milestone | 0d | 2027-11-01 | 2027-11-01 | MST1470 (other project) FF | -186.8d | 0d |  | 0 | PRO | FND | Elect Yard | CON | PCL | WS G | CCWA_13 |  |
| WSC-INT-MIL-2050 | Delivered at Site GSU (3 ea.) | milestone | 0d | 2027-11-01 | 2027-11-01 | MST1300 (other project) SF | -196.9d | 0d |  | 0 | PRO | FND | Elect Yard | CON | PCL | WS G | CCWA_13 |  |
| WSC-INT-MIL-1220 | Delivered at Site Valves Gate Globe Ball Butterfly Check | milestone | 0d | 2027-11-10 | 2027-11-10 | WSC-CON-MIL1020 | 125.9d | 173d |  | 0 | PRO |  |  | CON | PCL | WS G |  |  |
| WSC-INT-MIL-1770 | Delivered at Site 6.9kV Non-Seg Bus | milestone | 0d | 2027-11-10 | 2027-11-10 | MST3760 (other project) FF | -184.8d | 0d |  | 0 | PRO |  |  | CON | PCL | WS G |  |  |
| WSC-INT-MIL-1700 | Delivered at Site Field Instruments | milestone | 0d | 2027-11-22 | 2027-11-22 | MST3830 (other project) FF | -99d | 0d |  | 0 | PRO |  |  | CON | PCL | WS G |  |  |
| WSC-INT-MIL-1710 | Delivered at Site Field Instruments | milestone | 0d | 2027-11-22 | 2027-11-22 | MST3830 (other project) FF | -99d | 0d |  | 0 | PRO |  |  | CON | PCL | WS G |  |  |
| WSC-INT-MIL-1760 | Delivered at Site 23kV Iso-Phase Bus | milestone | 0d | 2027-12-28 | 2027-12-28 | MST2160 (other project) FF | 86.9d | 0d |  | 0 | PRO |  |  | CON | PCL | WS G |  |  |

| ID | WBS | Activity | Duration | Start | Finish | Predecessors | Total float | Free float | Resources | Crew Size | WS Sub-Equipment | WS Equipment | WS Power Train Center Line | WS PIE | WS Sub Area | WS EPC | WS Resp | WS Area | WS Discipline | WS Float Path | zInteger_01 |
| --- | --- | --- | --- | --- | --- | --- | --- | --- | --- | --- | --- | --- | --- | --- | --- | --- | --- | --- | --- | --- | --- |
|  | 2 | **Steam Turbine, Combustion Turbine & Generator** |  | 2026-09-14 | 2028-05-11 |  |  |  |  |  |  |  |  |  |  |  |  |  |  |  |  |
| WSC-CT-MEC-1310 |  | Instal Gas Turbine (Holding Bucket Mechanical Assm) | 121d | 2026-09-14 | 2027-03-10 | WSC-CT-MEC-1100 SS | 298.5d | 345.6d | Mechanical [10685 h] | 8.8305785123967 | GT-M | CT | Yes | Yes | CT On | CON | PCL | WS CT | Mechanical |  |  |
| WSC-CT-STR-1000 |  | Combustion Turbine On Base Steel | 35d | 2026-09-14 | 2026-11-02 | WSC-INT-MIL-1920, WSC-INT-MIL-1320 | 153.8d | 233.6d | Structural Steel [1016 h] | 2.90285714285714 |  |  | Yes |  | CT On | CON | PCL | WS CT |  |  |  |
| WSC-GEN-MEC-1140 |  | Instal Generator (Holding Bucket Mechanical Assm) | 117d | 2027-04-05 | 2027-09-17 | WSC-GEN-MEC-1040 SS | 17.9d | 0d | Mechanical [3940 h] | 3.36752136752137 | GEN-M | Gen | Yes | Yes | Gen On | CON | PCL | WS GEN | Mechanical | 11-30 |  |
| WSC-ST-MEC-1240 |  | Instal Steam Turbine (Holding Bucket Mechanical Assm) | 233d | 2027-05-06 | 2028-04-07 | WSC-ST-MEC-1190 SS | -8d | 24d | Mechanical [19237 h] | 8.25622317596567 | ST-EXT Equip | ST | Yes | Yes | ST On | CON | PCL | WS ST | Mechanical | 11-30 |  |
| WSC-GEN-PIP-1010 |  | Gen Off Base Install Hot Piping LB | 50d | 2027-07-28 | 2027-10-06 | WSC-PR-STL-1010, WSC-INT-MIL-1990 | 35.9d | 0d | Pipe [750 h] | 1.5 |  |  | Yes |  | Gen Off | CON | PCL | WS GEN |  |  |  |
| WSC-ST-PIP-1010 |  | ST Off Base Install Hot Piping LB | 50d | 2027-07-28 | 2027-10-06 | WSC-PR-STL-1010, WSC-INT-MIL-1990 | -99.8d | 0d | Pipe [750 h] | 1.5 |  |  | Yes |  | ST Off | CON | PCL | WS ST |  | 1-10 |  |
| WSC-ST-PIP-1060 |  | ST Off Base Install High Energy Piping LB | 60d | 2027-07-28 | 2027-10-20 | WSC-PR-STL-1010, WSC-INT-MIL-1680 | -119.8d | 0d | Pipe [2250 h] | 3.75 |  |  | Yes |  | ST Off | CON | PCL | WS ST |  |  |  |
| WSC-GEN-CIV-1200 |  | GEN Misc Equipment Grout | 45d | 2027-09-29 | 2027-12-02 | WSC-GEN-MEC-1130 | 111.9d | 159d | Concrete [255 h] | 0.566666666666667 |  |  |  |  | Gen On | CON | PCL | WS GEN | Civil |  | 0 |
| WSC-GEN-PIP-1000 |  | Gen Off Base Install Cold Piping LB | 20d | 2027-10-07 | 2027-11-03 | WSC-GEN-PIP-1010 | 35.9d | 0d | Pipe [350 h] | 1.75 |  |  | Yes |  | Gen Off | CON | PCL | WS GEN |  |  |  |
| WSC-GEN-PIP-1030 |  | Gen Off Base Install Hot Piping SB | 20d | 2027-10-07 | 2027-11-03 | WSC-INT-MIL-1690, WSC-GEN-PIP-1010 | 35.9d | 0d | Pipe [300 h] | 1.5 |  |  | Yes |  | Gen Off | CON | PCL | WS GEN |  |  |  |
| WSC-ST-PIP-1000 |  | ST Off Base Install Cold Piping LB | 20d | 2027-10-07 | 2027-11-03 | WSC-ST-PIP-1010 | -64.8d | 0d | Pipe [350 h] | 1.75 |  |  | Yes |  | ST Off | CON | PCL | WS ST |  |  |  |
| WSC-ST-PIP-1030 |  | ST Off Base Install Hot Piping SB | 20d | 2027-10-07 | 2027-11-03 | WSC-INT-MIL-1690, WSC-ST-PIP-1010 | -64.8d | 0d | Pipe [300 h] | 1.5 |  |  | Yes |  | ST Off | CON | PCL | WS ST |  |  |  |
| WSC-ST-PIP-1090 |  | Steam Turbine On Base Vendor Pipe Install | 75d | 2027-10-07 | 2028-01-26 | WSC-ST-PIP-1010, PCL-STG-PIP-1010 (other project) FF, PCL-STG-PIP-1000 (other project) FF | 0.9d | 0d | Pipe [12500 h] | 8.62068965517241 |  |  | Yes |  | ST On | CON | PCL | WS ST |  | 1-10 |  |
| WSC-GEN-CIV-1190 |  | GEN Misc Equipment Grout | 45d | 2027-10-13 | 2027-12-16 | WSC-GEN-MEC-1000 | 101.9d | 149d | Concrete [255 h] | 0.566666666666667 |  |  |  |  | Gen Off | CON | PCL | WS GEN | Civil |  | 0 |
| WSC-GEN-PIP-1070 |  | Generator On Base Vendor Pipe Install | 54d | 2027-10-13 | 2028-01-03 | WSC-GEN-MEC-1000, WSC-INT-MIL-1420 | 17.9d | 0d | Pipe [2850 h] | 5.27777777777778 |  |  | Yes |  | Gen On | CON | PCL | WS GEN |  | 11-30 |  |
| WSC-ST-PIP-1070 |  | ST Off Base Test High Energy Piping | 20d | 2027-10-21 | 2027-11-17 | WSC-ST-PIP-1060 | 5.2d | 95d | Pipe [500 h] | 2.5 |  |  | Yes |  | ST Off | CON | PCL | WS ST |  |  |  |
| WSC-CT-CIV-1000 |  | CT Grout Misc Equipment Gas Turbine | 80d | 2027-11-04 | 2028-03-02 | WSC-CT-PIP-1000, WSC-CT-MEC-1060, WSC-CT-MEC-1010 FF | 50.9d | 98d | Concrete [1250 h] | 1.5625 | GT-M | CT | Yes | Yes | CT Off | CON | PCL | WS CT | Civil |  |  |
| WSC-CT-CIV-1010 |  | CT Grout MES and MPS Supports | 20d | 2027-11-04 | 2027-12-03 | WSC-CT-PIP-1000 | 110.9d | 158d | Concrete [135 h] | 0.675 | GT-M | CT | Yes | Yes | CT Off | CON | PCL | WS CT | Civil |  |  |
| WSC-CT-PIP-1040 |  | CT Off Base Test Hot Piping | 50d | 2027-11-04 | 2028-01-19 | WSC-CT-PIP-1000, WSC-CT-PIP-1030 | -79.8d | 0d | Pipe [450 h] | 0.9 |  |  | Yes |  | CT Off | CON | PCL | WS CT |  |  |  |
| WSC-GEN-PIP-1020 |  | Gen Off Base Install Cold Piping SB | 30d | 2027-11-04 | 2027-12-17 | WSC-GEN-PIP-1000 | 55.9d | 20d | Pipe [750 h] | 2.5 |  |  | Yes |  | Gen Off | CON | PCL | WS GEN |  |  |  |
| WSC-GEN-PIP-1040 |  | Gen Off Base Test Hot Piping | 50d | 2027-11-04 | 2028-01-19 | WSC-GEN-PIP-1000, WSC-GEN-PIP-1030 | 35.9d | 0d | Pipe [450 h] | 0.9 |  |  | Yes |  | Gen Off | CON | PCL | WS GEN |  |  |  |
| WSC-ST-PIP-1020 |  | ST Off Base Install Cold Piping SB | 30d | 2027-11-04 | 2027-12-17 | WSC-ST-PIP-1000 | -34.8d | 20d | Pipe [750 h] | 2.5 |  |  | Yes |  | ST Off | CON | PCL | WS ST |  |  |  |
| WSC-ST-PIP-1040 |  | ST Off Base Test Hot Piping | 50d | 2027-11-04 | 2028-01-19 | WSC-ST-PIP-1000, WSC-ST-PIP-1030 | -64.8d | 0d | Pipe [450 h] | 0.9 |  |  | Yes |  | ST Off | CON | PCL | WS ST |  |  |  |
| WSC-ST-STR-1010 |  | Steam Turbine Bypass Valve Access Platform | 10d | 2027-12-03 | 2027-12-16 | WSC-ST-STR-1000 | 56d | 0d | Structural Steel [555 h] | 5.55 | ST-EXT Equip |  |  |  | ST Off | CON | PCL | WS ST |  |  |  |
| WSC-ST-CIV-1210 |  | ST Misc Equipment Grout | 45d | 2027-12-17 | 2028-02-23 | WSC-ST-STR-1010, WSC-ST-STR-1000, WSC-ST-MEC-1030 | 56.9d | 104d | Concrete [1255 h] | 2.78888888888889 |  |  |  |  | ST Off | CON | PCL | WS ST | Civil |  | 0 |
| WSC-GEN-PIP-1060 |  | Generator On Base Vendor Pipe Testing | 50d | 2028-01-04 | 2028-03-14 | WSC-GEN-PIP-1070 | 17.9d | 17d | Pipe [550 h] | 1.1 |  |  | Yes |  | Gen On | CON | PCL | WS GEN |  | 11-30 |  |
| WSC-CT-PIP-1050 |  | CT Off Base Test Cold Piping | 20d | 2028-01-20 | 2028-02-16 | WSC-CT-PIP-1040, WSC-CT-PIP-1020, PCL-CTG-MEC-1080 (other project) FF, PCL-CTG-MEC-1050 (other project) FF, PCL-CTG-MEC-1000 (other project) FF | 30.9d | 27d | Pipe [450 h] | 2.25 |  |  | Yes |  | CT Off | CON | PCL | WS CT |  |  |  |
| WSC-GEN-PIP-1050 |  | Gen Off Base Test Cold Piping | 20d | 2028-01-20 | 2028-02-16 | WSC-GEN-PIP-1040, WSC-GEN-PIP-1020 | 35.9d | 35d | Pipe [450 h] | 2.25 |  |  | Yes |  | Gen Off | CON | PCL | WS GEN |  |  |  |
| WSC-ST-PIP-1050 |  | ST Off Base Test Cold Piping | 20d | 2028-01-20 | 2028-02-16 | WSC-ST-PIP-1040, WSC-ST-PIP-1020 | -54.8d | 35d | Pipe [450 h] | 2.25 |  |  | Yes |  | ST Off | CON | PCL | WS ST |  |  |  |
| WSC-ST-PIP-1080 |  | Steam Turbine On Base Vendor Pipe Testing | 50d | 2028-01-27 | 2028-04-06 | WSC-ST-PIP-1090 | 0.9d | 0d | Pipe [550 h] | 1.1 |  |  | Yes |  | ST On | CON | PCL | WS ST |  | 1-10 |  |
| WSC-CT-CIV-1030 |  | Grout Gas Turbine | 8d | 2028-04-07 | 2028-04-18 | WSC-ST-MEC-1220 | 17.9d | 65d | Concrete [350 h] | 4.375 | GT-M | CT | Yes | Yes | CT On | CON | PCL | WS CT | Civil | 11-30 |  |
| WSC-ST-CIV-1220 |  | ST Misc Equipment Grout | 20d | 2028-04-07 | 2028-05-04 | WSC-ST-MEC-1220 | 5.9d | 53d | Concrete [255 h] | 1.275 |  |  |  |  | ST On | CON | PCL | WS ST | Civil | 1-10 | 0 |

| ID | WBS | Activity | Duration | Start | Finish | Predecessors | Total float | Free float | Calendar | Resources | Crew Size | WS Sub-Equipment | WS Equipment | WS Power Train Center Line | WS PIE | WS Sub Area | WS EPC | WS Resp | WS Area | WS Discipline | zInteger_01 | WS Equipment Set | WS CCWA Area | WS Float Path | WS Sequence |
| --- | --- | --- | --- | --- | --- | --- | --- | --- | --- | --- | --- | --- | --- | --- | --- | --- | --- | --- | --- | --- | --- | --- | --- | --- | --- |
|  | 1 | **Grout** |  | 2026-09-21 | 2027-11-24 |  |  |  |  |  |  |  |  |  |  |  |  |  |  |  |  |  |  |  |  |
| WSC-CT-CIV-1020 |  | CT Grout Fixators Gas Turbine | 4.9d | 2026-09-21 | 2026-09-28 | WSC-CT-MEC-1100 | 38d | 0d |  | Concrete [275 h] | 5.61224489795918 | GT-M | CT | Yes | Yes | CT On | CON | PCL | WS CT | Civil |  |  |  |  |  |
| WSC-GEN-CIV-1050 |  | ST, CT, Gen Train Assembly Grout | 70d | 2027-07-14 | 2027-10-20 | WSC-INT-MIL-1320, WSC-INT-MIL-1330, WSC-ST-MEC-1060 | 39d | 0d |  | Concrete [1400 h] | 2 |  |  | Yes |  |  | CON | PCL | WS G | Civil | 0 |  |  |  |  |
| WSC-GEN-CIV-1070 |  | Misc Grout MES & MPS Supports | 25d | 2027-10-21 | 2027-11-24 | WSC-GEN-CIV-1050 | 39d | 0d |  | Concrete [768 h] | 3.072 |  |  |  |  |  | CON | PCL | WS G | Civil | 0 |  |  |  |  |
|  | 2 | **Structural** |  | 2027-09-15 | 2027-12-02 |  |  |  |  |  |  |  |  |  |  |  |  |  |  |  |  |  |  |  |  |
| WSC-ST-STR-1000 |  | ST Misc Steel Installation | 55d | 2027-09-15 | 2027-12-02 | WSC-ST-MEC-1060, WSC-BOP-STL-1000 | -53.8d | 0d |  | Structural Steel [1923 h] | 3.49636363636364 |  |  |  |  | ST Off | CON | PCL | WS ST |  |  |  |  |  |  |
|  | 3 | **Mechanical** |  | 2026-09-14 | 2028-05-11 |  |  |  |  |  |  |  |  |  |  |  |  |  |  |  |  |  |  |  |  |
| WSC-CT-MEC-1100 |  | Install Fixators Gas Turbine | 5d | 2026-09-14 | 2026-09-21 | WSC-INT-MIL-1320, WSC-INT-MIL-1920, WSC-INT-MIL-1910 | 38d | 0d |  | Mechanical | 0 | GT-M | CT | Yes | Yes | CT On | CON | PCL | WS CT | Mechanical |  |  |  |  |  |
| WSC-CT-MEC-1110 |  | Install Air Extraction Mob and Exhaust Duct Support Gas Turbine | 5d | 2026-09-28 | 2026-10-05 | WSC-CT-CIV-1020, WSC-CT-MEC-1100 | 38d | 103.7d |  | Mechanical | 0 | GT-M | CT | Yes | Yes | CT On | CON | PCL | WS CT | Mechanical |  | FND | CCWA_02 |  |  |
| WSC-CT-MEC-1080 |  | Set Combustion Turbine | 7.88d | 2027-03-07 | 2027-03-14 | WSC-CT-MEC-1110, GE-MAJ-10 (other project), GE-MAJ-10 (other project) FF, CCWA_02-6166 (other project) | -96.88d | 0d | 7-Day Workweek | Mechanical | 0 | GT-M | CT | Yes | Yes | CT On | CON | PCL | WS CT | Mechanical |  | FND | CCWA_02 | 0 |  |
| WSC-CT-MEC-1120 |  | Install Exhaust Diffuser and Exhaust Duct Gas Turbine | 5d | 2027-03-15 | 2027-03-19 | WSC-CT-MEC-1080 | -39.8d | 0d |  | Mechanical | 0 | GT-EXhaust | CT | Yes | Yes | CT On | CON | PCL | WS CT | Mechanical |  |  |  | 0 |  |
| WSC-CT-MEC-1130 |  | Remove Shipping Braces and Weld Duct Gas Turbine | 5d | 2027-03-22 | 2027-03-26 | WSC-CT-MEC-1120 | -39.8d | 0d |  | Mechanical | 0 | GT-EXhaust | CT | Yes | Yes | CT On | CON | PCL | WS CT | Mechanical |  |  |  | 0 |  |
| WSC-ST-MEC-1000 |  | Lube Oil Tank | 10d | 2027-03-24 | 2027-04-07 | WSC-INT-MIL-1390 | 225.1d | 0d |  | Mechanical [100 h] | 1 | ST-EXT Equip |  |  |  | ST Off | CON | PCL | WS ST | Mechanical |  | FND | CCWA_02 | 1-10 |  |
| WSC-ST-MEC-1030 |  | Gland Steam Condenser BBB | 10d | 2027-03-24 | 2027-04-07 | WSC-INT-MIL-1390 | -102.7d | 17.1d |  | Mechanical [100 h] | 1 | ST-EXT Equip |  |  |  | ST Off | CON | PCL | WS ST | Mechanical |  | FND | CCWA_02 | 11-30 | CTG Steel |
| WSC-CT-MEC-1090 |  | Drop Checks and Rough Align Gas Turbine | 10d | 2027-03-29 | 2027-04-09 | WSC-CT-MEC-1130, WSC-CT-MEC-1080, CCWA_02-6166 (other project) | -39.8d | 0d |  | Mechanical | 0 | GT-EXhaust | CT | Yes | Yes | CT On | CON | PCL | WS CT | Mechanical |  |  |  | 0 |  |
| WSC-CT-MEC-1140 |  | Install Liner plates and insulation Gas Turbine | 10d | 2027-03-29 | 2027-04-09 | WSC-CT-MEC-1130 | -14.8d | 20d |  | Mechanical | 0 | GT-EXhaust | CT | Yes | Yes | CT On | CON | PCL | WS CT | Mechanical |  |  |  |  |  |
| WSC-GEN-MEC-1040 |  | Install Sole Plates and grout pads for Generator Base Frame | 10d | 2027-04-05 | 2027-04-16 | WSC-INT-MIL-1420 | -2d | 0d |  | Mechanical | 0 | GEN-M | Gen |  | Yes | Gen On | CON | PCL | WS GEN | Mechanical |  |  |  | 11-30 |  |
| WSC-ST-MEC-1010 |  | Set Atmospheric St Drains Tank & Pumps | 10d | 2027-04-07 | 2027-04-21 | WSC-ST-MEC-1000, WSC-INT-MIL-1470, WSC-INT-MIL-1510 | 225.1d | 0d |  | Mechanical [100 h] | 1 | ST-EXT Equip |  |  |  | ST Off | CON | PCL | WS ST | Mechanical |  | FND | CCWA_02 |  |  |
| WSC-ST-MEC-1020 |  | Electric Steam Superheater BBB | 10d | 2027-04-07 | 2027-04-21 | WSC-ST-MEC-1000, WSC-INT-MIL-1390 | 235.1d | 267.1d |  | Mechanical [100 h] | 1 | ST-EXT Equip |  |  |  | ST Off | CON | PCL | WS ST | Mechanical |  | FND | CCWA_02 | 1-10 | CTG Steel |
| WSC-CT-MEC-1050 |  | Fuel Gas Electric Heater AAA | 10d | 2027-04-09 | 2027-04-22 | WSC-INT-MIL-1020 | -83.8d | 36d |  | Mechanical | 0 |  |  |  |  | CT Off | CON | PCL | WS CT | Mechanical |  | FND | CCWA_02 |  | CTG Steel |
| WSC-CT-MEC-1060 |  | Set Fuel Gas Absolute Separator AAA | 10d | 2027-04-09 | 2027-04-22 | WSC-INT-MIL-1900, WSC-INT-MIL-1030 | -83.8d | 0d |  | Mechanical [100 h] | 1 |  |  |  |  | CT Off | CON | PCL | WS CT | Mechanical |  | FND | CCWA_02 |  | CTG Steel |
| WSC-CT-MEC-1150 |  | Install and Connect 6 Each AM Modules and Panels Gas Turbine | 20d | 2027-04-12 | 2027-05-07 | WSC-CT-MEC-1090 | -39.8d | 0d |  | Mechanical | 0 | GT-EXhaust | CT | Yes | Yes | CT On | CON | PCL | WS CT | Mechanical |  |  |  | 0 |  |
| WSC-ST-MEC-1040 |  | Set Vacuum Drains Tank & Pit | 10d | 2027-04-21 | 2027-05-05 | WSC-ST-MEC-1010, WSC-INT-MIL-1670 | 225.1d | 257.1d |  | Mechanical [100 h] | 1 | ST-EXT Equip |  |  |  | ST Off | CON | PCL | WS ST | Mechanical |  | FND | CCWA_02 |  |  |
| WSC-CT-MEC-1020 |  | Set Water Mist Skid | 10d | 2027-04-23 | 2027-05-06 | WSC-CT-MEC-1060, WSC-INT-MIL-1160 | 56.9d | 0d |  | Mechanical [100 h] | 1 |  |  |  |  | CT Off | CON | PCL | WS CT | Mechanical |  | FND | CCWA_02 |  |  |
| WSC-ST-MEC-1190 |  | Prep Foundation For HP Steam Turbine | 15d | 2027-05-06 | 2027-05-26 | WSC-INT-MIL-1430 | -15d | 0d |  | Mechanical | 0 | ST-HP | ST | Yes | Yes | ST On | CON | PCL | WS ST | Mechanical |  |  |  | 11-30 |  |
| WSC-CT-MEC-1040 |  | Set Water Wash Skid | 10d | 2027-05-07 | 2027-05-20 | WSC-CT-MEC-1020 FF, WSC-CT-MEC-1020, WSC-INT-MIL-1160 | 56.9d | 0d |  | Mechanical [100 h] | 1 |  |  |  |  | CT Off | CON | PCL | WS CT | Mechanical |  | FND | CCWA_02 |  |  |
| WSC-CT-MEC-1160 |  | Install TC Ladder and Platform Gas Turbine | 10d | 2027-05-10 | 2027-05-21 | WSC-CT-MEC-1140, WSC-CT-MEC-1150 | -34.8d | 0d |  | Mechanical | 0 | GT-EXhaust | CT | Yes | Yes | CT On | CON | PCL | WS CT | Mechanical |  |  |  | 11-30 |  |
| WSC-CT-MEC-1220 |  | Install Inlet Plenum Support Frame Gas Turbine | 5d | 2027-05-10 | 2027-05-14 | WSC-CT-MEC-1150 | -39.8d | 0d |  | Mechanical | 0 | GT-Inlet | CT | Yes | Yes | CT On | CON | PCL | WS CT | Mechanical |  |  |  | 0 |  |
| WSC-CT-MEC-1230 |  | Install Water Wash Piiping Inlet Plenum Gas Turbine | 5d | 2027-05-17 | 2027-05-21 | WSC-CT-MEC-1220 | -29.8d | 0d |  | Mechanical | 0 | GT-Inlet | CT | Yes | Yes | CT On | CON | PCL | WS CT | Mechanical |  |  |  | 11-30 |  |
| WSC-CT-MEC-1240 |  | Install Inlet Plenum Lower Halves Gas Turbine | 5d | 2027-05-17 | 2027-05-21 | WSC-CT-MEC-1220 | -39.8d | 0d |  | Mechanical | 0 | GT-Inlet | CT | Yes | Yes | CT On | CON | PCL | WS CT | Mechanical |  |  |  | 0 |  |
| WSC-CT-MEC-1030 |  | Set Wash Water Drain Tank | 10d | 2027-05-21 | 2027-06-04 | WSC-CT-MEC-1040 FF, WSC-CT-MEC-1040, WSC-INT-MIL-1530 | 56.9d | 16d |  | Mechanical [100 h] | 1 |  |  |  |  | CT Off | CON | PCL | WS CT | Mechanical |  | FND | CCWA_02 |  |  |
| WSC-CT-MEC-1170 |  | Install Cooling Fan Module Gas Turbine | 5d | 2027-05-24 | 2027-05-28 | WSC-CT-MEC-1230, WSC-CT-MEC-1160 | -29.8d | 5d |  | Mechanical | 0 | GT-EXhaust | CT | Yes | Yes | CT On | CON | PCL | WS CT | Mechanical |  |  |  | 11-30 |  |
| WSC-CT-MEC-1180 |  | Air Pipe Installation Inside Enclosure Gas Turbine | 10d | 2027-05-24 | 2027-06-07 | WSC-CT-MEC-1160, WSC-CT-MEC-1150, WSC-CT-MEC-1150 SS | -34.8d | 0d |  | Mechanical | 0 | GT-EXhaust | CT | Yes | Yes | CT On | CON | PCL | WS CT | Mechanical |  |  |  | 11-30 |  |
| WSC-CT-MEC-1250 |  | Install Inlet Plenum Load Coupling Gas Turbine | 5d | 2027-05-24 | 2027-05-28 | WSC-CT-MEC-1240 | -39.8d | 0d |  | Mechanical | 0 | GT-Inlet | CT | Yes | Yes | CT On | CON | PCL | WS CT | Mechanical |  |  |  | 0 |  |
| WSC-ST-MEC-1200 |  | Prep Foundation For IP / LP Steam Turbine | 10d | 2027-05-27 | 2027-06-10 | WSC-ST-MEC-1190 | -15d | 17d |  | Mechanical | 0 | ST-IP/LP | ST | Yes | Yes | ST On | CON | PCL | WS ST | Mechanical |  |  |  | 11-30 |  |
| WSC-CT-MEC-1260 |  | Install Inlet Plenum Upper Halves Gas Turbine | 10d | 2027-06-01 | 2027-06-14 | WSC-CT-MEC-1250 | -39.8d | 0d |  | Mechanical | 0 | GT-Inlet | CT | Yes | Yes | CT On | CON | PCL | WS CT | Mechanical |  |  |  | 11-30 |  |
| WSC-GEN-MEC-1020 |  | Install Generator Stator and Rough Align | 8d | 2027-06-01 | 2027-06-10 | WSC-GEN-MEC-1040, WSC-CT-MEC-1250, WSC-CT-MEC-1080, GE-MAJ-11 (other project) | -32d | 0d |  | Mechanical | 0 | GEN-M | Gen | Yes | Yes | Gen On | CON | PCL | WS GEN | Mechanical |  | FND | CCWA_02 | 0 |  |
| WSC-CT-MEC-1190 |  | Lube Oil Pipe Installation Inside Enclosure Gas Turbine | 10d | 2027-06-08 | 2027-06-21 | WSC-CT-MEC-1180, WSC-CT-MEC-1170 | -34.8d | 0d |  | Mechanical | 0 | GT-EXhaust | CT | Yes | Yes | CT On | CON | PCL | WS CT | Mechanical |  |  |  | 11-30 |  |
| WSC-GEN-MEC-1010 |  | Install Rotor In Stator | 7d | 2027-06-11 | 2027-06-21 | WSC-INT-MIL-1920, WSC-INT-MIL-1420, WSC-INT-MIL-1410, WSC-GEN-MEC-1020 | -32d | 0d |  | Mechanical | 0 | GEN-M | Gen | Yes | Yes | Gen On | CON | PCL | WS GEN | Mechanical |  | Yes |  | 0 |  |
| WSC-CT-MEC-1270 |  | Install Inlet Plenum Duct and Interface Panels Gas Turbine | 10d | 2027-06-15 | 2027-06-28 | WSC-CT-MEC-1260 | -39.8d | 0d |  | Mechanical | 0 | GT-Inlet | CT | Yes | Yes | CT On | CON | PCL | WS CT | Mechanical |  |  |  | 11-30 | CTG Steel |
| WSC-CT-MEC-1200 |  | Air Pipe Installation Outside Enclosure Gas Turbine | 10d | 2027-06-22 | 2027-07-06 | WSC-CT-MEC-1190 | -34.8d | 0d |  | Mechanical | 0 | GT-EXhaust | CT | Yes | Yes | CT On | CON | PCL | WS CT | Mechanical |  |  |  | 11-30 |  |
| WSC-GEN-MEC-1050 |  | Align Rotor to Magnetic Center Line | 5d | 2027-06-22 | 2027-06-28 | WSC-GEN-MEC-1010 | -32d | 0d |  | Mechanical | 0 | GEN-M | Gen | Yes | Yes | Gen On | CON | PCL | WS GEN | Mechanical |  |  |  | 0 |  |
| WSC-CT-MEC-1070 |  | Install Air Filter Inlet Duct | 40d | 2027-06-29 | 2027-08-24 | WSC-CT-MEC-1030, WSC-CT-MEC-1050, WSC-INT-MIL-1820, WSC-CT-MEC-1270, WSC-INT-MIL-1380 | 40.9d | 0d |  | Mechanical [100 h] | 0.25 |  |  |  |  | CT Off | CON | PCL | WS CT | Mechanical |  |  |  |  | CTG Steel |
| WSC-CT-MEC-1280 |  | Install All On Base Piping Gas Turbine | 20d | 2027-06-29 | 2027-07-27 | WSC-INT-MIL-1300, WSC-CT-MEC-1270 | -39.8d | 0d |  | Mechanical | 0 | GT-M | CT | Yes | Yes | CT On | CON | PCL | WS CT | Mechanical |  |  |  | 11-30 |  |
| WSC-GEN-MEC-1060 |  | Install Bearing Shells and End Shields | 3d | 2027-06-29 | 2027-07-01 | WSC-GEN-MEC-1050 | 35.9d | 0d |  | Mechanical | 0 | GEN-M | Gen | Yes | Yes | Gen On | CON | PCL | WS GEN | Mechanical |  |  |  |  |  |
| WSC-ST-MEC-1070 |  | Set HP Steam Turbine | 5d | 2027-06-29 | 2027-07-06 | WSC-GEN-MEC-1050, WSC-ST-MEC-1190, WSC-INT-MIL-1430, GE-MAJ-07 (other project), GE-MAJ-09 (other project), GE-MAJ-12 (other project), GE-MAJ-13 (other project), GE-MAJ-14 (other project), CCWA_02-6266 (other project) | -32d | 0d |  | Mechanical | 0 | ST-HP | ST | Yes | Yes | ST On | CON | PCL | WS ST | Mechanical |  | FND | CCWA_02 | 0 |  |
| WSC-GEN-MEC-1070 |  | Mount Ecxiter Housing and Align with Rotor Shaft | 3d | 2027-07-02 | 2027-07-07 | WSC-GEN-MEC-1060 | 35.9d | 0d |  | Mechanical | 0 | GEN-M | Gen | Yes | Yes | Gen On | CON | PCL | WS GEN | Mechanical |  |  |  |  |  |
| WSC-CT-MEC-1210 |  | Install Ventalation Skid and Complete Exhaust Enclosure | 10d | 2027-07-07 | 2027-07-20 | WSC-CT-MEC-1200, PCL-CTG-MEC-1010 (other project) FF | -34.8d | 5d |  | Mechanical | 0 | GT-EXhaust | CT | Yes | Yes | CT On | CON | PCL | WS CT | Mechanical |  |  |  | 11-30 |  |
| WSC-ST-MEC-1060 |  | Set IP / LP Steam Turbine | 5d | 2027-07-07 | 2027-07-13 | WSC-ST-MEC-1200, WSC-INT-MIL-1390, WSC-INT-MIL-1400, WSC-ST-MEC-1070, GE-MAJ-07 (other project) | -32d | 0d |  | Mechanical | 0 | ST-IP/LP | ST | Yes | Yes | ST On | CON | PCL | WS ST | Mechanical |  | Yes |  | 0 |  |
| WSC-GEN-MEC-1080 |  | Torque Coupling Bolts and Perform Balance Check | 3d | 2027-07-08 | 2027-07-12 | WSC-GEN-MEC-1070 | 35.9d | 0d |  | Mechanical | 0 | GEN-M | Gen | Yes | Yes | Gen On | CON | PCL | WS GEN | Mechanical |  |  |  |  |  |
| WSC-GEN-MEC-1090 |  | Install Upper and Lower Casing Halves | 7d | 2027-07-13 | 2027-07-21 | WSC-GEN-MEC-1080 | 35.9d | 0d |  | Mechanical | 0 | GEN-M | Gen | Yes | Yes | Gen On | CON | PCL | WS GEN | Mechanical |  |  |  |  |  |
| WSC-CT-MEC-1000 |  | Erect Balance of Combustion Turbine Equipment | 106d | 2027-07-14 | 2027-12-13 | WSC-CT-MEC-1080, WSC-ST-MEC-1060 | 44.9d | 24d |  | Mechanical [2585 h] | 2.43867924528302 | GT-EXhaust | CT | Yes | Yes | CT Off | CON | PCL | WS CT | Mechanical |  |  |  |  |  |
| WSC-ST-MEC-1090 |  | Rough Align HP to Gen | 8d | 2027-07-14 | 2027-07-23 | WSC-ST-MEC-1060 | -32d | 0d |  | Mechanical | 0 | ST-HP | ST | Yes | Yes | ST On | CON | PCL | WS ST | Mechanical |  |  |  | 0 |  |
| WSC-GEN-MEC-1100 |  | Mount Ventalation Ducting and Acoustic Panels | 10d | 2027-07-22 | 2027-08-04 | WSC-GEN-MEC-1090 | 35.9d | 0d |  | Mechanical | 0 | GEN-M | Gen | Yes | Yes | Gen On | CON | PCL | WS GEN | Mechanical |  |  |  |  |  |
| WSC-ST-MEC-1050 |  | Rough Align HP to LP/IP | 8d | 2027-07-26 | 2027-08-04 | WSC-INT-MIL-1440, WSC-ST-MEC-1070 FF+10d, WSC-ST-MEC-1090, GE-MAJ-09 (other project), GE-MIN-17 (other project), CCWA_02-6166 (other project) | -32d | 0d |  | Mechanical | 0 | ST-IP/LP | ST | Yes | Yes | ST On | CON | PCL | WS ST | Mechanical |  |  |  | 0 |  |
| WSC-CT-MEC-1290 |  | Install Enclosure Roof Gas Turbine | 5d | 2027-07-28 | 2027-08-03 | WSC-CT-MEC-1210, WSC-CT-MEC-1280 | -39.8d | 0d |  | Mechanical | 0 | GT-M | CT | Yes | Yes | CT On | CON | PCL | WS CT | Mechanical |  |  |  | 11-30 |  |
| WSC-CT-MEC-1300 |  | Install Inlet Enclosure Gas Turbine | 5d | 2027-08-04 | 2027-08-10 | WSC-CT-MEC-1290, PCL-CTG-MEC-1030 (other project) FF | 130.9d | 110d |  | Mechanical | 0 | GT-M | CT | Yes | Yes | CT On | CON | PCL | WS CT | Mechanical |  |  |  |  |  |
| WSC-GEN-MEC-1110 |  | Connect Stator Leads to Buss Duct | 5d | 2027-08-05 | 2027-08-11 | WSC-GEN-MEC-1100 | 35.9d | 0d |  | Mechanical | 0 | GEN-M | Gen | Yes | Yes | Gen On | CON | PCL | WS GEN | Mechanical |  |  |  |  |  |
| WSC-ST-MEC-1080 |  | Remove Upper LP/IP Casing | 3d | 2027-08-05 | 2027-08-09 | WSC-INT-MIL-1370, WSC-ST-MEC-1050, WSC-CT-MEC-1090 | -32d | 0d |  | Mechanical | 0 | ST-IP/LP | ST | Yes | Yes | ST On | CON | PCL | WS ST | Mechanical |  |  |  | 0 |  |
| WSC-ST-MEC-1120 |  | Prep Shell For Rotor Installation | 15d | 2027-08-10 | 2027-08-30 | WSC-ST-MEC-1080 | -32d | 0d |  | Mechanical | 0 | ST-HP | ST | Yes | Yes | ST On | CON | PCL | WS ST | Mechanical |  |  |  | 0 |  |
| WSC-GEN-MEC-1030 |  | Generator Neutral Grounding Enclosure (Bottom Mounted) | 5d | 2027-08-12 | 2027-08-18 | WSC-GEN-MEC-1110, WSC-GEN-MEC-1040, PCL-CTG-MEC-1000 (other project) FF | 35.9d | 0d |  | Mechanical | 0 | GEN-M | Gen | Yes | Yes | Gen On | CON | PCL | WS GEN | Mechanical |  |  |  |  |  |
| WSC-GEN-MEC-1120 |  | Install RTD's, Vibration Probes, and Bearing Temp Sensors | 3d | 2027-08-19 | 2027-08-23 | WSC-GEN-MEC-1030, WSC-GEN-MEC-1110 | 35.9d | 18d |  | Mechanical | 0 | GEN-M | Gen | Yes | Yes | Gen On | CON | PCL | WS GEN | Mechanical |  |  |  |  |  |
| WSC-CT-MEC-1010 |  | Erect Combustion Turbine Air Intake | 80d | 2027-08-25 | 2027-12-17 | WSC-INT-MIL-1820, WSC-CT-MEC-1070, WSC-CON-MIL1040, PCL-CTG-MEC-1070 (other project) FF | 40.9d | 20d |  | Mechanical [18595 h] | 23.24375 | GT-Inlet | CT | Yes | Yes | CT Off | CON | PCL | WS CT | Mechanical |  | FND | CCWA_09 |  | CTG Steel |
| WSC-ST-MEC-1110 |  | Install LP/IP Rotor | 10d | 2027-08-31 | 2027-09-14 | WSC-ST-MEC-1120 | -32d | 0d |  | Mechanical | 0 | ST-IP/LP | ST | Yes | Yes | ST On | CON | PCL | WS ST | Mechanical |  | Yes |  | 0 |  |
| WSC-ST-MEC-1140 |  | Complete Assembly of LP/IP Steam Turbine | 25d | 2027-09-15 | 2027-10-19 | WSC-ST-MEC-1110 | -32d | 0d |  | Mechanical | 0 | ST-IP/LP | ST | Yes | Yes | ST On | CON | PCL | WS ST | Mechanical |  |  |  | 0 |  |
| WSC-GEN-MEC-1130 |  | Align Rotor to Magnetic Center Line | 7d | 2027-09-20 | 2027-09-28 | WSC-GEN-MEC-1140, WSC-GEN-MEC-1120 | 17.9d | 0d |  | Mechanical | 0 | GEN-M | Gen | Yes | Yes | Gen On | CON | PCL | WS GEN | Mechanical |  |  |  | 11-30 |  |
| WSC-GEN-MEC-1000 |  | Install Stator Cooling Water Skid | 10d | 2027-09-29 | 2027-10-12 | WSC-GEN-MEC-1130, WSC-INT-MIL-1420 | 17.9d | 0d |  | Mechanical [100 h] | 1 |  |  |  |  | Gen Off | CON | PCL | WS GEN | Mechanical |  |  | CCWA_02 | 11-30 |  |
| WSC-ST-MEC-1100 |  | Intall Upper Shell LP/IP Steam Turbine | 15d | 2027-10-20 | 2027-11-09 | WSC-ST-MEC-1120 FF+10d, WSC-ST-MEC-1140 | -32d | 0d |  | Mechanical | 0 | ST-IP/LP | ST | Yes | Yes | ST On | CON | PCL | WS ST | Mechanical |  |  |  | 0 |  |
| WSC-ST-MEC-1130 |  | Complete HP/IP/LP Assembly | 10d | 2027-11-10 | 2027-11-23 | WSC-ST-MEC-1100 | -32d | 0d |  | Mechanical | 0 | ST-IP/LP | ST | Yes | Yes | ST On | CON | PCL | WS ST | Mechanical |  |  |  | 0 |  |
| WSC-ST-MEC-1160 |  | Install Turning Gear Steam Turbine | 5d | 2027-11-24 | 2027-12-02 | WSC-ST-MEC-1130, PCL-STG-MEC-1010 (other project) FF | -32d | 0d |  | Mechanical | 0 | ST-HP | ST | Yes | Yes | ST On | CON | PCL | WS ST | Mechanical |  |  |  | 0 |  |

| ID | WBS | Activity | Duration | Start | Finish | Predecessors | Total float | Free float | Resources | Crew Size | WS Float Path | WS Sub-Equipment | WS Equipment | WS Power Train Center Line | WS PIE | WS Sub Area | WS EPC | WS Resp | WS Area | WS Discipline | WS System |
| --- | --- | --- | --- | --- | --- | --- | --- | --- | --- | --- | --- | --- | --- | --- | --- | --- | --- | --- | --- | --- | --- |
| WSC-ST-MEC-1180 |  | Install SSS Clutch | 10d | 2027-12-03 | 2027-12-16 | WSC-ST-MEC-1160 | -32d | 0d | Mechanical | 0 | 0 | ST-EXT Equip | ST | Yes | Yes | ST On | CON | PCL | WS ST | Mechanical |  |
| WSC-ST-MEC-1150 |  | Install RTD's and Vibration Probes | 8d | 2027-12-17 | 2027-12-30 | WSC-ST-MEC-1160 FF+10d, WSC-ST-MEC-1180, PCL-STG-MEC-1000 (other project) FF | -32d | 0d | Mechanical | 0 | 0 | ST-IP/LP | ST | Yes | Yes | ST On | CON | PCL | WS ST | Mechanical |  |
| WSC-ST-MEC-1170 |  | Complete Installation of Steam Turbine On Base Equipment | 23d | 2028-01-03 | 2028-02-02 | WSC-ST-MEC-1150 | -32d | 0d | Mechanical | 0 | 0 | ST-EXT Equip | ST | Yes | Yes | ST On | CON | PCL | WS ST | Mechanical |  |
| WSC-ST-MEC-1210 |  | Complete Piping Tie ins to Steam Turbine | 30d | 2028-02-03 | 2028-03-16 | WSC-ST-MEC-1170 | -32d | 0d | Mechanical | 0 | 0 | ST-EXT Equip | ST | Yes | Yes | ST On | CON | PCL | WS ST | Mechanical |  |
| WSC-ST-MEC-1220 |  | Final Alignment ST, GEN, and CT | 15d | 2028-03-17 | 2028-04-06 | WSC-ST-MEC-1210, PCL-STG-MEC-1040 (other project) FF | -32d | 0d | Mechanical | 0 | 0 | ST-EXT Equip | ST | Yes | Yes | ST On | CON | PCL | WS ST | Mechanical |  |
| WSC-ST-MEC-1230 |  | Install Insulation Steam Turbine | 25d | 2028-04-07 | 2028-05-11 | WSC-ST-MEC-1220 | -32d | 0d | Mechanical | 0 | 0 | ST-EXT Equip | ST | Yes | Yes | ST On | CON | PCL | WS ST | Mechanical |  |
|  | 4 | **Pipe** |  | 2027-04-05 | 2028-01-19 |  |  |  |  |  |  |  |  |  |  |  |  |  |  |  |  |
| WSC-CT-PIP-1070 |  | Combustion Turbine On Base Vendor Pipe Install | 150d | 2027-04-05 | 2027-11-03 | WSC-INT-MIL-1420, WSC-INT-MIL-1410, WSC-INT-MIL-1380, WSC-CT-MEC-1080 | -79.8d | 0d | Pipe [11250 h] | 7.5 | 11-30 |  |  | Yes |  | CT On | CON | PCL | WS CT |  |  |
| WSC-CT-PIP-1010 |  | CT Off Base Install Hot Piping LB | 50d | 2027-07-28 | 2027-10-06 | WSC-PR-STL-1010, WSC-INT-MIL-1990, WSC-INT-MIL-1690 | -79.8d | 0d | Pipe [750 h] | 1.5 | 11-30 |  |  | Yes |  | CT Off | CON | PCL | WS CT |  |  |
| WSC-CT-PIP-1000 |  | CT Off Base Install Cold Piping LB | 20d | 2027-10-07 | 2027-11-03 | WSC-CT-PIP-1010, WSC-INT-MIL-1690, WSC-CT-STR-1000 | -79.8d | 0d | Pipe [350 h] | 1.75 | 11-30 |  |  | Yes |  | CT Off | CON | PCL | WS CT |  |  |
| WSC-CT-PIP-1030 |  | CT Off Base Install Hot Piping SB | 20d | 2027-10-07 | 2027-11-03 | WSC-CT-PIP-1010, WSC-INT-MIL-1690 | -79.8d | 0d | Pipe [300 h] | 1.5 |  |  |  | Yes |  | CT Off | CON | PCL | WS CT |  |  |
| WSC-CT-PIP-1020 |  | CT Off Base Install Cold Piping SB | 30d | 2027-11-04 | 2027-12-17 | WSC-CT-PIP-1000, WSC-INT-MIL-1690, PCL-CTG-PIP-1000 (other project) FF | 50.9d | 20d | Pipe [750 h] | 2.5 |  |  |  | Yes |  | CT Off | CON | PCL | WS CT |  |  |
| WSC-CT-PIP-1060 |  | Combustion Turbine On Base Vendor Pipe Testing | 50d | 2027-11-04 | 2028-01-19 | WSC-CT-PIP-1070, WSC-CT-PIP-1000 | -79.8d | 0d | Pipe [550 h] | 1.1 | 11-30 |  |  | Yes |  | CT On | CON | PCL | WS CT |  |  |
|  | 5 | **Electrical & Instrumentation** |  | 2027-08-04 | 2028-05-11 |  |  |  |  |  |  |  |  |  |  |  |  |  |  |  |  |
| WSC-CT-E&I-1030 |  | CT Install Cable Tray | 15d | 2027-08-04 | 2027-08-24 | WSC-CT-MEC-1290 | -39.8d | 0d | Electrical [2200 h] | 14.6666666666667 | 11-30 |  |  |  |  | CT Off | CON | PCL | WS CT |  | CT |
| WSC-CT-E&I-1050 |  | CT Install Junction Boxes | 25d | 2027-08-04 | 2027-09-08 | WSC-CT-E&I-1030 SS | -29.8d | 0d | Electrical [250 h] | 1 | 11-30 |  |  |  |  | CT Off | CON | PCL | WS CT |  | INST |
| WSC-CT-E&I-1010 |  | CT Install Power Conduit | 35d | 2027-08-25 | 2027-10-13 | WSC-CT-E&I-1030 | 25.9d | 0d | Electrical [2500 h] | 7.14285714285714 | 11-30 |  |  |  |  | CT Off | CON | PCL | WS CT |  | LV |
| WSC-CT-E&I-1130 |  | CT Install Lighting Conduit | 30d | 2027-08-25 | 2027-10-06 | WSC-CT-E&I-1030 | 25.9d | 0d | Electrical [2200 h] | 7.33333333333333 | 11-30 |  |  |  |  | CT Off | CON | PCL | WS CT |  | LGT |
| WSC-ST-E&I-1020 |  | ST Install Junction Boxes | 20d | 2027-08-25 | 2027-09-22 | WSC-CT-E&I-1030 | -39.8d | 0d | Electrical [125 h] | 0.625 | 11-30 |  |  |  |  | ST Off | CON | PCL | WS ST |  | INST |
| WSC-CT-E&I-1110 |  | CT Install Inst Conduit | 40d | 2027-09-09 | 2027-11-03 | WSC-CT-E&I-1050 | 25.9d | 0d | Electrical [800 h] | 2 | 11-30 |  |  |  |  | CT Off | CON | PCL | WS CT |  | INST |
| WSC-ST-E&I-1060 |  | ST Install Inst Conduit | 40d | 2027-09-23 | 2027-11-17 | WSC-ST-E&I-1020 | 20.9d | 0d | Electrical [450 h] | 1.125 | 11-30 |  |  |  |  | ST Off | CON | PCL | WS ST |  | INST |
| WSC-CT-E&I-1120 |  | CT Install Lighting Fixtures | 20d | 2027-10-07 | 2027-11-03 | WSC-CT-E&I-1130 | 50.9d | 25d | Electrical [600 h] | 3 |  |  |  |  |  | CT Off | CON | PCL | WS CT |  | LGT |
| WSC-CT-E&I-1140 |  | CT Pull Lighting Cable | 45d | 2027-10-07 | 2027-12-10 | WSC-CT-E&I-1130 | 25.9d | 0d | Electrical [1100 h] | 2.44444444444444 | 11-30 |  |  |  |  | CT Off | CON | PCL | WS CT |  | LGT |
| WSC-CT-E&I-1090 |  | CT Pull Power Cable | 45d | 2027-10-14 | 2027-12-17 | WSC-CT-E&I-1010 | 25.9d | 0d | Electrical [2200 h] | 4.88888888888889 | 11-30 |  |  |  |  | CT Off | CON | PCL | WS CT |  | LV |
| WSC-CT-E&I-1060 |  | CT Pull Inst Cable (Home Runs) | 45d | 2027-11-04 | 2028-01-12 | WSC-CT-E&I-1110, WSC-CT-E&I-1010 | 25.9d | 22d | Electrical [2600 h] | 5.77777777777778 | 11-30 |  |  |  |  | CT Off | CON | PCL | WS CT |  | INST |
| WSC-ST-E&I-1030 |  | ST Pull Inst Cable (Home Runs) | 45d | 2027-11-18 | 2028-01-26 | WSC-ST-E&I-1060 | 20.9d | 0d | Electrical [350 h] | 0.777777777777778 | 11-30 |  |  |  |  | ST Off | CON | PCL | WS ST |  | INST |
| WSC-CT-E&I-1000 |  | Combustion Turbine 1 Instrumentation | 45d | 2027-11-22 | 2028-01-28 | WSC-INT-MIL-1700, WSC-INT-MIL-1710 | -99d | 0d | Electrical [250 h] | 0.555555555555556 | 0 |  |  | Yes |  | CT Off | CON | PCL | WS CT |  | INST |
| WSC-CT-E&I-1040 |  | CT Instrumentation | 40d | 2027-11-22 | 2028-01-21 | WSC-INT-MIL-1700, WSC-INT-MIL-1710, WSC-CT-E&I-1050 | 3.9d | 0d | Electrical [450 h] | 1.125 | 1-10 |  |  |  |  | CT Off | CON | PCL | WS CT |  | INST |
| WSC-ST-E&I-1010 |  | ST Instrumentation | 20d | 2027-11-22 | 2027-12-21 | WSC-INT-MIL-1700, WSC-INT-MIL-1710, WSC-ST-E&I-1020 | -81.8d | 0d | Electrical [650 h] | 3.25 | 11-30 |  |  |  |  | ST Off | CON | PCL | WS ST |  | INST |
| WSC-CT-E&I-1150 |  | CT Terminate Lighting Cables | 20d | 2027-12-13 | 2028-01-12 | WSC-CT-E&I-1120, WSC-CT-E&I-1140 | 25.9d | 22d | Electrical [400 h] | 2 | 11-30 |  |  |  |  | CT Off | CON | PCL | WS CT |  | LGT |
| WSC-CT-E&I-1100 |  | CT Terminate Power Cables | 45d | 2027-12-20 | 2028-02-24 | WSC-CT-E&I-1090 | 25.9d | 22d | Electrical [600 h] | 1.33333333333333 | 11-30 |  |  |  |  | CT Off | CON | PCL | WS CT |  | LV |
| WSC-ST-E&I-1040 |  | ST Pull Inst Cable to Devices | 15d | 2027-12-22 | 2028-01-14 | WSC-ST-E&I-1010 | 28.9d | 8d | Electrical [250 h] | 1.66666666666667 | 11-30 |  |  |  |  | ST Off | CON | PCL | WS ST |  | INST |
| WSC-CT-E&I-1070 |  | CT Pull Inst Cable to Devices | 15d | 2028-01-24 | 2028-02-11 | WSC-CT-E&I-1040 | 3.9d | 0d | Electrical [450 h] | 3 | 1-10 |  |  |  |  | CT Off | CON | PCL | WS CT |  | INST |
| WSC-ST-E&I-1050 |  | ST Terminate Inst Cables | 30d | 2028-01-27 | 2028-03-09 | WSC-ST-E&I-1030, WSC-ST-E&I-1040, PCL-STG-E&I-1000 (other project) FF | 20.9d | 20d | Electrical [120 h] | 0.4 | 11-30 |  |  |  |  | ST Off | CON | PCL | WS ST |  | INST |
| WSC-CT-E&I-1080 |  | CT Terminate Inst Cables | 30d | 2028-02-14 | 2028-03-27 | WSC-CT-E&I-1150, WSC-CT-E&I-1060, WSC-CT-E&I-1070 | 3.9d | 0d | Electrical [600 h] | 2 | 1-10 |  |  |  |  | CT Off | CON | PCL | WS CT |  | INST |
| WSC-CT-E&I-1020 |  | CT Loop checks Electrical | 30d | 2028-03-28 | 2028-05-08 | WSC-CT-E&I-1100, WSC-CT-PIP-1050, WSC-CT-MEC-1300, WSC-CT-E&I-1080, WSC-CT-E&I-1010, PCL-CTG-E&I-1000 (other project) FF | 3.9d | 51d | Electrical [850 h] | 2.83333333333333 | 1-10 |  |  |  |  | CT Off | CON | PCL | WS CT |  | INST |
| WSC-ST-E&I-1000 |  | ST Loop checks | 25d | 2028-04-07 | 2028-05-11 | WSC-ST-PIP-1070, WSC-PR-PIP-1050, WSC-ST-PIP-1080, WSC-ST-PIP-1050, WSC-GEN-PIP-1060, WSC-GEN-PIP-1050, WSC-ST-E&I-1040, WSC-ST-E&I-1050 | 0.9d | 48d | Electrical [360 h] | 1.44 | 1-10 |  |  |  |  | ST Off | CON | PCL | WS ST |  | INST |

| ID | WBS | Activity | Duration | Start | Finish | Predecessors | Total float | Free float | Constraint | Resources | Crew Size | WS Power Train Center Line | WS Sub Area | WS EPC | WS Resp | WS Area | WS Float Path | zInteger_01 | WS Sequence | WS Sub-Equipment | WS Equipment Set | WS CCWA Area | WS Sequence 2 | WS Discipline |
| --- | --- | --- | --- | --- | --- | --- | --- | --- | --- | --- | --- | --- | --- | --- | --- | --- | --- | --- | --- | --- | --- | --- | --- | --- |
|  | 7 | **Subcontractor** |  | 2027-08-10 | 2028-04-13 |  |  |  |  |  |  |  |  |  |  |  |  |  |  |  |  |  |  |  |
| WSC-ST-SUB-1010 |  | ST1 Insulation | 60d | 2027-08-10 | 2027-11-02 | WSC-ST-MEC-1080 | 11.2d | 111d |  | Subcontractor | 0 | Yes | ST Off | CON | PCL | WS ST |  |  |  |  |  |  |  |  |
| WSC-CT-SUB-1000 |  | PIE Equipment Insulation | 60d | 2028-01-20 | 2028-04-13 | WSC-CT-MEC-1300, WSC-CT-MEC-1090, WSC-ST-MEC-1080, WSC-CT-MEC-1000, WSC-CT-PIP-1060, WSC-CT-MEC-1010 | 20.9d | 0d |  | Subcontractor | 0 | Yes |  | CON | PCL | WS CT | 11-30 |  |  |  |  |  |  |  |
|  | 6 | **Paint and Insulation** |  |  |  |  |  |  |  |  |  |  |  |  |  |  |  |  |  |  |  |  |  |  |
|  | 3 | **Heat Recovery Steam Generator** |  | 2026-04-21 | 2028-05-11 |  |  |  |  |  |  |  |  |  |  |  |  |  |  |  |  |  |  |  |
| WSC-HRSG-STL-1020 |  | HRSG - Assemble/Erect/Level/Weld Section 1 Module 1 | 4d | 2026-05-26 | 2026-06-01 | WSC-INT-MIL-1340, WSC-HRSG-MEC-1440, CCWA_01-03780 (other project), WSC-HRSG-MEC-1450 | -51.6d | 0d |  | Structural Steel [240 h] | 10 | Yes | HRSG On | CON | PCL | WS HRSG |  | 6 | 120 | HRSG-M | FND | CCWA_01 | 1 |  |
| WSC-HRSG-STL-1050 |  | HRSG - Main Steel Section 1 Stucture Alignment Survey | 1d | 2026-06-01 | 2026-06-02 | WSC-HRSG-STL-1020 | -34.6d | 0d |  | Structural Steel [20 h] | 2 | Yes | HRSG On | CON | PCL | WS HRSG |  | 2 | 120 | HRSG-M |  |  | 1 |  |
| WSC-HRSG-STL-1060 |  | HRSG - Assemble/Erect/Level/Weld Section 2 Module 2 | 4d | 2026-06-01 | 2026-06-05 | WSC-HRSG-STL-1020 | -51.6d | 0d |  | Structural Steel [240 h] | 10 | Yes | HRSG On | CON | PCL | WS HRSG |  | 6 | 120 | HRSG-M |  |  | 2 |  |
| WSC-HRSG-STL-1130 |  | HRSG - Moment Welds Section 1 | 4d | 2026-06-02 | 2026-06-08 | WSC-HRSG-STL-1050 | -34.6d | 17d |  | Structural Steel [160 h] | 4 | Yes | HRSG On | CON | PCL | WS HRSG |  | 4 | 120 | HRSG-M |  |  | 1 |  |
| WSC-HRSG-STL-1070 |  | HRSG - Assemble/Erect/Level/Weld Section 3 Module 3 | 4d | 2026-06-05 | 2026-06-11 | WSC-HRSG-STL-1060 | -51.6d | 0d |  | Structural Steel [240 h] | 10 | Yes | HRSG On | CON | PCL | WS HRSG |  | 6 | 120 | HRSG-M |  |  | 3 |  |
| WSC-HRSG-STL-1210 |  | HRSG - Main Steel Section 2 Stucture Alignment Survey | 1d | 2026-06-05 | 2026-06-08 | WSC-HRSG-STL-1060 | -34.6d | 0d |  | Structural Steel [20 h] | 2 | Yes | HRSG On | CON | PCL | WS HRSG |  | 2 | 120 | HRSG-M |  |  | 2 |  |
| WSC-HRSG-STL-1170 |  | HRSG - Moment Welds Section 2 | 4d | 2026-06-08 | 2026-06-12 | WSC-HRSG-STL-1210 | -34.6d | 17d |  | Structural Steel [160 h] | 4 | Yes | HRSG On | CON | PCL | WS HRSG |  | 4 | 120 | HRSG-M |  |  | 2 |  |
| WSC-HRSG-STL-1080 |  | HRSG - Assemble/Erect/Level/Weld Section 3 Module 4 | 4d | 2026-06-11 | 2026-06-17 | WSC-HRSG-STL-1070 | -51.6d | 0d |  | Structural Steel [240 h] | 10 | Yes | HRSG On | CON | PCL | WS HRSG |  | 6 | 120 | HRSG-M |  |  | 4 |  |
| WSC-HRSG-STL-1220 |  | HRSG - Main Steel Section 3 Stucture Alignment Survey | 1d | 2026-06-11 | 2026-06-12 | WSC-HRSG-STL-1070 | -34.6d | 0d |  | Structural Steel [20 h] | 2 | Yes | HRSG On | CON | PCL | WS HRSG |  | 2 | 120 | HRSG-M |  |  | 3 |  |
| WSC-HRSG-STL-1180 |  | HRSG - Moment Welds Section 3 | 4d | 2026-06-12 | 2026-06-18 | WSC-HRSG-STL-1220 | -34.6d | 17d |  | Structural Steel [160 h] | 4 | Yes | HRSG On | CON | PCL | WS HRSG |  | 4 | 120 | HRSG-M |  |  | 3 |  |
| WSC-HRSG-STL-1090 |  | HRSG - Assemble/Erect/Level/Weld Section 3 Module 5 | 4d | 2026-06-17 | 2026-06-23 | WSC-HRSG-STL-1080 | -51.6d | 0d |  | Structural Steel [240 h] | 10 | Yes | HRSG On | CON | PCL | WS HRSG |  | 6 | 120 | HRSG-M |  |  | 5 |  |
| WSC-HRSG-STL-1230 |  | HRSG - Main Steel Section 4 Stucture Alignment Survey | 1d | 2026-06-17 | 2026-06-18 | WSC-HRSG-STL-1080 | -34.6d | 0d |  | Structural Steel [20 h] | 2 | Yes | HRSG On | CON | PCL | WS HRSG |  | 2 | 120 | HRSG-M |  |  | 4 |  |
| WSC-HRSG-STL-1190 |  | HRSG - Moment Welds Section 4 | 4d | 2026-06-18 | 2026-06-24 | WSC-HRSG-STL-1230 | -34.6d | 17d |  | Structural Steel [160 h] | 4 | Yes | HRSG On | CON | PCL | WS HRSG |  | 4 | 120 | HRSG-M |  |  | 4 |  |
| WSC-HRSG-STL-1100 |  | HRSG - Assemble/Erect/Level/Weld Section 4 Duct Burner Cavity | 3d | 2026-06-23 | 2026-06-26 | WSC-HRSG-STL-1090 | -51.6d | 0d |  | Structural Steel [120 h] | 4 | Yes | HRSG On | CON | PCL | WS HRSG |  | 4 | 120 | HRSG-M |  |  |  |  |
| WSC-HRSG-STL-1240 |  | HRSG - Main Steel Section 5 Stucture Alignment Survey | 1d | 2026-06-23 | 2026-06-24 | WSC-HRSG-STL-1090 | -34.6d | 0d |  | Structural Steel [20 h] | 2 | Yes | HRSG On | CON | PCL | WS HRSG |  | 2 | 120 | HRSG-M |  |  | 5 |  |
| WSC-HRSG-STL-1200 |  | HRSG - Moment Welds Section 5 | 4d | 2026-06-24 | 2026-06-30 | WSC-HRSG-STL-1240 | -34.6d | 17.4d |  | Structural Steel [160 h] | 4 | Yes | HRSG On | CON | PCL | WS HRSG |  | 4 | 120 | HRSG-M |  |  | 5 |  |
| WSC-HRSG-STL-1110 |  | HRSG - Assemble/Erect/Level/Weld Section 5 SCR Cavity | 3d | 2026-06-26 | 2026-07-01 | WSC-HRSG-STL-1100 | -51.6d | 0d |  | Structural Steel [120 h] | 4 | Yes | HRSG On | CON | PCL | WS HRSG |  | 4 | 120 | HRSG-M |  |  |  |  |
| WSC-HRSG-STL-1120 |  | HRSG - Plumb/Level/Align Sections 1 Through 5 | 2d | 2026-07-01 | 2026-07-06 | WSC-HRSG-STL-1110, PCL-HRSG-MEC-1000 (other project) FF | 468.3d | 515.4d |  | Structural Steel [40 h] | 2 | Yes | HRSG On | CON | PCL | WS HRSG |  | 2 | 120 | HRSG-M |  |  |  |  |
| WSC-HRSG-MEC-1430 |  | Install HRSG (Holding Bucket Mechanical Assm) | 262d | 2026-11-18 | 2027-12-03 | WSC-HRSG-STL-1020 SS | -47.1d | 0d | start on or after 2026-11-18 | Mechanical [87455 h] | 33.3797709923664 |  | HRSG On | CON | PCL | WS HRSG |  |  |  |  |  |  |  | Mechanical |
| WSC-HRSG-PIP-1010 |  | HRSG Off Base Install Hot Piping LB | 50d | 2026-11-23 | 2027-02-05 | WSC-INT-MIL-1990 | 129.9d | 0d |  | Pipe [750 h] | 1.5 | Yes | HRSG Off | CON | PCL | WS HRSG |  |  |  |  |  |  |  |  |
| WSC-HRSG-PIP-1090 |  | HRSG On Base Vendor Pipe Install | 150d | 2026-12-02 | 2027-07-07 | WSC-INT-MIL-1680, WSC-HRSG-MEC-1190 | -61d | 0d |  | Pipe [14650 h] | 9.76666666666667 | Yes | HRSG On | CON | PCL | WS HRSG | 11-30 |  |  |  |  |  |  |  |
| WSC-HRSG-PIP-1000 |  | HRSG Off Base Install Cold Piping LB | 20d | 2027-02-08 | 2027-03-08 | WSC-HRSG-PIP-1010 | 129.9d | 0d |  | Pipe [350 h] | 1.75 | Yes | HRSG Off | CON | PCL | WS HRSG |  |  |  |  |  |  |  |  |
| WSC-HRSG-PIP-1030 |  | HRSG Off Base Install Hot Piping SB | 20d | 2027-02-08 | 2027-03-08 | WSC-INT-MIL-1690, WSC-HRSG-PIP-1010 | 199.9d | 0d |  | Pipe [300 h] | 1.5 | Yes | HRSG Off | CON | PCL | WS HRSG |  |  |  |  |  |  |  |  |
| WSC-HRSG-PIP-1020 |  | HRSG Off Base Install Cold Piping SB | 30d | 2027-03-09 | 2027-04-19 | WSC-HRSG-PIP-1000 | 129.9d | 0d |  | Pipe [750 h] | 2.5 | Yes | HRSG Off | CON | PCL | WS HRSG |  |  |  |  |  |  |  |  |
| WSC-HRSG-PIP-1040 |  | HRSG Off Base Test Hot Piping | 50d | 2027-03-09 | 2027-05-17 | WSC-HRSG-PIP-1000, WSC-HRSG-PIP-1030 | 199.9d | 0d |  | Pipe [450 h] | 0.9 | Yes | HRSG Off | CON | PCL | WS HRSG |  |  |  |  |  |  |  |  |
| WSC-HRSG-MEC-1210 |  | HRSG - Install Tube Restraint Stops | 35d | 2027-03-16 | 2027-05-03 | WSC-HRSG-MEC-1150 | 194d | 0d |  | Mechanical | 0 |  | HRSG On | CON | PCL | WS HRSG |  |  |  |  |  |  |  | Mechanical |
| WSC-HRSG-MEC-1140 |  | HRSG - Complete All Welding | 60d | 2027-03-22 | 2027-06-14 | WSC-HRSG-MEC-1360, WSC-HRSG-MEC-1380, WSC-HRSG-MEC-1150, PCL-HRSG-STR-1000 (other project) FF | 198d | 0d |  | Mechanical | 0 |  | HRSG On | CON | PCL | WS HRSG |  |  |  |  |  |  |  | Mechanical |
| WSC-HRSG-PIP-1060 |  | HRSG Off Base Install High Energy Piping LB | 60d | 2027-03-22 | 2027-06-14 | WSC-HRSG-MEC-1380, WSC-HRSG-STL-1010, WSC-INT-MIL-1680 | 140.9d | 66d |  | Pipe [2250 h] | 3.75 | Yes | HRSG Off | CON | PCL | WS HRSG |  |  |  |  |  |  |  |  |
| WSC-HRSG-SUB-1000 |  | BOP -Pipe Insulation | 140d | 2027-04-20 | 2027-11-04 | WSC-HRSG-PIP-1020 | 129.9d | 109d |  | Subcontractor | 0 |  | HRSG Off | CON | PCL | WS HRSG |  |  |  |  |  |  |  |  |
| WSC-HRSG-SUB-1020 |  | BOP -Pipe Insulation | 140d | 2027-04-28 | 2027-11-12 | WSC-HRSG-SUB-1010, WSC-HRSG-STL-1160, PCL-BOP-SUB-1000 (other project) FF | 23.9d | 0d |  | Subcontractor | 0 |  | HRSG On | CON | PCL | WS HRSG |  |  |  |  |  |  |  |  |
| WSC-HRSG-PIP-1050 |  | HRSG Off Base Test Cold Piping | 20d | 2027-05-18 | 2027-06-15 | WSC-HRSG-PIP-1040, WSC-HRSG-PIP-1020 | 199.9d | 199d |  | Pipe [450 h] | 2.25 | Yes | HRSG Off | CON | PCL | WS HRSG |  |  |  |  |  |  |  |  |
| WSC-HRSG-MEC-1080 |  | Install Sample Panel Enclosure AAA | 10d | 2027-05-24 | 2027-06-07 | WSC-INT-MIL-1900, WSC-HRSG-MEC-1130, WSC-HRSG-MEC-1090, WSC-INT-MIL-1260 | -114.8d | 0d |  | Mechanical [100 h] | 1 |  | HRSG Off | CON | PCL | WS HRSG |  |  | CTG Steel |  | FND | CCWA_01 |  | Mechanical |
| WSC-HRSG-PIP-1080 |  | HRSG On Base Vendor Pipe Testing | 50d | 2027-07-08 | 2027-09-16 | WSC-HRSG-PIP-1090 | 74.9d | 0d |  | Pipe [1600 h] | 3.2 | Yes | HRSG On | CON | PCL | WS HRSG |  |  |  |  |  |  |  |  |
| WSC-HRSG-PIP-1070 |  | HRSG Off Base Test High Energy Piping | 60d | 2027-09-17 | 2027-12-13 | WSC-HRSG-PIP-1060, WSC-HRSG-PIP-1080, PCL-HRSG-PIP-1070 (other project) FF | 74.9d | 74d |  | Pipe [1500 h] | 2.5 | Yes | HRSG Off | CON | PCL | WS HRSG |  |  |  |  |  |  |  |  |

| ID | WBS | Activity | Duration | Start | Finish | Predecessors | Total float | Free float | Constraint | Resources | zInteger_01 | Crew Size | WS Sub Area | WS EPC | WS Resp | WS Area | WS Discipline | WS Sequence | WS Sub-Equipment | WS Power Train Center Line | WS Equipment Set | WS CCWA Area | WS Sequence 2 |
| --- | --- | --- | --- | --- | --- | --- | --- | --- | --- | --- | --- | --- | --- | --- | --- | --- | --- | --- | --- | --- | --- | --- | --- |
|  | 1 | **Grout** |  | 2027-04-12 | 2027-06-07 |  |  |  |  |  |  |  |  |  |  |  |  |  |  |  |  |  |  |
| WSC-HRSG-CIV-1040 |  | HRSG Grout Misc, MES, MPS | 40d | 2027-04-12 | 2027-06-07 | WSC-HRSG-MEC-1030 | 159d | 0d |  | Concrete [850 h] | 0 | 2.125 | HRSG Off | CON | PCL | WS HRSG | Civil |  |  |  |  |  |  |
|  | 2 | **Structural** |  | 2026-07-31 | 2027-04-27 |  |  |  |  |  |  |  |  |  |  |  |  |  |  |  |  |  |  |
| WSC-HRSG-STL-1040 |  | HRSG - Pre-Assemble the Stair Tower Sections | 30d | 2026-07-31 | 2026-09-11 | WSC-HRSG-STL-1020, WSC-HRSG-MEC-1170 | 34.2d | 0d |  | Structural Steel [1800 h] | 6 | 6 | HRSG On | CON | PCL | WS HRSG |  | 120 | HRSG Stair | Yes |  |  |  |
| WSC-HRSG-STL-1140 |  | HRSG - Install Right Side Stair Tower | 30d | 2026-08-14 | 2026-09-25 | WSC-HRSG-STL-1040 SS+10d | 34.2d | 0d |  | Structural Steel [2128 h] |  | 7.09333333333333 | HRSG On | CON | PCL | WS HRSG |  |  | HRSG Stair | Yes |  |  |  |
| WSC-HRSG-STL-1000 |  | HRSG - Erect Steam Drum Support Steel | 15d | 2026-09-01 | 2026-09-22 | WSC-HRSG-MEC-1400, WSC-HRSG-MEC-1170 | -52d | 0d |  | Structural Steel [314 h] |  | 2.09333333333333 | HRSG On | CON | PCL | WS HRSG |  |  | HRSG-Ext Equip | Yes |  |  |  |
| WSC-HRSG-STL-1030 |  | HRSG - Install Platforms, Grating, and Handrails | 20d | 2026-09-23 | 2026-10-20 | WSC-HRSG-STL-1000, WSC-HRSG-STL-1040 | 47.2d | 0d |  | Structural Steel [1207 h] |  | 6.035 | HRSG On | CON | PCL | WS HRSG |  |  | HRSG-Ext Equip | Yes |  |  |  |
| WSC-HRSG-STL-1150 |  | HRSG - Install Left Side Stair Tower | 30d | 2026-09-28 | 2026-11-06 | WSC-HRSG-STL-1140, PCL-HRSG-STR-1010 (other project) FF | 34.2d | 15d |  | Structural Steel [2128 h] |  | 7.09333333333333 | HRSG On | CON | PCL | WS HRSG |  |  | HRSG Stair | Yes |  |  |  |
| WSC-HRSG-STL-1010 |  | HRSG - Erect Silencer Steel | 25d | 2026-12-02 | 2027-01-08 | WSC-HRSG-STL-1030, WSC-HRSG-STL-1150, WSC-HRSG-STL-1000, WSC-HRSG-MEC-1190 | 19.2d | 0d |  | Structural Steel [1147 h] |  | 4.588 | HRSG On | CON | PCL | WS HRSG |  |  | HRSG-Ext Equip | Yes |  |  |  |
| WSC-HRSG-STL-1160 |  | HRSG - Erect Penthouse Steel | 15d | 2027-04-07 | 2027-04-27 | WSC-HRSG-MEC-1420 | 23.9d | 0d |  | Structural Steel [314 h] |  | 2.09333333333333 | HRSG On | CON | PCL | WS HRSG |  |  | HRSG-Ext Equip | Yes |  |  |  |
|  | 3 | **Mechanical** |  | 2026-04-21 | 2027-05-21 |  |  |  |  |  |  |  |  |  |  |  |  |  |  |  |  |  |  |
| WSC-HRSG-MEC-1450 |  | HRSG - Prep Foundation (Bush Concrete, Install Shim Packs) | 20d | 2026-04-21 | 2026-05-18 | WSC-INT-MIL-5000 | -47d | 4.6d |  | Mechanical [1200 h] | 6 | 6 | HRSG On | CON | PCL | WS HRSG | Mechanical | 120 | HRSG-M | Yes | FND | CCWA_01 |  |
| WSC-HRSG-MEC-1440 |  | Erect Heavy Lift Tailing Crane | 10d | 2026-04-28 | 2026-05-11 | WSC-INT-MIL-5010 | -42d | 9.6d |  | Mechanical |  | 0 | HRSG On | CON | PCL | WS HRSG | Mechanical | 120 | HRSG-M | Yes | FND | CCWA_01 |  |
| WSC-HRSG-MEC-1460 |  | Erect Heavy Heavy Lift Crane | 15d | 2026-06-01 | 2026-06-22 | WSC-HRSG-MEC-1440 | -44.6d | 7d | start on or after 2026-06-01 | Mechanical |  | 0 | HRSG On | CON | PCL | WS HRSG | Mechanical | 120 | HRSG-M | Yes | FND | CCWA_01 |  |
| WSC-HRSG-MEC-1220 |  | Unload & Set HRSG 1st HP Modules | 4d | 2026-07-01 | 2026-07-08 | WSC-HRSG-MEC-1440, WSC-HRSG-STL-1090, WSC-HRSG-STL-1110, WSC-HRSG-STL-1050, WSC-HRSG-STL-1130, WSC-HRSG-MEC-1460 | -51.6d | 0d |  | Mechanical [320 h] | 8 | 14 | HRSG On | CON | PCL | WS HRSG | Mechanical | 120 | HRSG-M | Yes | FND | CCWA_01 | 1 |
| WSC-HRSG-MEC-1230 |  | Unload & Set HRSG IP Modules | 4d | 2026-07-08 | 2026-07-14 | WSC-HRSG-MEC-1220, WSC-HRSG-STL-1170 | -51.6d | 0d |  | Mechanical [320 h] | 8 | 14 | HRSG On | CON | PCL | WS HRSG | Mechanical | 120 | HRSG-M | Yes | Yes |  | 2 |
| WSC-HRSG-MEC-1240 |  | Unload & Set HRSG LP 1 Modules | 4d | 2026-07-14 | 2026-07-20 | WSC-HRSG-MEC-1230, WSC-HRSG-STL-1180 | -51.6d | 0d |  | Mechanical [320 h] | 8 | 14 | HRSG On | CON | PCL | WS HRSG | Mechanical | 120 | HRSG-M | Yes | Yes |  | 3 |
| WSC-HRSG-MEC-1250 |  | Unload & Set HRSG LP 2 Modules | 4d | 2026-07-20 | 2026-07-24 | WSC-HRSG-MEC-1240, WSC-HRSG-STL-1190 | -51.6d | 0.4d |  | Mechanical [320 h] | 8 | 14 | HRSG On | CON | PCL | WS HRSG | Mechanical | 120 | HRSG-M | Yes | Yes |  | 4 |
| WSC-HRSG-MEC-1170 |  | Unload & Set HRSG LP 3 Modules | 4d | 2026-07-27 | 2026-07-30 | WSC-HRSG-MEC-1250, WSC-HRSG-STL-1020 SS, PCL-HRSG-MEC-1010 (other project) FF, WSC-INT-MIL-1350 FF, WSC-HRSG-STL-1200 | -52d | 0d |  | Mechanical [320 h] | 8 | 14 | HRSG On | CON | PCL | WS HRSG | Mechanical | 120 | HRSG-M | Yes | Yes |  | 5 |
| WSC-HRSG-MEC-1260 |  | HRSG Plumb and Align all Modules | 9d | 2026-07-31 | 2026-08-12 | WSC-HRSG-MEC-1170 | 30.2d | 0d |  | Mechanical [360 h] | 4 | 4 | HRSG On | CON | PCL | WS HRSG | Mechanical | 120 | HRSG-M | Yes |  |  |  |
| WSC-HRSG-MEC-1390 |  | HRSG Install Casing Panels | 15d | 2026-07-31 | 2026-08-20 | WSC-HRSG-MEC-1170 | -52d | 0d |  | Mechanical [900 h] | 6 | 6 | HRSG On | CON | PCL | WS HRSG | Mechanical | 120 | HRSG-M | Yes |  |  |  |
| WSC-HRSG-MEC-1400 |  | HRSG Weld 50% Casing Panels | 15d | 2026-08-11 | 2026-08-31 | WSC-HRSG-MEC-1390 FF+7d | -52d | 0d |  | Mechanical [900 h] | 6 | 6 | HRSG On | CON | PCL | WS HRSG | Mechanical | 120 | HRSG-M | Yes |  |  |  |
| WSC-HRSG-MEC-1270 |  | HRSG Install SCR Internal Equipment | 3d | 2026-08-13 | 2026-08-17 | WSC-HRSG-MEC-1260 | 402d | 0d |  | Mechanical |  | 0 | HRSG On | CON | PCL | WS HRSG | Mechanical |  | HRSG-M | Yes |  |  |  |
| WSC-HRSG-MEC-1280 |  | HRSG Install Duct Burner Internal Equipment | 3d | 2026-08-18 | 2026-08-20 | WSC-HRSG-MEC-1270 | 402d | 434d |  | Mechanical |  | 0 | HRSG On | CON | PCL | WS HRSG | Mechanical |  | HRSG-M | Yes |  |  |  |
| WSC-HRSG-MEC-1290 |  | HRSG Inlet Duct Align and Level | 5d | 2026-09-23 | 2026-09-29 | WSC-HRSG-STL-1000 | -52d | 0d |  | Mechanical |  | 0 | HRSG On | CON | PCL | WS HRSG | Mechanical |  | HRSG-Inlet | Yes |  |  |  |
| WSC-HRSG-MEC-1160 |  | HRSG - Align and Level Inlet Duct, Record Findings | 5d | 2026-09-30 | 2026-10-06 | WSC-HRSG-MEC-1290, PCL-HRSG-MEC-1020 (other project) FF | 370d | 0d |  | Mechanical |  | 0 | HRSG On | CON | PCL | WS HRSG | Mechanical |  | HRSG-Inlet | Yes |  |  |  |
| WSC-HRSG-MEC-1180 |  | HRSG Inlet Duct Erect Casing Panels | 10d | 2026-09-30 | 2026-10-13 | WSC-HRSG-MEC-1260, WSC-HRSG-MEC-1170 FS+4d, GE-MIN-24 (other project), WSC-HRSG-MEC-1290 | -2.8d | 0d |  | Mechanical [400 h] | 4 | 4 | HRSG On | CON | PCL | WS HRSG | Mechanical |  | HRSG-Inlet | Yes |  |  |  |
| WSC-HRSG-MEC-1300 |  | HRSG Inlet Duct Weld out All Internal and External | 12d | 2026-09-30 | 2026-10-15 | WSC-HRSG-MEC-1290 | -52d | 0d |  | Mechanical |  | 0 | HRSG On | CON | PCL | WS HRSG | Mechanical |  | HRSG-Inlet | Yes |  |  |  |
| WSC-HRSG-MEC-1200 |  | HRSG Stack Pre Assemble Stack, Breeching, Ladders and Platforms | 30d | 2026-10-14 | 2026-11-24 | WSC-HRSG-MEC-1180, GE-MIN-25 (other project) | 47.9d | 0d |  | Mechanical |  | 0 | HRSG On | CON | PCL | WS HRSG | Mechanical |  | HRSG-Stack | Yes |  |  |  |
| WSC-HRSG-MEC-1310 |  | HRSG Inlet Duct Install Insulation | 5d | 2026-10-16 | 2026-10-22 | WSC-HRSG-MEC-1300 | -52d | 0d |  | Mechanical |  | 0 | HRSG On | CON | PCL | WS HRSG | Mechanical |  | HRSG-Inlet | Yes |  |  |  |
| WSC-HRSG-MEC-1320 |  | HRSG Inlet Duct Install All Liner Plates | 10d | 2026-10-23 | 2026-11-05 | WSC-HRSG-MEC-1310 | -52d | 0d |  | Mechanical |  | 0 | HRSG On | CON | PCL | WS HRSG | Mechanical |  | HRSG-Inlet | Yes |  |  |  |
| WSC-HRSG-MEC-1340 |  | HRSG Stack Erection of Rings, Breeching and Damper | 30d | 2026-10-28 | 2026-12-10 | WSC-HRSG-MEC-1200 FF+10d, WSC-HRSG-MEC-1200 SS+10d | 305d | 0d |  | Mechanical |  | 0 | HRSG On | CON | PCL | WS HRSG | Mechanical |  | HRSG-Stack | Yes | FND | CCWA_01 |  |
| WSC-HRSG-MEC-1330 |  | HRSG Inlet Duct Install Baton Bar Assemblies | 2d | 2026-11-06 | 2026-11-09 | WSC-HRSG-MEC-1320 | -52d | 9d |  | Mechanical |  | 0 | HRSG On | CON | PCL | WS HRSG | Mechanical |  | HRSG-Inlet | Yes |  |  |  |
| WSC-HRSG-MEC-1190 |  | Set HRSG Drums | 5d | 2026-11-23 | 2026-12-01 | WSC-HRSG-MEC-1330, WSC-INT-MIL-1360, WSC-CON-MIL1030 SS, GE-MAJ-06 (other project), GE-MIN-16 (other project), GE-MIN-28 (other project) | -61d | 0d |  | Mechanical |  | 0 | HRSG On | CON | PCL | WS HRSG | Mechanical |  | HRSG-Ext Equip | Yes |  |  |  |
| WSC-HRSG-MEC-1360 |  | HRSG Stack Welding | 50d | 2026-11-25 | 2027-02-09 | WSC-HRSG-MEC-1200 | 140.9d | 0d |  | Mechanical |  | 0 | HRSG On | CON | PCL | WS HRSG | Mechanical |  | HRSG-Stack | Yes |  |  |  |
| WSC-HRSG-MEC-1410 |  | HRSG Weld Complete Casing Weld out | 20d | 2026-12-02 | 2026-12-31 | WSC-HRSG-MEC-1190, WSC-HRSG-MEC-1400 | 194d | 0d |  | Mechanical |  | 0 | HRSG On | CON | PCL | WS HRSG | Mechanical |  | HRSG-M | Yes |  |  |  |
| WSC-HRSG-MEC-1350 |  | HRSG Stack Install Platforms | 20d | 2026-12-11 | 2027-01-12 | WSC-HRSG-MEC-1340 | 305d | 337d |  | Mechanical |  | 0 | HRSG On | CON | PCL | WS HRSG | Mechanical |  | HRSG-Stack | Yes |  |  |  |
| WSC-HRSG-MEC-1150 |  | HRSG - Install Insulation and Liner Plates | 50d | 2027-01-04 | 2027-03-15 | WSC-HRSG-MEC-1410 | 194d | 0d |  | Mechanical |  | 0 | HRSG On | CON | PCL | WS HRSG | Mechanical |  | HRSG-M | Yes |  |  |  |
| WSC-HRSG-MEC-1000 |  | Install LP Economizer Recirc Pumps AAA | 10d | 2027-01-15 | 2027-01-28 | WSC-INT-MIL-2040, CCWA_05-61635 (other project) | -114.8d | 0d |  | Mechanical [100 h] |  | 1 | HRSG Off | CON | PCL | WS HRSG | Mechanical | CTG Steel |  |  | FND | CCWA_01 |  |
| WSC-HRSG-MEC-1010 |  | HRSG CEMS | 10d | 2027-01-29 | 2027-02-11 | WSC-INT-MIL-1900, WSC-HRSG-MEC-1000 | -114.8d | 0d |  | Mechanical [100 h] |  | 1 | HRSG Off | CON | PCL | WS HRSG | Mechanical |  |  |  | FND | CCWA_01 |  |
| WSC-HRSG-MEC-1370 |  | HRSG Stack Install Exhaust Plenum | 20d | 2027-02-10 | 2027-03-10 | WSC-HRSG-MEC-1360 | 140.9d | 0d |  | Mechanical |  | 0 | HRSG On | CON | PCL | WS HRSG | Mechanical |  | HRSG-Stack | Yes | Yes |  |  |
| WSC-HRSG-MEC-1040 |  | Install Duct Burner Skid | 10d | 2027-02-12 | 2027-02-26 | WSC-HRSG-MEC-1010, WSC-INT-MIL-1900 | -114.8d | 0d |  | Mechanical [100 h] |  | 1 | HRSG Off | CON | PCL | WS HRSG | Mechanical |  |  |  | FND | CCWA_01 |  |
| WSC-HRSG-MEC-1050 |  | Install Ammonia Injection Skid | 10d | 2027-03-01 | 2027-03-12 | WSC-INT-MIL-1900, WSC-HRSG-MEC-1040 | -114.8d | 0d |  | Mechanical [100 h] |  | 1 | HRSG Off | CON | PCL | WS HRSG | Mechanical |  |  |  | FND | CCWA_01 |  |
| WSC-HRSG-MEC-1380 |  | HRSG Stack Install Expansion Joint | 7d | 2027-03-11 | 2027-03-19 | WSC-INT-MIL-1490, WSC-HRSG-MEC-1370, PCL-HRSG-MEC-1090 (other project) FF | 140.9d | 0d |  | Mechanical |  | 0 | HRSG On | CON | PCL | WS HRSG | Mechanical |  | HRSG-Stack | Yes |  |  |  |
| WSC-HRSG-MEC-1020 |  | HRSG - Install Blowdown Tank | 10d | 2027-03-15 | 2027-03-26 | WSC-INT-MIL-1900, WSC-HRSG-MEC-1050, WSC-INT-MIL-1180 | -114.8d | 0d |  | Mechanical [100 h] |  | 1 | HRSG Off | CON | PCL | WS HRSG | Mechanical |  |  |  | FND | CCWA_01 |  |
| WSC-HRSG-MEC-1060 |  | Install Cooling Air Blower Skid | 10d | 2027-03-25 | 2027-04-07 | WSC-HRSG-MEC-1000, WSC-INT-MIL-1010 | -92.8d | 1d |  | Mechanical [100 h] |  | 1 | HRSG Off | CON | PCL | WS HRSG | Mechanical |  |  |  | FND | CCWA_01 |  |
| WSC-HRSG-MEC-1030 |  | HRSG - Install Blowdown Drain Sump | 10d | 2027-03-29 | 2027-04-09 | WSC-INT-MIL-1900, WSC-HRSG-MEC-1020, WSC-INT-MIL-1190, WSC-INT-MIL-1200 | -114.8d | 0d |  | Mechanical [100 h] |  | 1 | HRSG Off | CON | PCL | WS HRSG | Mechanical |  |  |  | Yes |  |  |
| WSC-HRSG-MEC-1420 |  | Set HRSG Silencers | 5d | 2027-03-31 | 2027-04-06 | WSC-INT-MIL-1310, WSC-HRSG-STL-1010 | 23.9d | 0d |  | Mechanical |  | 0 | HRSG On | CON | PCL | WS HRSG | Mechanical |  | HRSG-Ext Equip | Yes | Yes |  |  |
| WSC-HRSG-MEC-1070 |  | Install Fuel Gas Scrubber | 5d | 2027-04-09 | 2027-04-15 | WSC-HRSG-MEC-1060, WSC-INT-MIL-1730 | -93.8d | 0d |  | Mechanical |  | 0 | HRSG Off | CON | PCL | WS HRSG | Mechanical |  |  |  | FND | CCWA_01 |  |
| WSC-HRSG-MEC-1100 |  | Install Fuel Gas Electric Heater AAA | 5d | 2027-04-09 | 2027-04-15 | WSC-INT-MIL-1730 | -78.8d | 41d |  | Mechanical [50 h] |  | 1 | HRSG Off | CON | PCL | WS HRSG | Mechanical | CTG Steel |  |  | FND | CCWA_01 |  |
| WSC-HRSG-MEC-1110 |  | Set Sump Pump HRSG Blowdown | 10d | 2027-04-12 | 2027-04-23 | WSC-INT-MIL-1900, WSC-HRSG-MEC-1030, WSC-INT-MIL-1180 | -114.8d | 0d |  | Mechanical [100 h] |  | 1 | HRSG Off | CON | PCL | WS HRSG | Mechanical |  |  |  | Yes |  |  |
| WSC-HRSG-MEC-1090 |  | Install Hot Day Augmentation Skid | 5d | 2027-04-16 | 2027-04-22 | WSC-INT-MIL-1900, WSC-HRSG-MEC-1070, WSC-INT-MIL-1730 | -93.8d | 21d |  | Mechanical [50 h] |  | 1 | HRSG Off | CON | PCL | WS HRSG | Mechanical |  |  |  | FND | CCWA_01 |  |
| WSC-HRSG-MEC-1120 |  | Set Sump Pump TB Oily Water | 10d | 2027-04-26 | 2027-05-07 | WSC-INT-MIL-1900, WSC-HRSG-MEC-1110, WSC-INT-MIL-1190 | -114.8d | 0d |  | Mechanical [100 h] |  | 1 | HRSG Off | CON | PCL | WS HRSG | Mechanical |  |  |  | FND | CCWA_01 |  |
| WSC-HRSG-MEC-1130 |  | Set Sump Pumps Misc | 10d | 2027-05-10 | 2027-05-21 | WSC-INT-MIL-1900, WSC-HRSG-MEC-1120, WSC-INT-MIL-1170 | -114.8d | 0d |  | Mechanical [100 h] |  | 1 | HRSG Off | CON | PCL | WS HRSG | Mechanical |  |  |  | Yes |  |  |

| ID | WBS | Activity | Duration | Start | Finish | Predecessors | Total float | Free float | Resources | Crew Size | WS System | WS Sub Area | WS EPC | WS Resp | WS Area | WS Float Path | WS Power Train Center Line | WS Equipment Set | WS CCWA Area | WS Discipline | zInteger_01 |
| --- | --- | --- | --- | --- | --- | --- | --- | --- | --- | --- | --- | --- | --- | --- | --- | --- | --- | --- | --- | --- | --- |
|  | 4 | **Pipe** |  |  |  |  |  |  |  |  |  |  |  |  |  |  |  |  |  |  |  |
|  | 5 | **Electrical & Instrumentation** |  | 2026-10-14 | 2028-05-11 |  |  |  |  |  |  |  |  |  |  |  |  |  |  |  |  |
| WSC-HRSG-E&I-1020 |  | Install HRSG Tray, Conduit, Cable | 200d | 2026-10-14 | 2027-07-30 | WSC-HRSG-MEC-1180 | 147.9d | 79d | Electrical [4200 h] | 2.1 | CT | HRSG On | CON | PCL | WS HRSG |  |  |  |  |  |  |
| WSC-HRSG-E&I-1050 |  | HRSG Install Cable Tray | 50d | 2027-05-10 | 2027-07-20 | WSC-HRSG-MEC-1180, MST3750 (other project) | 0.9d | 0d | Electrical [2200 h] | 4.4 | CT | HRSG On | CON | PCL | WS HRSG |  |  |  |  |  |  |
| WSC-HRSG-E&I-1030 |  | HRSG Install Power Conduit | 80d | 2027-07-21 | 2027-11-10 | WSC-HRSG-E&I-1050 | 5.9d | 0d | Electrical [850 h] | 1.0625 | LV | HRSG On | CON | PCL | WS HRSG |  |  |  |  |  |  |
| WSC-HRSG-E&I-1070 |  | HRSG Install Junction Boxes | 40d | 2027-07-21 | 2027-09-15 | WSC-HRSG-E&I-1050 | 10.9d | 0d | Electrical [320 h] | 0.8 | INST | HRSG On | CON | PCL | WS HRSG |  |  |  |  |  |  |
| WSC-HRSG-E&I-1150 |  | HRSG Install Lighting Conduit | 80d | 2027-07-21 | 2027-11-10 | WSC-HRSG-E&I-1050 | 0.9d | 0d | Electrical [2600 h] | 3.25 | LGT | HRSG On | CON | PCL | WS HRSG |  |  |  |  |  |  |
| WSC-HRSG-E&I-1130 |  | HRSG Install Inst Conduit | 40d | 2027-09-16 | 2027-11-10 | WSC-HRSG-E&I-1070 | 10.9d | 0d | Electrical [2200 h] | 5.5 | INST | HRSG On | CON | PCL | WS HRSG |  |  |  |  |  |  |
| WSC-HRSG-E&I-1080 |  | HRSG Pull Inst Cable (Home Runs) | 45d | 2027-11-11 | 2028-01-19 | WSC-HRSG-E&I-1130, WSC-HRSG-E&I-1030, PCL-HRSG-E&I-1000 (other project) FF | 10.9d | 2d | Electrical [900 h] | 2 | INST | HRSG On | CON | PCL | WS HRSG |  |  |  |  |  |  |
| WSC-HRSG-E&I-1110 |  | HRSG Pull Power Cable | 45d | 2027-11-11 | 2028-01-19 | WSC-HRSG-E&I-1030, PCL-HRSG-E&I-1000 (other project) FF | 5.9d | 0d | Electrical [360 h] | 0.8 | LV | HRSG On | CON | PCL | WS HRSG |  |  |  |  |  |  |
| WSC-HRSG-E&I-1140 |  | HRSG Install Lighting Fixtures | 50d | 2027-11-11 | 2028-01-26 | WSC-HRSG-E&I-1150, PCL-HRSG-E&I-1000 (other project) FF | 0.9d | 0d | Electrical [400 h] | 0.8 | LGT | HRSG On | CON | PCL | WS HRSG |  |  |  |  |  |  |
| WSC-HRSG-E&I-1160 |  | HRSG Pull Lighting Cable | 45d | 2027-11-11 | 2028-01-19 | WSC-HRSG-E&I-1150, PCL-HRSG-E&I-1000 (other project) FF | 5.9d | 5d | Electrical [2250 h] | 5 | LGT | HRSG On | CON | PCL | WS HRSG |  |  |  |  |  |  |
| WSC-HRSG-E&I-1000 |  | HRSG 1 Instrumentation | 25d | 2027-11-22 | 2027-12-30 | WSC-INT-MIL-1700, WSC-INT-MIL-1710, WSC-HRSG-E&I-1020, WSC-HRSG-E&I-1020 FF | 68.9d | 0d | Electrical [270 h] | 1.08 | INST | HRSG On | CON | PCL | WS HRSG |  |  |  |  |  |  |
| WSC-HRSG-E&I-1060 |  | HRSG Instrumentation | 25d | 2027-11-22 | 2027-12-30 | WSC-INT-MIL-1700, WSC-INT-MIL-1710, WSC-HRSG-E&I-1070 | 8.9d | 0d | Electrical [350 h] | 1.4 | INST | HRSG On | CON | PCL | WS HRSG | 1-10 |  |  |  |  |  |
| WSC-HRSG-E&I-1010 |  | HRSG Instrumentation Terms | 25d | 2028-01-03 | 2028-02-04 | WSC-HRSG-E&I-1000, WSC-HRSG-E&I-1020, PCL-HRSG-E&I-1010 (other project) FF | 68.9d | 0d | Electrical [300 h] | 1.2 | INST | HRSG On | CON | PCL | WS HRSG |  |  |  |  |  |  |
| WSC-HRSG-E&I-1090 |  | HRSG Pull Inst Cable to Devices | 15d | 2028-01-03 | 2028-01-21 | WSC-HRSG-E&I-1060, PCL-HRSG-E&I-1000 (other project) FF | 8.9d | 0d | Electrical [650 h] | 4.33333333333333 | INST | HRSG On | CON | PCL | WS HRSG | 1-10 |  |  |  |  |  |
| WSC-HRSG-E&I-1120 |  | HRSG Terminate Power Cables | 45d | 2028-01-20 | 2028-03-23 | WSC-HRSG-E&I-1110, PCL-HRSG-E&I-1020 (other project) FF | 5.9d | 5d | Electrical [200 h] | 0.444444444444444 | LV | HRSG On | CON | PCL | WS HRSG |  |  |  |  |  |  |
| WSC-HRSG-E&I-1100 |  | HRSG Terminate Inst Cables | 40d | 2028-01-24 | 2028-03-20 | WSC-HRSG-E&I-1080, WSC-HRSG-E&I-1090, PCL-HRSG-E&I-1020 (other project) FF | 8.9d | 8d | Electrical [350 h] | 0.875 | INST | HRSG On | CON | PCL | WS HRSG | 1-10 |  |  |  |  |  |
| WSC-HRSG-E&I-1170 |  | HRSG Terminate Lighting Cables | 45d | 2028-01-27 | 2028-03-30 | WSC-HRSG-E&I-1140, WSC-HRSG-E&I-1160, PCL-HRSG-E&I-1020 (other project) FF | 0.9d | 0d | Electrical [300 h] | 0.666666666666667 | LGT | HRSG On | CON | PCL | WS HRSG |  |  |  |  |  |  |
| WSC-HRSG-E&I-1040 |  | HRSG Loop checks Electrical | 30d | 2028-03-31 | 2028-05-11 | WSC-HRSG-PIP-1050, WSC-HRSG-PIP-1070, WSC-HRSG-E&I-1170, WSC-HRSG-E&I-1120, WSC-HRSG-E&I-1100, WSC-HRSG-E&I-1030 | 0.9d | 48d | Electrical [600 h] | 2 | INST | HRSG On | CON | PCL | WS HRSG | 1-10 |  |  |  |  |  |
|  | 6 | **Paint and Insulation** |  |  |  |  |  |  |  |  |  |  |  |  |  |  |  |  |  |  |  |
|  | 7 | **Subcontractor** |  | 2026-11-25 | 2027-03-24 |  |  |  |  |  |  |  |  |  |  |  |  |  |  |  |  |
| WSC-HRSG-SUB-1010 |  | HRSG 1 Heat Trace and Insulation | 80d | 2026-11-25 | 2027-03-24 | WSC-HRSG-MEC-1170, WSC-HRSG-MEC-1200 | 47.9d | 24d | Subcontractor | 0 |  | HRSG On | CON | PCL | WS HRSG |  |  |  |  |  |  |
|  | 4 | **Air Cooled Condenser** |  | 2026-11-23 | 2028-05-23 |  |  |  |  |  |  |  |  |  |  |  |  |  |  |  |  |
| WSC-ACC-PIP-1010 |  | ACC Off Base Install Hot Piping LB | 70d | 2026-11-23 | 2027-03-08 | WSC-INT-MIL-1990 | 39.2d | 0d | Pipe [3500 h] | 5 |  | ACC Off | CON | PCL | WS ACC |  | Yes |  |  |  |  |
| WSC-ACC-MEC-1080 |  | Vacuum Drains tank and Pit | 10d | 2027-02-08 | 2027-02-22 | WSC-ACC-MEC-1050, WSC-INT-MIL-1980, WSC-INT-MIL-1520 | 289.9d | 0d | Mechanical | 0 |  | ACC Off | CON | PCL | WS ACC |  |  | FND | CCWA_06 | Mechanical |  |
| WSC-ACC-PIP-1000 |  | ACC Off Base Install Cold Piping LB | 20d | 2027-03-09 | 2027-04-05 | WSC-ACC-PIP-1010 | 79.2d | 0d | Pipe [650 h] | 3.25 |  | ACC Off | CON | PCL | WS ACC |  | Yes |  |  |  |  |
| WSC-ACC-PIP-1030 |  | ACC Off Base Install Hot Piping SB | 20d | 2027-03-09 | 2027-04-05 | WSC-INT-MIL-1690, WSC-ACC-PIP-1010 | 79.2d | 0d | Pipe [900 h] | 4.5 |  | ACC Off | CON | PCL | WS ACC |  | Yes |  |  |  |  |
| WSC-ACC-STR-1030 |  | ACC Steel Bay #2 | 30d | 2027-04-01 | 2027-05-12 | WSC-ACC-STR-1000 | -147.8d | 2d | Structural Steel [2050 h] | 6.83333333333333 |  | ACC ON | CON | PCL | WS ACC | 11-30 |  |  |  |  |  |
| WSC-ACC-PIP-1020 |  | ACC Off Base Install Cold Piping SB | 30d | 2027-04-06 | 2027-05-17 | WSC-ACC-PIP-1000, PCL-ACC-PIP-1000 (other project) FF | 199.9d | 20d | Pipe [750 h] | 2.5 |  | ACC Off | CON | PCL | WS ACC |  | Yes |  |  |  |  |
| WSC-ACC-PIP-1040 |  | ACC Off Base Test Hot Piping | 50d | 2027-04-06 | 2027-06-15 | WSC-ACC-PIP-1000, WSC-ACC-PIP-1030 | 79.2d | 0d | Pipe [450 h] | 0.9 |  | ACC Off | CON | PCL | WS ACC |  | Yes |  |  |  |  |
| WSC-ACC-MEC-1110 |  | Install ACC Turbine Exhaust Duct | 35d | 2027-05-03 | 2027-06-21 | WSC-INT-MIL-1980, WSC-INT-MIL-2000 | -114.8d | 53d | Mechanical [100 h] | 0.285714285714286 |  | ACC ON | CON | PCL | WS ACC |  |  | Yes |  | Mechanical |  |
| WSC-ACC-MEC-1070 |  | Install Cycle Chemical Feed Totes & Pumps | 10d | 2027-05-13 | 2027-05-26 | WSC-ACC-MEC-1040, WSC-INT-MIL-1270, WSC-INT-MIL-1280 | -167.8d | 0d | Mechanical | 0 |  | ACC Off | CON | PCL | WS ACC | 11-30 |  | FND | CCWA_06 | Mechanical |  |
| WSC-ACC-MEC-1090 |  | Set 6.9kV Station Service XFMR (ACC Area) | 10d | 2027-05-27 | 2027-06-10 | WSC-ACC-MEC-1070, WSC-INT-MIL-1570, WSC-INT-MIL-1980 | -167.8d | 0d | Mechanical [100 h] | 1 |  | ACC Off | CON | PCL | WS ACC | 11-30 |  | FND | CCWA_06 | Mechanical |  |
| WSC-ACC-STR-1040 |  | ACC Steel Bay #3 | 30d | 2027-06-11 | 2027-07-23 | WSC-ACC-MEC-1090, WSC-ACC-STR-1030 | -167.8d | 0d | Structural Steel [2050 h] | 6.83333333333333 |  | ACC ON | CON | PCL | WS ACC | 11-30 |  |  |  |  |  |
| WSC-ACC-MEC-1130 |  | ACC Module Installation and Dress Out Bay #2 | 20d | 2027-06-15 | 2027-07-13 | WSC-ACC-MEC-1100 | -149.8d | 8d | Mechanical [2634 h] | 13.17 |  | ACC ON | CON | PCL | WS ACC | 11-30 |  | Yes |  | Mechanical |  |
| WSC-ACC-PIP-1050 |  | ACC Off Base Test Cold Piping | 20d | 2027-06-16 | 2027-07-14 | WSC-ACC-PIP-1040, WSC-ACC-PIP-1020, PCL-ACC-PIP-1020 (other project) FF | 179.9d | 178d | Pipe [450 h] | 2.25 |  | ACC Off | CON | PCL | WS ACC |  | Yes |  |  |  |  |
| WSC-ACC-MEC-1140 |  | ACC Module Installation and Dress Out Bay #3 | 20d | 2027-07-26 | 2027-08-20 | WSC-ACC-STR-1040, WSC-ACC-MEC-1130 | -157.8d | 10d | Mechanical [2634 h] | 13.17 |  | ACC ON | CON | PCL | WS ACC | 11-30 |  | Yes |  | Mechanical |  |
| WSC-ACC-STR-1050 |  | ACC Steel Bay #4 | 30d | 2027-07-26 | 2027-09-03 | WSC-ACC-STR-1040 | -167.8d | 0d | Structural Steel [2050 h] | 6.83333333333333 |  | ACC ON | CON | PCL | WS ACC | 11-30 |  |  |  |  |  |
| WSC-ACC-MEC-1150 |  | ACC Module Installation and Dress Out Bay #4 | 20d | 2027-09-07 | 2027-10-04 | WSC-ACC-MEC-1110, WSC-ACC-STR-1050, WSC-ACC-MEC-1140, PCL-ACC-MEC-1000 (other project) FF | -167.8d | 0d | Mechanical [2634 h] | 13.17 |  | ACC ON | CON | PCL | WS ACC | 11-30 |  | Yes |  | Mechanical |  |
| WSC-ACC-STR-1020 |  | Erect ACC Safety Relief & Vacuum Breaker Access Platform (Top Of Duct) | 10d | 2027-09-07 | 2027-09-20 | WSC-ACC-STR-1050, WSC-ACC-MEC-1100, WSC-INT-MIL-1980, WSC-INT-MIL-1670, WSC-INT-MIL-1530, PCL-ACC-STR-1000 (other project) FF | -157.8d | 10d | Structural Steel [850 h] | 8.5 |  | ACC ON | CON | PCL | WS ACC |  |  |  |  |  |  |
| WSC-ACC-CIV-1000 |  | ACC Misc Equipment Grout | 100d | 2027-11-15 | 2028-04-10 | WSC-HRSG-SUB-1020 | 23.9d | 71d | Concrete [1850 h] | 1.85 |  | ACC Off | CON | PCL | WS ACC |  |  |  |  | Civil | 0 |
| WSC-ACC-CIV-1010 |  | ACC Misc Equipment Grout | 80d | 2028-02-01 | 2028-05-23 | WSC-ACC-STR-1010 | -7.1d | 40d | Concrete [945 h] | 1.18125 |  | ACC ON | CON | PCL | WS ACC | 11-30 |  |  |  | Civil | 0 |

| ID | WBS | Activity | Duration | Start | Finish | Predecessors | Total float | Free float | Resources | Crew Size | WS Float Path | WS Sub Area | WS EPC | WS Resp | WS Area | WS Equipment Set | WS CCWA Area | WS Discipline | WS System |
| --- | --- | --- | --- | --- | --- | --- | --- | --- | --- | --- | --- | --- | --- | --- | --- | --- | --- | --- | --- |
|  | 1 | **Grout** |  |  |  |  |  |  |  |  |  |  |  |  |  |  |  |  |  |
|  | 2 | **Structural** |  | 2027-02-18 | 2028-01-31 |  |  |  |  |  |  |  |  |  |  |  |  |  |  |
| WSC-ACC-STR-1000 |  | ACC Steel Bay #1 | 30d | 2027-02-18 | 2027-03-31 | WSC-INT-MIL-1980, DEL-5026 (other project) | -147.8d | 0d | Structural Steel [2050 h] | 6.83333333333333 | 11-30 | ACC ON | CON | PCL | WS ACC |  |  |  |  |
| WSC-ACC-STR-1010 |  | ACC Misc Steel | 80d | 2027-10-05 | 2028-01-31 | WSC-ACC-STR-1020, WSC-ACC-MEC-1150, WSC-ACC-STR-1050, WSC-HRSG-STL-1010 | -167.8d | 0d | Structural Steel [2127 h] | 2.65875 | 11-30 | ACC ON | CON | PCL | WS ACC |  |  |  |  |
|  | 3 | **Mechanical** |  | 2026-12-23 | 2027-08-06 |  |  |  |  |  |  |  |  |  |  |  |  |  |  |
| WSC-ACC-MEC-1010 |  | Install Vacuum Pump Skids | 10d | 2026-12-23 | 2027-01-08 | WSC-INT-MIL-1980, WSC-INT-MIL-1670 | 289.9d | 0d | Mechanical [100 h] | 1 |  | ACC Off | CON | PCL | WS ACC | FND | CCWA_06 | Mechanical |  |
| WSC-ACC-MEC-1030 |  | Atmospheric ST Drains Tanks and Pumps | 10d | 2027-01-11 | 2027-01-22 | WSC-ACC-MEC-1010, WSC-INT-MIL-1980, WSC-INT-MIL-1510 | 289.9d | 0d | Mechanical | 0 |  | ACC Off | CON | PCL | WS ACC | FND | CCWA_06 | Mechanical |  |
| WSC-ACC-MEC-1050 |  | Install ACC Holding Steam Jet Air Ejectors | 10d | 2027-01-25 | 2027-02-05 | WSC-ACC-MEC-1030, WSC-INT-MIL-1980, WSC-INT-MIL-1530, WSC-INT-MIL-1290 | 289.9d | 0d | Mechanical | 0 |  | ACC Off | CON | PCL | WS ACC | FND | CCWA_06 | Mechanical |  |
| WSC-ACC-MEC-1020 |  | ACC Condensate Tank and Pumps | 10d | 2027-02-23 | 2027-03-08 | WSC-ACC-MEC-1080, WSC-INT-MIL-1100, WSC-INT-MIL-1510, WSC-INT-MIL-1130 | 289.9d | 97d | Mechanical [100 h] | 1 |  | ACC Off | CON | PCL | WS ACC | FND | CCWA_06 | Mechanical |  |
| WSC-ACC-MEC-1000 |  | ACC PDC | 8d | 2027-04-19 | 2027-04-28 | WSC-INT-MIL-1840, MST3800 (other project) | -167.8d | 0d | Mechanical [100 h] | 1 |  | ACC Off | CON | PCL | WS ACC | FND | CCWA_06 | Mechanical |  |
| WSC-ACC-MEC-1040 |  | Install ACC Cleaning Pump | 10d | 2027-04-29 | 2027-05-12 | WSC-ACC-MEC-1000 | -167.8d | 0d | Mechanical [100 h] | 1 |  | ACC Off | CON | PCL | WS ACC | FND | CCWA_06 | Mechanical |  |
| WSC-ACC-MEC-1120 |  | ACC | 10d | 2027-05-03 | 2027-05-14 | WSC-INT-MIL-2000 | -149.8d | 0d | Mechanical [100 h] | 1 |  | ACC ON | CON | PCL | WS ACC |  |  | Mechanical |  |
| WSC-ACC-MEC-1100 |  | ACC Module Installation and Dress Out Bay #1 | 20d | 2027-05-17 | 2027-06-14 | WSC-ACC-MEC-1120, WSC-ACC-STR-1030, WSC-INT-MIL-2000, WSC-INT-MIL-1980 | -149.8d | 0d | Mechanical [2634 h] | 13.17 | 11-30 | ACC ON | CON | PCL | WS ACC | FND | CCWA_06 | Mechanical |  |
| WSC-ACC-MEC-1060 |  | Set Condensate Pumps | 10d | 2027-07-26 | 2027-08-06 | WSC-ACC-MEC-1020, WSC-INT-MIL-1130, WSC-INT-MIL-1110, WSC-INT-MIL-1100 | 192.9d | 240d | Mechanical | 0 |  | ACC Off | CON | PCL | WS ACC | FND | CCWA_06 | Mechanical |  |
|  | 4 | **Pipe** |  |  |  |  |  |  |  |  |  |  |  |  |  |  |  |  |  |
|  | 5 | **Electrical & Instrumentation** |  | 2027-06-01 | 2028-05-10 |  |  |  |  |  |  |  |  |  |  |  |  |  |  |
| WSC-ACC-E&I-1000 |  | ACC Electrical | 80d | 2027-06-01 | 2027-09-22 | WSC-INT-MIL-1780, WSC-ACC-STR-1000 | -19.8d | 42d | Electrical [1200 h] | 1.5 |  | ACC Off | CON | PCL | WS ACC |  |  |  | INST |
| WSC-ACC-E&I-1040 |  | ACC Install Cable Tray | 40d | 2027-06-28 | 2027-08-23 | WSC-INT-MIL-1640, WSC-ACC-MEC-1100 | -48.8d | 0d | Electrical [800 h] | 2 | 11-30 | ACC Off | CON | PCL | WS ACC |  |  |  | CT |
| WSC-ACC-E&I-1020 |  | ACC Install Power Conduit | 70d | 2027-08-24 | 2027-12-02 | WSC-ACC-E&I-1040 | 6.9d | 0d | Electrical [2600 h] | 3.71428571428571 | 11-30 | ACC Off | CON | PCL | WS ACC |  |  |  | LV |
| WSC-ACC-E&I-1060 |  | ACC Install Junction Boxes | 40d | 2027-08-24 | 2027-10-19 | WSC-ACC-E&I-1040 | -48.8d | 0d | Electrical [360 h] | 0.9 | 11-30 | ACC Off | CON | PCL | WS ACC |  |  |  | INST |
| WSC-ACC-E&I-1140 |  | ACC Install Lighting Conduit | 60d | 2027-08-24 | 2027-11-16 | WSC-ACC-E&I-1040 | 1.9d | 0d | Electrical [2200 h] | 3.66666666666667 | 11-30 | ACC Off | CON | PCL | WS ACC |  |  |  | LGT |
| WSC-ACC-E&I-1120 |  | ACC Install Inst Conduit | 40d | 2027-10-20 | 2027-12-16 | WSC-ACC-E&I-1060 | 1.9d | 0d | Electrical [2200 h] | 5.5 | 11-30 | ACC Off | CON | PCL | WS ACC |  |  |  | INST |
| WSC-ACC-E&I-1130 |  | ACC Install Lighting Fixtures | 50d | 2027-11-17 | 2028-02-01 | WSC-ACC-E&I-1140 | 1.9d | 0d | Electrical [350 h] | 0.7 | 11-30 | ACC Off | CON | PCL | WS ACC |  |  |  | LGT |
| WSC-ACC-E&I-1150 |  | ACC Pull Lighting Cable | 45d | 2027-11-17 | 2028-01-25 | WSC-ACC-E&I-1140 | 6.9d | 5d | Electrical [2400 h] | 5.33333333333333 | 11-30 | ACC Off | CON | PCL | WS ACC |  |  |  | LGT |
| WSC-ACC-E&I-1010 |  | ACC Instrumentation | 20d | 2027-11-22 | 2027-12-21 | WSC-INT-MIL-1700, WSC-INT-MIL-1710, WSC-ACC-E&I-1000, WSC-ACC-MEC-1100 | -31.8d | 30d | Electrical [2300 h] | 11.5 |  | ACC Off | CON | PCL | WS ACC |  |  |  | INST |
| WSC-ACC-E&I-1050 |  | ACC Instrumentation | 40d | 2027-11-22 | 2028-01-21 | WSC-INT-MIL-1700, WSC-INT-MIL-1710, WSC-ACC-E&I-1060 | -71.8d | 0d | Electrical [650 h] | 1.625 | 1-10 | ACC Off | CON | PCL | WS ACC |  |  |  | INST |
| WSC-ACC-E&I-1100 |  | ACC Pull Power Cable | 45d | 2027-12-03 | 2028-02-08 | WSC-ACC-E&I-1020 | 6.9d | 5d | Electrical [800 h] | 1.77777777777778 | 11-30 | ACC Off | CON | PCL | WS ACC |  |  |  | LV |
| WSC-ACC-E&I-1070 |  | ACC Pull Inst Cable (Home Runs) | 45d | 2027-12-17 | 2028-02-23 | WSC-ACC-E&I-1120, WSC-ACC-E&I-1020 | 1.9d | 0d | Electrical [800 h] | 1.77777777777778 | 11-30 | ACC Off | CON | PCL | WS ACC |  |  |  | INST |
| WSC-ACC-E&I-1080 |  | ACC Pull Inst Cable to Devices | 15d | 2028-01-24 | 2028-02-11 | WSC-ACC-E&I-1050 | 8.9d | 7d | Electrical [600 h] | 4 | 1-10 | ACC Off | CON | PCL | WS ACC |  |  |  | INST |
| WSC-ACC-E&I-1160 |  | ACC Terminate Lighting Cables | 40d | 2028-02-02 | 2028-03-29 | WSC-ACC-E&I-1130, WSC-ACC-E&I-1150, PCL-ACC-E&I-1000 (other project) FF | 1.9d | 0d | Electrical [800 h] | 2 | 11-30 | ACC Off | CON | PCL | WS ACC |  |  |  | LGT |
| WSC-ACC-E&I-1110 |  | ACC Terminate Power Cables | 30d | 2028-02-16 | 2028-03-29 | WSC-ACC-E&I-1100, PCL-ACC-E&I-1000 (other project) FF | 1.9d | 0d | Electrical [600 h] | 2 | 11-30 | ACC Off | CON | PCL | WS ACC |  |  |  | LV |
| WSC-ACC-E&I-1090 |  | ACC Terminate Inst Cables | 25d | 2028-02-24 | 2028-03-29 | WSC-ACC-E&I-1070, WSC-ACC-E&I-1080 | 1.9d | 0d | Electrical [350 h] | 1.4 | 1-10 | ACC Off | CON | PCL | WS ACC |  |  |  | INST |
| WSC-ACC-E&I-1030 |  | ACC Loop checks Electrical | 30d | 2028-03-30 | 2028-05-10 | WSC-ACC-PIP-1050, WSC-ACC-E&I-1110, WSC-ACC-E&I-1160, WSC-ACC-E&I-1090, WSC-ACC-E&I-1020, PCL-ACC-E&I-1010 (other project) FF | 1.9d | 49d | Electrical [800 h] | 2.66666666666667 | 1-10 | ACC Off | CON | PCL | WS ACC |  |  |  | INST |

| ID | WBS | Activity | Duration | Start | Finish | Predecessors | Total float | Free float | Resources | Crew Size | WS Power Train Center Line | WS Sub Area | WS EPC | WS Resp | WS Area | WS Float Path | WS Sequence | zInteger_01 | WS Discipline | WS System |
| --- | --- | --- | --- | --- | --- | --- | --- | --- | --- | --- | --- | --- | --- | --- | --- | --- | --- | --- | --- | --- |
|  | 6 | **Paint and Insulation** |  |  |  |  |  |  |  |  |  |  |  |  |  |  |  |  |  |  |
|  | 7 | **Subcontractor** |  |  |  |  |  |  |  |  |  |  |  |  |  |  |  |  |  |  |
|  | 5 | **Utility Rack** |  | 2027-05-03 | 2028-03-16 |  |  |  |  |  |  |  |  |  |  |  |  |  |  |  |
| WSC-PR-PIP-1010 |  | Utility Rack Install Hot Piping LB | 50d | 2027-06-15 | 2027-08-24 | WSC-PR-STL-1000, WSC-INT-MIL-1990 | 65.9d | 0d | Pipe [750 h] | 1.5 | Yes | Pipe Rack | CON | PCL | WS PR |  |  |  |  |  |
| WSC-PR-PIP-1060 |  | Utility Rack Install High Energy Piping LB | 150d | 2027-06-15 | 2028-01-19 | WSC-PR-STL-1000, WSC-INT-MIL-1680 | 15.9d | 0d | Pipe [10250 h] | 6.83333333333333 | Yes | Pipe Rack | CON | PCL | WS PR | 11-30 |  |  |  |  |
| WSC-PR-STL-1010 |  | Erect Utility Rack Main Steel | 30d | 2027-06-15 | 2027-07-27 | WSC-INT-MIL-1790, WSC-CT-MEC-1050, WSC-CT-MEC-1060, WSC-HRSG-MEC-1100, WSC-HRSG-MEC-1080, WSC-PR-STL-1000, WSC-HRSG-STL-1020 | -119.8d | 0d | Structural Steel [3000 h] | 10 |  | Pipe Rack | CON | PCL | WS PR | 1-10 | CTG Steel |  |  |  |
| WSC-PR-STL-1030 |  | Erect Utility Rack Aux Steel | 30d | 2027-07-28 | 2027-09-08 | WSC-PR-STL-1010 | 60.9d | 0d | Structural Steel [3000 h] | 10 |  | Pipe Rack | CON | PCL | WS PR |  | CTG Steel |  |  |  |
| WSC-PR-PIP-1000 |  | Utility Rack Install Cold Piping LB | 20d | 2027-08-25 | 2027-09-22 | WSC-PR-PIP-1010 | 65.9d | 0d | Pipe [350 h] | 1.75 | Yes | Pipe Rack | CON | PCL | WS PR |  |  |  |  |  |
| WSC-PR-PIP-1030 |  | Utility Rack Install Hot Piping SB | 20d | 2027-08-25 | 2027-09-22 | WSC-PR-PIP-1010 | 65.9d | 0d | Pipe [300 h] | 1.5 | Yes | Pipe Rack | CON | PCL | WS PR |  |  |  |  |  |
| WSC-PR-STL-1040 |  | Erect Utility Rack Main Steel Inlet Bridge | 30d | 2027-09-09 | 2027-10-20 | WSC-PR-STL-1030, WSC-PR-STL-1020 | 60.9d | 0d | Structural Steel [3000 h] | 10 |  | Pipe Rack | CON | PCL | WS PR |  | CTG Steel |  |  |  |
| WSC-PR-PIP-1020 |  | Utility Rack Install Cold Piping SB | 30d | 2027-09-23 | 2027-11-03 | WSC-INT-MIL-1690, WSC-PR-PIP-1000 | 85.9d | 70d | Pipe [750 h] | 2.5 | Yes | Pipe Rack | CON | PCL | WS PR |  |  |  |  |  |
| WSC-PR-PIP-1040 |  | Utility Rack Test Hot Piping | 50d | 2027-09-23 | 2027-12-03 | WSC-PR-PIP-1000, WSC-PR-PIP-1030 | 65.9d | 50d | Pipe [450 h] | 0.9 | Yes | Pipe Rack | CON | PCL | WS PR |  |  |  |  |  |
| WSC-PR-STL-1050 |  | Erect Utility Rack Aux Steel Inlet Bridge | 30d | 2027-10-21 | 2027-12-03 | WSC-PR-STL-1040, PCL-PR-STR-1010 (other project) FF, PCL-HRSG-STR-1060 (other project) FF | 60.9d | 0d | Structural Steel [3000 h] | 10 |  | Pipe Rack | CON | PCL | WS PR |  | CTG Steel |  |  |  |
| WSC-PR-CIV-1110 |  | Pipe Rack Misc Equipment Grout | 50d | 2027-12-06 | 2028-02-16 | WSC-PR-STL-1050, WSC-PR-STL-1030 | 60.9d | 108d | Concrete [2350 h] | 4.7 |  | Pipe Rack | CON | PCL | WS PR |  |  | 0 | Civil |  |
| WSC-PR-PIP-1070 |  | Utility Rack Test High Energy Piping | 20d | 2028-01-20 | 2028-02-16 | WSC-PR-PIP-1060 | 15.9d | 0d | Pipe [800 h] | 4 | Yes | Pipe Rack | CON | PCL | WS PR | 11-30 |  |  |  |  |
| WSC-PR-PIP-1050 |  | Utility Rack Test Cold Piping | 20d | 2028-02-17 | 2028-03-16 | WSC-PR-PIP-1070, WSC-PR-PIP-1040, WSC-PR-PIP-1020 | 15.9d | 15d | Pipe [450 h] | 2.25 | Yes | Pipe Rack | CON | PCL | WS PR | 11-30 |  |  |  |  |
|  | 1 | **Grout** |  |  |  |  |  |  |  |  |  |  |  |  |  |  |  |  |  |  |
|  | 2 | **Structural** |  | 2027-05-03 | 2027-08-10 |  |  |  |  |  |  |  |  |  |  |  |  |  |  |  |
| WSC-PR-STL-1000 |  | Erect Utility Rack Main Steel Turbine Building Interior | 30d | 2027-05-03 | 2027-06-14 | WSC-ST-MEC-1030, WSC-DEL-STR-1050, CCWA_01-6120 (other project) | -119.8d | 0d | Structural Steel [3608 h] | 12.0266666666667 |  | Pipe Rack | CON | PCL | WS PR | 1-10 | CTG Steel |  |  |  |
| WSC-PR-STL-1020 |  | Erect Utility Rack Aux Steel Turbine Building Interior | 40d | 2027-06-15 | 2027-08-10 | WSC-PR-STL-1000 | 80.9d | 20d | Structural Steel [3356 h] | 8.39 |  | Pipe Rack | CON | PCL | WS PR |  | CTG Steel |  |  |  |
|  | 3 | **Mechanical** |  |  |  |  |  |  |  |  |  |  |  |  |  |  |  |  |  |  |
|  | 4 | **Pipe** |  |  |  |  |  |  |  |  |  |  |  |  |  |  |  |  |  |  |
|  | 5 | **Electrical & Instrumentation** |  | 2027-06-28 | 2027-11-16 |  |  |  |  |  |  |  |  |  |  |  |  |  |  |  |
| WSC-PR-E&I-1010 |  | Pipe Rack Install Cable Tray | 40d | 2027-06-28 | 2027-08-23 | WSC-INT-MIL-1640, WSC-PR-STL-1000 | 41.2d | 0d | Electrical [2390 h] | 5.975 |  | Pipe Rack | CON | PCL | WS PR |  |  |  |  | CT |
| WSC-PR-E&I-1020 |  | Pipe Rack Pull Power Cable | 60d | 2027-08-24 | 2027-11-16 | WSC-PR-E&I-1010, PCL-PR-E&I-1000 (other project) FF | 121.9d | 169d | Electrical [4560 h] | 7.6 |  | Pipe Rack | CON | PCL | WS PR |  |  |  |  | LV |
| WSC-PR-E&I-1040 |  | Pipe Rack Install Lighting Conduit | 30d | 2027-08-24 | 2027-10-05 | WSC-PR-E&I-1010 | 121.9d | 0d | Electrical [2500 h] | 8.33333333333333 |  | Pipe Rack | CON | PCL | WS PR |  |  |  |  | LGT |
| WSC-PR-E&I-1000 |  | Rack Electrical | 40d | 2027-09-22 | 2027-11-16 | WSC-PR-STL-1030, WSC-PR-STL-1000, WSC-ARCH-STL-1080 SS, PCL-PR-E&I-1000 (other project) FF, CCWA_01-6120 (other project) | 121.9d | 53d | Electrical [2500 h] | 6.25 |  | Pipe Rack | CON | PCL | WS PR |  |  |  |  | CT |
| WSC-PR-E&I-1030 |  | Pipe Rack Install Lighting Fixtures | 15d | 2027-10-06 | 2027-10-26 | WSC-PR-E&I-1040 | 121.9d | 0d | Electrical [265 h] | 1.76666666666667 |  | Pipe Rack | CON | PCL | WS PR |  |  |  |  | LGT |
| WSC-PR-E&I-1050 |  | Pipe Rack Pull Lighting Cable | 15d | 2027-10-06 | 2027-10-26 | WSC-PR-E&I-1040 | 121.9d | 0d | Electrical [875 h] | 5.83333333333333 |  | Pipe Rack | CON | PCL | WS PR |  |  |  |  | LGT |
| WSC-PR-E&I-1060 |  | Pipe Rack Terminate Lighting Cables | 15d | 2027-10-27 | 2027-11-16 | WSC-PR-E&I-1030, WSC-PR-E&I-1050, PCL-PR-E&I-1000 (other project) FF | 121.9d | 169d | Electrical [365 h] | 2.43333333333333 |  | Pipe Rack | CON | PCL | WS PR |  |  |  |  | LGT |

| ID | WBS | Activity | Duration | Start | Finish | Predecessors | Total float | Free float | Resources | Crew Size | WS System | WS Sub Area | WS EPC | WS Resp | WS Area | WS Equipment Set | WS CCWA Area | WS Discipline | WS Power Train Center Line | zInteger_01 |
| --- | --- | --- | --- | --- | --- | --- | --- | --- | --- | --- | --- | --- | --- | --- | --- | --- | --- | --- | --- | --- |
|  | 6 | **Paint and Insulation** |  |  |  |  |  |  |  |  |  |  |  |  |  |  |  |  |  |  |
|  | 7 | **Subcontractor** |  |  |  |  |  |  |  |  |  |  |  |  |  |  |  |  |  |  |
|  | 6 | **Water Treatment** |  | 2026-08-04 | 2028-04-19 |  |  |  |  |  |  |  |  |  |  |  |  |  |  |  |
| WSC-WT-SUB-1010 |  | Sub-Contractor Field Erect Demin Water Tank | 80d | 2026-08-04 | 2026-11-25 | WSC-INT-MIL-1810 | 17.7d | 0d | Subcontractor | 0 | Demin | Tank Farm | CON | PCL | WS WT |  |  |  |  |  |
| WSC-WT-SUB-1020 |  | Sub-Contractor Field Erect Service/Fire Water Tank | 80d | 2026-11-25 | 2027-03-25 | WSC-WT-SUB-1010 | 17.7d | 0d | Subcontractor | 0 | FW | Tank Farm | CON | PCL | WS WT |  |  |  |  |  |
| WSC-WT-SUB-1030 |  | Sub-Contractor Field Erect Waste Water Tank | 50d | 2027-03-25 | 2027-06-04 | WSC-WT-SUB-1020 | 17.7d | 0d | Subcontractor | 0 | WW | Tank Farm | CON | PCL | WS WT |  |  |  |  |  |
| WSC-WT-MEC-1010 |  | Set Ammonia storage tank | 3d | 2027-06-04 | 2027-06-09 | WSC-INT-MIL-1950, WSC-WT-SUB-1030, WSC-INT-MIL-1460 | 18.7d | 0d | Mechanical [45 h] | 1.5 | AP | Tank Farm | CON | PCL | WS WT | FND | CCWA_19 | Mechanical |  |  |
| WSC-WT-MEC-1040 |  | Install Aqueous Ammonia Forwarding Pumps | 10d | 2027-06-04 | 2027-06-18 | WSC-WT-SUB-1030, WSC-INT-MIL-1210 | 17.7d | 0d | Mechanical | 0 | AP | Tank Farm | CON | PCL | WS WT | FND | CCWA_19 | Mechanical |  |  |
| WSC-WT-SUB-1000 |  | Demin Water Treatment Trailer Pad | 10d | 2027-06-04 | 2027-06-18 | WSC-WT-SUB-1030 | 227.7d | 274.8d | Subcontractor | 0 | Demin | Tank Farm | CON | PCL | WS WT |  |  |  |  |  |
| WSC-WT-MEC-1000 |  | Install Fire Pump Enclosure | 3d | 2027-06-09 | 2027-06-14 | WSC-WT-MEC-1010, WSC-INT-MIL-1250, WSC-BOP-MEC-1010 SS | 18.7d | 0d | Mechanical [110 h] | 3.66666666666667 | FW | Tank Farm | CON | PCL | WS WT | FND | CCWA_21 | Mechanical |  |  |
| WSC-WT-MEC-1080 |  | Set Fire Water Pump House | 3d | 2027-06-14 | 2027-06-17 | WSC-WT-MEC-1000, WSC-INT-MIL-1250 | 18.7d | 1d | Mechanical [155 h] | 5.16666666666667 | FW | Tank Farm | CON | PCL | WS WT | FND | CCWA_21 | Mechanical |  |  |
| WSC-WT-MEC-1020 |  | Install Demin Water Pumps | 10d | 2027-06-18 | 2027-07-02 | WSC-WT-MEC-1080, WSC-WT-MEC-1040, WSC-INT-MIL-1150 | 17.7d | 0d | Mechanical [110 h] | 1.1 | Demin | Tank Farm | CON | PCL | WS WT | FND | CCWA_21 | Mechanical |  |  |
| WSC-WT-MEC-1050 |  | Install Service Water Pumps | 10d | 2027-07-02 | 2027-07-19 | WSC-WT-MEC-1020, WSC-INT-MIL-1140 | 17.7d | 0d | Mechanical | 0 | SW | Tank Farm | CON | PCL | WS WT | FND | CCWA_21 | Mechanical |  |  |
| WSC-WT-MEC-1030 |  | Install Wastewater Forwarding Pumps | 10d | 2027-07-19 | 2027-08-02 | WSC-WT-MEC-1050, WSC-WT-SUB-1030, WSC-INT-MIL-1160, WSC-INT-MIL-1200 | 17.7d | 0d | Mechanical | 0 | WW | Tank Farm | CON | PCL | WS WT | FND | CCWA_21 | Mechanical |  |  |
| WSC-WT-MEC-1060 |  | Install Hose Station | 10d | 2027-08-02 | 2027-08-16 | WSC-WT-MEC-1030, WSC-INT-MIL-1460 | 162.7d | 0d | Mechanical [15 h] | 0.15 |  | Tank Farm | CON | PCL | WS WT |  |  | Mechanical |  |  |
| WSC-WT-PIP-1010 |  | Water Treatment Install Hot Piping LB | 50d | 2027-08-02 | 2027-10-12 | WSC-WT-MEC-1030 | 17.7d | 0d | Pipe [750 h] | 1.5 |  | Tank Farm | CON | PCL | WS WT |  |  |  | Yes |  |
| WSC-WT-MEC-1070 |  | Set Ammonia Unloading | 10d | 2027-08-16 | 2027-08-30 | WSC-WT-MEC-1060, WSC-INT-MIL-1460 | 162.7d | 145d | Mechanical [20 h] | 0.2 |  | Tank Farm | CON | PCL | WS WT | Yes |  | Mechanical |  |  |
| WSC-WT-PIP-1000 |  | Water Treatment Install Cold Piping LB | 20d | 2027-10-12 | 2027-11-09 | WSC-WT-PIP-1010 | 17.7d | 0d | Pipe [350 h] | 1.75 |  | Tank Farm | CON | PCL | WS WT |  |  |  | Yes |  |
| WSC-WT-PIP-1030 |  | Water Treatment Install Hot Piping SB | 20d | 2027-10-12 | 2027-11-09 | WSC-WT-PIP-1010 | 17.7d | 0d | Pipe [300 h] | 1.5 |  | Tank Farm | CON | PCL | WS WT |  |  |  | Yes |  |
| WSC-WT-PIP-1020 |  | Water Treatment Install Cold Piping SB | 30d | 2027-11-09 | 2027-12-23 | WSC-WT-PIP-1000 | 37.7d | 20d | Pipe [750 h] | 2.5 |  | Tank Farm | CON | PCL | WS WT |  |  |  | Yes |  |
| WSC-WT-PIP-1040 |  | Water Treatment Test Hot Piping | 50d | 2027-11-09 | 2028-01-25 | WSC-WT-PIP-1000, WSC-WT-PIP-1030 | 17.7d | 0d | Pipe [450 h] | 0.9 |  | Tank Farm | CON | PCL | WS WT |  |  |  | Yes |  |
| WSC-WT-PIP-1050 |  | Water Treatment Test Cold Piping | 20d | 2028-01-25 | 2028-02-23 | WSC-WT-PIP-1040, WSC-WT-PIP-1020 | 17.7d | 0d | Pipe [450 h] | 2.25 |  | Tank Farm | CON | PCL | WS WT |  |  |  | Yes |  |
| WSC-WT-STR-1000 |  | Water Treatment Erect Misc Steel, MES, & MPS | 25d | 2028-02-23 | 2028-03-29 | WSC-WT-PIP-1050, WSC-BOP-STL-1030 | 17.7d | 0d | Structural Steel [556 h] | 2.224 |  | Tank Farm | CON | PCL | WS WT |  |  |  |  |  |
| WSC-WT-CIV-1000 |  | Water Treatnent Misc Equipment Grout | 15d | 2028-03-29 | 2028-04-19 | WSC-WT-STR-1000, WSC-WT-MEC-1070, WSC-WT-MEC-1030 | 17.7d | 64.8d | Concrete [265 h] | 1.76666666666667 |  | Tank Farm | CON | PCL | WS WT |  |  | Civil |  | 0 |

| ID | WBS | Activity | Type | Duration | Start | Finish | Predecessors | Total float | Free float | Resources | Crew Size | WS System | WS Sub Area | WS EPC | WS Resp | WS Area | WS Equipment Set | WS CCWA Area | WS Discipline | WS Power Train Center Line | WS Float Path | zInteger_01 |
| --- | --- | --- | --- | --- | --- | --- | --- | --- | --- | --- | --- | --- | --- | --- | --- | --- | --- | --- | --- | --- | --- | --- |
|  | 1 | **Grout** |  |  |  |  |  |  |  |  |  |  |  |  |  |  |  |  |  |  |  |  |
|  | 2 | **Structural** |  |  |  |  |  |  |  |  |  |  |  |  |  |  |  |  |  |  |  |  |
|  | 3 | **Mechanical** |  |  |  |  |  |  |  |  |  |  |  |  |  |  |  |  |  |  |  |  |
|  | 4 | **Pipe** |  |  |  |  |  |  |  |  |  |  |  |  |  |  |  |  |  |  |  |  |
|  | 5 | **Electrical & Instrumentation** |  |  | 2027-08-02 | 2027-10-26 |  |  |  |  |  |  |  |  |  |  |  |  |  |  |  |  |
| WSC-WT-E&I-1000 |  | Water Treatment Install Power Conduit |  | 15d | 2027-08-02 | 2027-08-23 | WSC-WT-MEC-1030 | 112d | 0d | Electrical [155 h] | 1.03333333333333 | LV | Tank Farm | CON | PCL | WS WT |  |  |  |  |  |  |
| WSC-WT-E&I-1030 |  | Water Treatment Install Junction Boxes |  | 5d | 2027-08-02 | 2027-08-09 | WSC-WT-MEC-1030 | 127d | 0d | Electrical [35 h] | 0.7 | INST | Tank Farm | CON | PCL | WS WT |  |  |  |  |  |  |
| WSC-WT-E&I-1110 |  | Water Treatment Install Conduit |  | 15d | 2027-08-02 | 2027-08-23 | WSC-WT-MEC-1030 | 157.7d | 0d | Electrical [125 h] | 0.833333333333333 | LGT | Tank Farm | CON | PCL | WS WT |  |  |  |  |  |  |
| WSC-WT-E&I-1020 |  | Water Treatment Instrumentation |  | 10d | 2027-08-09 | 2027-08-23 | WSC-WT-E&I-1030 | 152.7d | 0d | Electrical [32 h] | 0.32 | INST | Tank Farm | CON | PCL | WS WT |  |  |  |  |  |  |
| WSC-WT-E&I-1090 |  | Water Treatment Install Inst Conduit |  | 15d | 2027-08-09 | 2027-08-30 | WSC-WT-E&I-1030 | 137.7d | 0d | Electrical [125 h] | 0.833333333333333 | INST | Tank Farm | CON | PCL | WS WT |  |  |  |  |  |  |
| WSC-WT-E&I-1050 |  | Water Treatment Pull Inst Cable to Devices |  | 10d | 2027-08-23 | 2027-09-07 | WSC-WT-E&I-1020 | 152.7d | 15d | Electrical [35 h] | 0.35 | INST | Tank Farm | CON | PCL | WS WT |  |  |  |  |  |  |
| WSC-WT-E&I-1070 |  | Water Treatment Pull Power Cable |  | 20d | 2027-08-23 | 2027-09-21 | WSC-WT-E&I-1000 | 147.7d | 0d | Electrical [225 h] | 1.125 | LV | Tank Farm | CON | PCL | WS WT |  |  |  |  |  |  |
| WSC-WT-E&I-1100 |  | Water Treatment Install Lighting Fixtures |  | 15d | 2027-08-23 | 2027-09-14 | WSC-WT-E&I-1110 | 157.7d | 0d | Electrical [25 h] | 0.166666666666667 | LGT | Tank Farm | CON | PCL | WS WT |  |  |  |  |  |  |
| WSC-WT-E&I-1120 |  | Water Treatment Pull Lighting Cable |  | 15d | 2027-08-23 | 2027-09-14 | WSC-WT-E&I-1110 | 157.7d | 0d | Electrical [65 h] | 0.433333333333333 | LGT | Tank Farm | CON | PCL | WS WT |  |  |  |  |  |  |
| WSC-WT-E&I-1040 |  | Water Treatment Pull Inst Cable (Home Runs) |  | 20d | 2027-08-30 | 2027-09-28 | WSC-WT-E&I-1090, WSC-WT-E&I-1000 | 137.7d | 0d | Electrical [275 h] | 1.375 | INST | Tank Farm | CON | PCL | WS WT |  |  |  |  |  |  |
| WSC-WT-E&I-1130 |  | Water Treatment Terminate Lighting Cables |  | 10d | 2027-09-14 | 2027-09-28 | WSC-WT-E&I-1100, WSC-WT-E&I-1120 | 157.7d | 204.8d | Electrical [86 h] | 0.86 | LGT | Tank Farm | CON | PCL | WS WT |  |  |  |  |  |  |
| WSC-WT-E&I-1080 |  | Water Treatment Terminate Power Cables |  | 15d | 2027-09-21 | 2027-10-12 | WSC-WT-E&I-1070, PCL-WT-E&I-1000 (other project) FF | 147.7d | 194.8d | Electrical [38 h] | 0.253333333333333 | LV | Tank Farm | CON | PCL | WS WT |  |  |  |  |  |  |
| WSC-WT-E&I-1060 |  | Water Treatment Terminate Inst Cables |  | 10d | 2027-09-28 | 2027-10-12 | WSC-WT-E&I-1040, WSC-WT-E&I-1050 | 137.7d | 0d | Electrical [45 h] | 0.45 | INST | Tank Farm | CON | PCL | WS WT |  |  |  |  |  |  |
| WSC-WT-E&I-1010 |  | Water Treatment Loop checks Electrical |  | 10d | 2027-10-12 | 2027-10-26 | WSC-WT-E&I-1060, WSC-WT-E&I-1000, PCL-WT-E&I-1010 (other project) FF | 137.7d | 184.8d | Electrical [65 h] | 0.65 | INST | Tank Farm | CON | PCL | WS WT |  |  |  |  |  |  |
|  | 6 | **Paint and Insulation** |  |  |  |  |  |  |  |  |  |  |  |  |  |  |  |  |  |  |  |  |
|  | 7 | **Subcontractor** |  |  |  |  |  |  |  |  |  |  |  |  |  |  |  |  |  |  |  |  |
|  | 7 | **BOP** |  |  | 2026-09-29 | 2028-07-20 |  |  |  |  |  |  |  |  |  |  |  |  |  |  |  |  |
| WSC-BOP-MEC-1340 |  | Set Hydrogen Storage Tanks |  | 10d | 2026-10-13 | 2026-10-26 | WSC-BOP-MEC-1020, WSC-INT-MIL-1960 | 8.2d | 19d | Mechanical | 0 |  | HY | CON | PCL | WS BOP | FND | CCWA_22 | Mechanical |  |  |  |
| WSC-BOP-PIP-1010 |  | Aux Boiler Building Install Hot Piping LB |  | 50d | 2026-11-23 | 2027-02-05 | WSC-INT-MIL-1990 | 164d | 0d | Pipe [2250 h] | 4.5 |  | Aux Boiler | CON | PCL | WS BOP |  |  |  | Yes |  |  |
| WSC-BOP-PIP-1150 |  | Closed Loop Cooling Install Hot Piping LB |  | 50d | 2026-11-23 | 2027-02-05 | WSC-INT-MIL-1990 | 124d | 0d | Pipe [750 h] | 1.5 |  | CL Cool | CON | PCL | WS BOP |  |  |  | Yes |  |  |
| WSC-BOP-PIP-1210 |  | Fuel Gas Install Hot Piping LB |  | 50d | 2026-11-23 | 2027-02-05 | WSC-INT-MIL-1990 | 144d | 0d | Pipe [875 h] | 1.75 |  | FG Yard | CON | PCL | WS BOP |  |  |  | Yes |  |  |
| WSC-BOP-PIP-1270 |  | H2 Storage Install Hot Piping LB |  | 40d | 2026-11-23 | 2027-01-22 | WSC-BOP-MEC-1340, WSC-INT-MIL-1990, PCL-BOP-PIP-1010 (other project) FF | -10.8d | 0d | Pipe [750 h] | 1.875 |  | HY | CON | PCL | WS BOP |  |  |  | Yes | 1-10 |  |
| WSC-BOP-PIP-1320 |  | Piping Balancing |  | 360d | 2026-12-02 | 2028-05-05 | WSC-HRSG-PIP-1090 SS | -61d | 0d | Pipe [82437 h] | 22.8991666666667 |  |  | CON | PCL | WS BOP |  |  |  |  | 11-30 |  |
| WSC-BOP-CIV-1000 |  | Aux Boiler Misc Equipment Grout |  | 90d | 2027-01-11 | 2027-05-17 | WSC-BOP-MEC-1050 | 249.9d | 297d | Concrete [3500 h] | 3.88888888888889 |  | Aux Boiler | CON | PCL | WS BOP |  |  | Civil |  |  | 0 |
| WSC-BOP-E&I-1020 |  | Aux Boiler Building Install Cable Tray |  | 50d | 2027-01-11 | 2027-03-22 | WSC-BOP-MEC-1050 | -0.8d | 0d | Electrical [2200 h] | 4.4 | CT | Aux Boiler | CON | PCL | WS BOP |  |  |  |  |  |  |
| WSC-BOP-E&I-1310 |  | BFW Building Install BFW Electrical Building |  | 15d | 2027-01-11 | 2027-02-01 | WSC-INT-MIL-1880 | 324.1d | 371.2d | Electrical [75 h] | 0.5 | INST | BFW | CON | PCL | WS BOP |  |  |  |  |  |  |
| WSC-BOP-E&I-1940 |  | H2 Storage Install Cable Tray |  | 50d | 2027-01-25 | 2027-04-05 | WSC-BOP-PIP-1270 | -10.8d | 0d | Electrical [2200 h] | 4.4 | CT | HY | CON | PCL | WS BOP |  |  |  |  | 1-10 |  |
| WSC-BOP-PIP-1260 |  | H2 Storage Install Cold Piping LB |  | 20d | 2027-01-25 | 2027-02-22 | WSC-BOP-PIP-1270 | 149d | 0d | Pipe [350 h] | 1.75 |  | HY | CON | PCL | WS BOP |  |  |  | Yes |  |  |
| WSC-BOP-MEC-1420 |  | Set Emergency Diesel Generator |  | 10d | 2027-02-05 | 2027-02-19 | WSC-INT-MIL-1860, WSC-INT-MIL-1650 | -29.8d | 0d | Mechanical | 0 |  | BOP Elect | CON | PCL | WS BOP | FND | CCWA_07 | Mechanical |  |  |  |
| WSC-BOP-PIP-1000 |  | Aux Boiler Building Install Cold Piping LB |  | 20d | 2027-02-08 | 2027-03-08 | WSC-BOP-PIP-1010 | 164d | 0d | Pipe [350 h] | 1.75 |  | Aux Boiler | CON | PCL | WS BOP |  |  |  | Yes |  |  |
| WSC-BOP-PIP-1030 |  | Aux Boiler Building Install Hot Piping SB |  | 20d | 2027-02-08 | 2027-03-08 | WSC-INT-MIL-1690, WSC-BOP-PIP-1010 | 164d | 0d | Pipe [300 h] | 1.5 |  | Aux Boiler | CON | PCL | WS BOP |  |  |  | Yes |  |  |
| WSC-BOP-PIP-1140 |  | Closed Loop Cooling nstall Cold Piping LB |  | 20d | 2027-02-08 | 2027-03-08 | WSC-BOP-PIP-1150 | 124d | 0d | Pipe [350 h] | 1.75 |  | CL Cool | CON | PCL | WS BOP |  |  |  | Yes |  |  |
| WSC-BOP-PIP-1170 |  | Closed Loop Cooling Install Hot Piping SB |  | 20d | 2027-02-08 | 2027-03-08 | WSC-INT-MIL-1690, WSC-BOP-PIP-1150 | 124d | 0d | Pipe [300 h] | 1.5 |  | CL Cool | CON | PCL | WS BOP |  |  |  | Yes |  |  |
| WSC-BOP-PIP-1200 |  | Fuel Gas Install Cold Piping LB |  | 20d | 2027-02-08 | 2027-03-08 | WSC-BOP-PIP-1210 | 144d | 0d | Pipe [350 h] | 1.75 |  | FG Yard | CON | PCL | WS BOP |  |  |  | Yes |  |  |
| WSC-BOP-PIP-1230 |  | Fuel Gas Install Hot Piping SB |  | 20d | 2027-02-08 | 2027-03-08 | WSC-INT-MIL-1690, WSC-BOP-PIP-1210 | 144d | 0d | Pipe [300 h] | 1.5 |  | FG Yard | CON | PCL | WS BOP |  |  |  | Yes |  |  |
| WSC-BOP-PIP-1290 |  | H2 Storage Install Hot Piping SB |  | 20d | 2027-02-08 | 2027-03-08 | WSC-INT-MIL-1690, WSC-BOP-PIP-1270 | 164d | 0d | Pipe [300 h] | 1.5 |  | HY | CON | PCL | WS BOP |  |  |  | Yes |  |  |
| WSC-BOP-E&I-1340 |  | BOP Electrical Building Install Cable Tray |  | 50d | 2027-02-22 | 2027-04-30 | WSC-BOP-MEC-1420 | -29.8d | 0d | Electrical [2200 h] | 4.4 | CT | BOP Elect | CON | PCL | WS BOP |  |  |  |  |  |  |
| WSC-BOP-E&I-2070 |  | Electrical Balancing | level of effort | 358d | 2027-02-22 | 2028-07-20 | WSC-BOP-E&I-1340 SS | -43d | 0d | Electrical [11349 h] | 3.24257142857143 |  |  | CON | PCL | WS BOP |  |  |  |  |  |  |
| WSC-BOP-PIP-1280 |  | H2 Storage Install Cold Piping SB |  | 30d | 2027-02-23 | 2027-04-05 | WSC-BOP-PIP-1260 | 149d | 0d | Pipe [750 h] | 2.5 |  | HY | CON | PCL | WS BOP |  |  |  | Yes |  |  |
| WSC-BOP-PIP-1020 |  | Aux Boiler Building Install Cold Piping SB |  | 30d | 2027-03-09 | 2027-04-19 | WSC-BOP-PIP-1000 | 184d | 20d | Pipe [750 h] | 2.5 |  | Aux Boiler | CON | PCL | WS BOP |  |  |  | Yes |  |  |
| WSC-BOP-PIP-1040 |  | Aux Boiler Building Test Hot Piping |  | 50d | 2027-03-09 | 2027-05-17 | WSC-BOP-PIP-1000, WSC-BOP-PIP-1030 | 164d | 0d | Pipe [450 h] | 0.9 |  | Aux Boiler | CON | PCL | WS BOP |  |  |  | Yes |  |  |
| WSC-BOP-PIP-1160 |  | Closed Loop Cooling Install Cold Piping SB |  | 30d | 2027-03-09 | 2027-04-19 | WSC-BOP-PIP-1140 | 144d | 169d | Pipe [750 h] | 2.5 |  | CL Cool | CON | PCL | WS BOP |  |  |  | Yes |  |  |
| WSC-BOP-PIP-1180 |  | Closed Loop Cooling Test Hot Piping |  | 50d | 2027-03-09 | 2027-05-17 | WSC-BOP-PIP-1140, WSC-BOP-PIP-1170 | 124d | 149d | Pipe [450 h] | 0.9 |  | CL Cool | CON | PCL | WS BOP |  |  |  | Yes |  |  |
| WSC-BOP-PIP-1220 |  | Fuel Gas Install Cold Piping SB |  | 30d | 2027-03-09 | 2027-04-19 | WSC-BOP-PIP-1200 | 164d | 189d | Pipe [750 h] | 2.5 |  | FG Yard | CON | PCL | WS BOP |  |  |  | Yes |  |  |
| WSC-BOP-PIP-1240 |  | Fuel Gas Test Hot Piping |  | 50d | 2027-03-09 | 2027-05-17 | WSC-BOP-PIP-1200, WSC-BOP-PIP-1230 | 144d | 169d | Pipe [450 h] | 0.9 |  | FG Yard | CON | PCL | WS BOP |  |  |  | Yes |  |  |
| WSC-BOP-PIP-1300 |  | H2 Storage Test Hot Piping |  | 50d | 2027-03-09 | 2027-05-17 | WSC-BOP-PIP-1260, WSC-BOP-PIP-1290 | 164d | 189d | Pipe [450 h] | 0.9 |  | HY | CON | PCL | WS BOP |  |  |  | Yes |  |  |
| WSC-BOP-CIV-1030 |  | Electrical Area Misc Equipment Grout |  | 45d | 2027-03-22 | 2027-05-21 | WSC-BOP-MEC-1140 | 245.9d | 293d | Concrete [850 h] | 1.88888888888889 |  | BOP Elect | CON | PCL | WS BOP |  |  | Civil |  |  | 0 |
| WSC-BOP-E&I-1000 |  | Aux Boiler Building Install Power Conduit |  | 80d | 2027-03-23 | 2027-07-14 | WSC-BOP-E&I-1020 | 99.9d | 0d | Electrical [2500 h] | 3.125 | LV | Aux Boiler | CON | PCL | WS BOP |  |  |  |  |  |  |
| WSC-BOP-E&I-1040 |  | Aux Boiler Building Install Junction Boxes |  | 40d | 2027-03-23 | 2027-05-17 | WSC-BOP-E&I-1020 | 19.2d | 0d | Electrical [250 h] | 0.625 | INST | Aux Boiler | CON | PCL | WS BOP |  |  |  |  |  |  |
| WSC-BOP-E&I-1120 |  | Aux Boiler Building Lighting Install Conduit |  | 80d | 2027-03-23 | 2027-07-14 | WSC-BOP-E&I-1020 | 114d | 0d | Electrical [2200 h] | 2.75 | LGT | Aux Boiler | CON | PCL | WS BOP |  |  |  |  |  |  |
| WSC-BOP-MEC-1000 |  | Install Air Hoting Unit |  | 10d | 2027-03-31 | 2027-04-14 | WSC-BOP-MEC-1440, WSC-INT-MIL-1290 | -27.2d | 320.6d | Mechanical [100 h] | 1 |  | CT Off | CON | PCL | WS BOP | FND | CCWA_02 | Mechanical |  |  |  |
| WSC-BOP-CIV-1080 |  | H2 Storage Misc Equipment Grout |  | 45d | 2027-04-06 | 2027-06-08 | WSC-BOP-MEC-1340, WSC-BOP-PIP-1280 | 149d | 174d | Concrete [255 h] | 0.566666666666667 |  | HY | CON | PCL | WS BOP |  |  | Civil |  |  | 0 |
| WSC-BOP-E&I-1920 |  | H2 Storage Install Power Conduit |  | 70d | 2027-04-06 | 2027-07-14 | WSC-BOP-E&I-1940 | 109d | 0d | Electrical [2500 h] | 3.57142857142857 | LV | HY | CON | PCL | WS BOP |  |  |  |  | 11-30 |  |
| WSC-BOP-E&I-1960 |  | H2 Storage Install Junction Boxes |  | 40d | 2027-04-06 | 2027-06-01 | WSC-BOP-E&I-1940 | 99d | 0d | Electrical [250 h] | 0.625 | INST | HY | CON | PCL | WS BOP |  |  |  |  | 1-10 |  |
| WSC-BOP-E&I-2040 |  | H2 Storage Lighting Install Conduit |  | 80d | 2027-04-06 | 2027-07-28 | WSC-BOP-E&I-1940 | 109d | 0d | Electrical [2200 h] | 2.75 | LGT | HY | CON | PCL | WS BOP |  |  |  |  | 11-30 |  |
| WSC-BOP-CIV-1070 |  | Fuel Gas Misc Equipment Grout |  | 85d | 2027-04-23 | 2027-08-23 | WSC-BOP-MEC-1310 | 181.9d | 229d | Concrete [1555 h] | 1.82941176470588 |  | FG Yard | CON | PCL | WS BOP |  |  | Civil |  |  | 0 |
| WSC-BOP-E&I-1790 |  | Fuel Gas Install Cable Tray |  | 50d | 2027-04-23 | 2027-07-02 | WSC-BOP-MEC-1310 | -73.8d | 0d | Electrical [2200 h] | 4.4 | CT | FG Yard | CON | PCL | WS BOP |  |  |  |  |  |  |
| WSC-BOP-E&I-1320 |  | BOP Electrical Building Install Power Conduit |  | 80d | 2027-05-03 | 2027-08-24 | WSC-BOP-E&I-1340 | 70.9d | 0d | Electrical [2500 h] | 3.125 | LV | BOP Elect | CON | PCL | WS BOP |  |  |  |  |  |  |
| WSC-BOP-E&I-1360 |  | BOP Electrical Building Install Junction Boxes |  | 40d | 2027-05-03 | 2027-06-28 | WSC-BOP-E&I-1340 | 70.9d | 0d | Electrical [250 h] | 0.625 | INST | BOP Elect | CON | PCL | WS BOP |  |  |  |  |  |  |
| WSC-BOP-E&I-1440 |  | BOP Electrical Building Lighting Install Conduit |  | 80d | 2027-05-03 | 2027-08-24 | WSC-BOP-E&I-1340 | 85d | 0d | Electrical [2200 h] | 2.75 | LGT | BOP Elect | CON | PCL | WS BOP |  |  |  |  |  |  |
| WSC-BOP-E&I-1030 |  | Aux Boiler Building Instrumentation |  | 30d | 2027-05-18 | 2027-06-29 | WSC-BOP-E&I-1040 | 139.9d | 0d | Electrical [450 h] | 1.5 | INST | Aux Boiler | CON | PCL | WS BOP |  |  |  |  |  |  |
| WSC-BOP-E&I-1100 |  | Aux Boiler Building Install Inst Conduit |  | 40d | 2027-05-18 | 2027-07-14 | WSC-BOP-E&I-1040 | 99.9d | 0d | Electrical [800 h] | 2 | INST | Aux Boiler | CON | PCL | WS BOP |  |  |  |  |  |  |
| WSC-BOP-PIP-1050 |  | Aux Boiler Building Test Cold Piping |  | 20d | 2027-05-18 | 2027-06-15 | WSC-BOP-PIP-1040, WSC-BOP-PIP-1020 | 164d | 80d | Pipe [850 h] | 4.25 |  | Aux Boiler | CON | PCL | WS BOP |  |  |  | Yes |  |  |
| WSC-BOP-E&I-1170 |  | BFW Building Install Cable Tray |  | 20d | 2027-06-01 | 2027-06-28 | WSC-BOP-STL-1010 | -39.8d | 0d | Electrical [875 h] | 4.375 | CT | BFW | CON | PCL | WS BOP |  |  |  |  |  |  |
| WSC-BOP-PIP-1070 |  | BFW Building Install Hot Piping LB |  | 50d | 2027-06-01 | 2027-08-10 | WSC-BOP-STL-1010 FF, WSC-BOP-STL-1010, WSC-INT-MIL-1990 | -25d | 0d | Pipe [750 h] | 1.5 |  | BFW | CON | PCL | WS BOP |  |  |  | Yes | 1-10 |  |

| ID | Activity | Duration | Start | Finish | Predecessors | Total float | Free float | Resources | Crew Size | WS Power Train Center Line | WS Sub Area | WS EPC | WS Resp | WS Area | WS System | WS Float Path | zInteger_01 | WS Discipline |
| --- | --- | --- | --- | --- | --- | --- | --- | --- | --- | --- | --- | --- | --- | --- | --- | --- | --- | --- |
| WSC-BOP-PIP-1120 | BFW Building Install High Energy Piping LB | 60d | 2027-06-01 | 2027-08-24 | WSC-BOP-STL-1010, WSC-INT-MIL-1680 | 15d | 0d | Pipe [4450 h] | 7.41666666666667 | Yes | BFW | CON | PCL | WS BOP |  |  |  |  |
| WSC-BOP-STL-1020 | Install MES and MPS In BFW Building | 20d | 2027-06-01 | 2027-06-28 | WSC-BOP-STL-1010 | 175.9d | 35d | Structural Steel [255 h] | 1.275 |  | BFW | CON | PCL | WS BOP |  |  |  |  |
| WSC-BOP-E&I-1950 | H2 Storage Instrumentation | 30d | 2027-06-02 | 2027-07-14 | WSC-BOP-E&I-1960 | 139d | 0d | Electrical [450 h] | 1.5 |  | HY | CON | PCL | WS BOP | INST |  |  |  |
| WSC-BOP-E&I-2020 | H2 Storage Install Inst Conduit | 40d | 2027-06-02 | 2027-07-28 | WSC-BOP-E&I-1960 | 99d | 0d | Electrical [800 h] | 2 |  | HY | CON | PCL | WS BOP | INST | 1-10 |  |  |
| WSC-BOP-CIV-1040 | Water Treatnent Misc Equipment Grout | 45d | 2027-06-04 | 2027-08-06 | WSC-BOP-MEC-1150 | 112.9d | 0d | Concrete [650 h] | 1.44444444444444 |  | CL Cool | CON | PCL | WS BOP |  |  | 0 | Civil |
| WSC-BOP-E&I-1490 | Closed Loop Cooling Install Cable Tray | 40d | 2027-06-04 | 2027-07-30 | WSC-BOP-MEC-1150 | -82.8d | 0d | Electrical [2200 h] | 4.4 |  | CL Cool | CON | PCL | WS BOP | CT | 11-30 |  |  |
| WSC-BOP-E&I-1300 | BFW Building Install Instrument Tubing | 20d | 2027-06-08 | 2027-07-06 | WSC-HRSG-MEC-1080 | 190d | 157.1d | Electrical [185 h] | 0.925 |  | BFW | CON | PCL | WS BOP | LV |  |  |  |
| WSC-BOP-E&I-1640 | Electrical Switch Yard Install Cable Tray | 50d | 2027-06-08 | 2027-08-17 | WSC-BOP-MEC-1220 | -104.8d | 0d | Electrical [2200 h] | 4.4 |  | Elect Yard | CON | PCL | WS BOP | CT |  |  |  |
| WSC-BOP-CIV-1010 | Misc Equipment Grout BFW Building | 45d | 2027-06-15 | 2027-08-17 | WSC-BOP-MEC-1080 | 140.9d | 0d | Concrete [1265 h] | 2.81111111111111 |  | BFW | CON | PCL | WS BOP |  |  | 0 | Civil |
| WSC-BOP-E&I-1150 | BFW Building Install Power Conduit | 25d | 2027-06-29 | 2027-08-03 | WSC-BOP-E&I-1170 | 80d | 0d | Electrical [265 h] | 1.06 |  | BFW | CON | PCL | WS BOP | LV |  |  |  |
| WSC-BOP-E&I-1190 | BFW Building Install Junction Boxes | 15d | 2027-06-29 | 2027-07-20 | WSC-BOP-E&I-1170 | 100d | 0d | Electrical [75 h] | 0.5 |  | BFW | CON | PCL | WS BOP | INST |  |  |  |
| WSC-BOP-E&I-1270 | BFW Building Lighting Install Conduit | 40d | 2027-06-29 | 2027-08-24 | WSC-BOP-E&I-1170 | 95d | 0d | Electrical [265 h] | 0.6625 |  | BFW | CON | PCL | WS BOP | LGT |  |  |  |
| WSC-BOP-E&I-1350 | BOP Electrical Building Instrumentation | 30d | 2027-06-29 | 2027-08-10 | WSC-BOP-E&I-1360 | 110.9d | 0d | Electrical [450 h] | 1.5 |  | BOP Elect | CON | PCL | WS BOP | INST |  |  |  |
| WSC-BOP-E&I-1420 | BOP Electrical Building Install Inst Conduit | 40d | 2027-06-29 | 2027-08-24 | WSC-BOP-E&I-1360 | 70.9d | 0d | Electrical [800 h] | 2 |  | BOP Elect | CON | PCL | WS BOP | INST |  |  |  |
| WSC-BOP-E&I-1060 | Aux Boiler Building Pull Inst Cable to Devices | 15d | 2027-06-30 | 2027-07-21 | WSC-BOP-E&I-1030 | 139.9d | 40d | Electrical [450 h] | 3 |  | Aux Boiler | CON | PCL | WS BOP | INST |  |  |  |
| WSC-BOP-E&I-1770 | Fuel Gas Install Power Conduit | 80d | 2027-07-06 | 2027-10-26 | WSC-BOP-E&I-1790 | 26d | 0d | Electrical [2500 h] | 3.125 |  | FG Yard | CON | PCL | WS BOP | LV |  |  |  |
| WSC-BOP-E&I-1810 | Fuel Gas Install Junction Boxes | 40d | 2027-07-06 | 2027-08-30 | WSC-BOP-E&I-1790 | 26d | 0d | Electrical [250 h] | 0.625 |  | FG Yard | CON | PCL | WS BOP | INST |  |  |  |
| WSC-BOP-E&I-1890 | Fuel Gas Lighting Install Conduit | 80d | 2027-07-06 | 2027-10-26 | WSC-BOP-E&I-1790 | 41d | 0d | Electrical [2200 h] | 2.75 |  | FG Yard | CON | PCL | WS BOP | LGT |  |  |  |
| WSC-BOP-E&I-1050 | Aux Boiler Building Pull Inst Cable (Home Runs) | 45d | 2027-07-15 | 2027-09-16 | WSC-BOP-E&I-1100, WSC-BOP-E&I-1000 | 99.9d | 0d | Electrical [2600 h] | 5.77777777777778 |  | Aux Boiler | CON | PCL | WS BOP | INST |  |  |  |
| WSC-BOP-E&I-1080 | Aux Boiler Building Pull Power Cable | 45d | 2027-07-15 | 2027-09-16 | WSC-BOP-E&I-1000 | 119d | 0d | Electrical [2200 h] | 4.88888888888889 |  | Aux Boiler | CON | PCL | WS BOP | LV |  |  |  |
| WSC-BOP-E&I-1110 | Aux Boiler Building Install Lighting Fixtures | 50d | 2027-07-15 | 2027-09-23 | WSC-BOP-E&I-1120 | 114d | 0d | Electrical [600 h] | 1.2 |  | Aux Boiler | CON | PCL | WS BOP | LGT |  |  |  |
| WSC-BOP-E&I-1130 | Aux Boiler Building Pull Lighting Cable | 45d | 2027-07-15 | 2027-09-16 | WSC-BOP-E&I-1120 | 119d | 5d | Electrical [1100 h] | 2.44444444444444 |  | Aux Boiler | CON | PCL | WS BOP | LGT |  |  |  |
| WSC-BOP-E&I-1980 | H2 Storage Pull Inst Cable to Devices | 15d | 2027-07-15 | 2027-08-04 | WSC-BOP-E&I-1950 | 139d | 40d | Electrical [450 h] | 3 |  | HY | CON | PCL | WS BOP | INST |  |  |  |
| WSC-BOP-E&I-2000 | H2 Storage Pull Power Cable | 45d | 2027-07-15 | 2027-09-16 | WSC-BOP-E&I-1920 | 119d | 0d | Electrical [2200 h] | 4.88888888888889 |  | HY | CON | PCL | WS BOP | LV | 11-30 |  |  |
| WSC-BOP-E&I-1180 | BFW Building Instrumentation | 30d | 2027-07-21 | 2027-08-31 | WSC-BOP-E&I-1190 | 120d | 0d | Electrical [85 h] | 0.283333333333333 |  | BFW | CON | PCL | WS BOP | INST |  |  |  |
| WSC-BOP-E&I-1250 | BFW Building Install Inst Conduit | 40d | 2027-07-21 | 2027-09-15 | WSC-BOP-E&I-1190 | 100d | 0d | Electrical [105 h] | 0.2625 |  | BFW | CON | PCL | WS BOP | INST |  |  |  |
| WSC-BOP-E&I-1970 | H2 Storage Pull Inst Cable (Home Runs) | 45d | 2027-07-29 | 2027-09-30 | WSC-BOP-E&I-2020, WSC-BOP-E&I-1920 | 99d | 0d | Electrical [2600 h] | 5.77777777777778 |  | HY | CON | PCL | WS BOP | INST | 1-10 |  |  |
| WSC-BOP-E&I-2030 | H2 Storage Install Lighting Fixtures | 50d | 2027-07-29 | 2027-10-07 | WSC-BOP-E&I-2040 | 109d | 0d | Electrical [600 h] | 1.2 |  | HY | CON | PCL | WS BOP | LGT | 11-30 |  |  |
| WSC-BOP-E&I-2050 | H2 Storage Pull Lighting Cable | 45d | 2027-07-29 | 2027-09-30 | WSC-BOP-E&I-2040 | 114d | 5d | Electrical [1100 h] | 2.44444444444444 |  | HY | CON | PCL | WS BOP | LGT | 11-30 |  |  |
| WSC-BOP-E&I-1470 | Closed Loop Cooling Install Power Conduit | 75d | 2027-08-02 | 2027-11-15 | WSC-BOP-E&I-1490 | 12d | 0d | Electrical [2500 h] | 3.125 |  | CL Cool | CON | PCL | WS BOP | LV | 11-30 |  |  |
| WSC-BOP-E&I-1510 | Closed Loop Cooling Install Junction Boxes | 35d | 2027-08-02 | 2027-09-20 | WSC-BOP-E&I-1490 | 12d | 0d | Electrical [250 h] | 0.625 |  | CL Cool | CON | PCL | WS BOP | INST | 11-30 |  |  |
| WSC-BOP-E&I-1590 | Closed Loop Cooling Lighting Install Conduit | 80d | 2027-08-02 | 2027-11-22 | WSC-BOP-E&I-1490 | 22d | 0d | Electrical [2200 h] | 2.75 |  | CL Cool | CON | PCL | WS BOP | LGT | 11-30 |  |  |
| WSC-BOP-E&I-1230 | BFW Building Pull Power Cable | 45d | 2027-08-04 | 2027-10-06 | WSC-BOP-E&I-1150 | 80d | 47.1d | Electrical [165 h] | 0.366666666666667 |  | BFW | CON | PCL | WS BOP | LV |  |  |  |
| WSC-BOP-CIV-1050 | Water Treatnent Misc Equipment Grout | 80d | 2027-08-09 | 2027-12-01 | WSC-BOP-CIV-1040 | 112.9d | 160d | Concrete [4500 h] | 5.625 |  | CL Cool | CON | PCL | WS BOP |  |  | 0 | Civil |
| WSC-BOP-E&I-1380 | BOP Electrical Building Pull Inst Cable to Devices | 15d | 2027-08-11 | 2027-08-31 | WSC-BOP-E&I-1350 | 110.9d | 40d | Electrical [450 h] | 3 |  | BOP Elect | CON | PCL | WS BOP | INST |  |  |  |
| WSC-BOP-PIP-1060 | BFW Building Install Cold Piping LB | 20d | 2027-08-11 | 2027-09-08 | WSC-BOP-PIP-1070 | -25d | 0d | Pipe [350 h] | 1.75 | Yes | BFW | CON | PCL | WS BOP |  | 1-10 |  |  |
| WSC-BOP-PIP-1090 | BFW Building Install Hot Piping SB | 20d | 2027-08-11 | 2027-09-08 | WSC-INT-MIL-1690, WSC-BOP-PIP-1070 | -25d | 0d | Pipe [300 h] | 1.5 | Yes | BFW | CON | PCL | WS BOP |  | 1-10 |  |  |
| WSC-BOP-CIV-1020 | Grout MES & MPS BFW Building | 45d | 2027-08-18 | 2027-10-20 | WSC-BOP-STL-1020, WSC-BOP-CIV-1010 | 140.9d | 188d | Concrete [265 h] | 0.588888888888889 |  | BFW | CON | PCL | WS BOP |  |  | 0 | Civil |
| WSC-BOP-E&I-1620 | Electrical Switch Yard Install Power Conduit | 80d | 2027-08-18 | 2027-12-10 | WSC-BOP-E&I-1640 | -4.1d | 0d | Electrical [2500 h] | 3.125 |  | Elect Yard | CON | PCL | WS BOP | LV |  |  |  |
| WSC-BOP-E&I-1660 | Electrical Switch Yard Install Junction Boxes | 40d | 2027-08-18 | 2027-10-13 | WSC-BOP-E&I-1640 | -4.1d | 0d | Electrical [250 h] | 0.625 |  | Elect Yard | CON | PCL | WS BOP | INST |  |  |  |
| WSC-BOP-E&I-1740 | Electrical Switch Yard Lighting Install Conduit | 80d | 2027-08-18 | 2027-12-10 | WSC-BOP-E&I-1640 | 10d | 0d | Electrical [2200 h] | 2.75 |  | Elect Yard | CON | PCL | WS BOP | LGT |  |  |  |
| WSC-BOP-E&I-1260 | BFW Building Install Lighting Fixtures | 20d | 2027-08-25 | 2027-09-22 | WSC-BOP-E&I-1270 | 110d | 15d | Electrical [45 h] | 0.225 |  | BFW | CON | PCL | WS BOP | LGT |  |  |  |
| WSC-BOP-E&I-1280 | BFW Building Pull Lighting Cable | 35d | 2027-08-25 | 2027-10-13 | WSC-BOP-E&I-1270 | 95d | 0d | Electrical [125 h] | 0.357142857142857 |  | BFW | CON | PCL | WS BOP | LGT |  |  |  |
| WSC-BOP-E&I-1370 | BOP Electrical Building Pull Inst Cable (Home Runs) | 45d | 2027-08-25 | 2027-10-27 | WSC-BOP-E&I-1420, WSC-BOP-E&I-1320 | 70.9d | 0d | Electrical [2600 h] | 5.77777777777778 |  | BOP Elect | CON | PCL | WS BOP | INST |  |  |  |
| WSC-BOP-E&I-1400 | BOP Electrical Building Pull Power Cable | 45d | 2027-08-25 | 2027-10-27 | WSC-BOP-E&I-1320 | 90d | 0d | Electrical [2200 h] | 4.88888888888889 |  | BOP Elect | CON | PCL | WS BOP | LV |  |  |  |
| WSC-BOP-E&I-1430 | BOP Electrical Building Install Lighting Fixtures | 50d | 2027-08-25 | 2027-11-03 | WSC-BOP-E&I-1440 | 85d | 0d | Electrical [600 h] | 1.2 |  | BOP Elect | CON | PCL | WS BOP | LGT |  |  |  |
| WSC-BOP-E&I-1450 | BOP Electrical Building Pull Lighting Cable | 45d | 2027-08-25 | 2027-10-27 | WSC-BOP-E&I-1440 | 90d | 5d | Electrical [1100 h] | 2.44444444444444 |  | BOP Elect | CON | PCL | WS BOP | LGT |  |  |  |
| WSC-BOP-PIP-1130 | BFW Building Test High Energy Piping | 20d | 2027-08-25 | 2027-09-22 | WSC-BOP-PIP-1120, PCL-BOP-PIP-1000 (other project) SS | 15d | 40d | Pipe [500 h] | 2.5 | Yes | BFW | CON | PCL | WS BOP |  |  |  |  |
| WSC-BOP-E&I-1800 | Fuel Gas Instrumentation | 30d | 2027-08-31 | 2027-10-12 | WSC-BOP-E&I-1810 | 66d | 0d | Electrical [450 h] | 1.5 |  | FG Yard | CON | PCL | WS BOP | INST |  |  |  |
| WSC-BOP-E&I-1870 | Fuel Gas Install Inst Conduit | 40d | 2027-08-31 | 2027-10-26 | WSC-BOP-E&I-1810 | 26d | 0d | Electrical [800 h] | 2 |  | FG Yard | CON | PCL | WS BOP | INST |  |  |  |
| WSC-BOP-E&I-1210 | BFW Building Pull Inst Cable to Devices | 15d | 2027-09-01 | 2027-09-22 | WSC-BOP-E&I-1180 | 120d | 20d | Electrical [90 h] | 0.6 |  | BFW | CON | PCL | WS BOP | INST |  |  |  |
| WSC-BOP-PIP-1080 | BFW Building Install Cold Piping SB | 30d | 2027-09-09 | 2027-10-20 | WSC-INT-MIL-1690, WSC-BOP-PIP-1060 | -5d | 20d | Pipe [750 h] | 2.5 | Yes | BFW | CON | PCL | WS BOP |  | 11-30 |  |  |
| WSC-BOP-PIP-1100 | BFW Building Test Hot Piping | 50d | 2027-09-09 | 2027-11-17 | WSC-BOP-PIP-1060, WSC-BOP-PIP-1090 | -25d | 0d | Pipe [450 h] | 0.9 | Yes | BFW | CON | PCL | WS BOP |  | 1-10 |  |  |
| WSC-BOP-E&I-1200 | BFW Building Pull Inst Cable (Home Runs) | 25d | 2027-09-16 | 2027-10-20 | WSC-BOP-E&I-1250, WSC-BOP-E&I-1150 | 100d | 0d | Electrical [125 h] | 0.5 |  | BFW | CON | PCL | WS BOP | INST |  |  |  |
| WSC-BOP-E&I-1070 | Aux Boiler Building Terminate Inst Cables | 15d | 2027-09-17 | 2027-10-07 | WSC-BOP-E&I-1050, WSC-BOP-E&I-1060 | 99.9d | 0d | Electrical [600 h] | 4 |  | Aux Boiler | CON | PCL | WS BOP | INST |  |  |  |
| WSC-BOP-E&I-1090 | Aux Boiler Building Terminate Power Cables | 45d | 2027-09-17 | 2027-11-18 | WSC-BOP-E&I-1080 | 119d | 167d | Electrical [600 h] | 1.33333333333333 |  | Aux Boiler | CON | PCL | WS BOP | LV |  |  |  |
| WSC-BOP-E&I-2010 | H2 Storage Terminate Power Cables | 45d | 2027-09-17 | 2027-11-18 | WSC-BOP-E&I-2000 | 119d | 167d | Electrical [600 h] | 1.33333333333333 |  | HY | CON | PCL | WS BOP | LV | 11-30 |  |  |
| WSC-BOP-E&I-1500 | Closed Loop Cooling Instrumentation | 30d | 2027-09-21 | 2027-11-01 | WSC-BOP-E&I-1510 | 52d | 0d | Electrical [450 h] | 1.5 |  | CL Cool | CON | PCL | WS BOP | INST |  |  |  |
| WSC-BOP-E&I-1570 | Closed Loop Cooling Install Inst Conduit | 40d | 2027-09-21 | 2027-11-15 | WSC-BOP-E&I-1510 | 12d | 0d | Electrical [800 h] | 2 |  | CL Cool | CON | PCL | WS BOP | INST | 11-30 |  |  |
| WSC-BOP-E&I-1140 | Aux Boiler Building Terminate Lighting Cables | 45d | 2027-09-24 | 2027-11-29 | WSC-BOP-E&I-1110, WSC-BOP-E&I-1130 | 114d | 162d | Electrical [400 h] | 0.888888888888889 |  | Aux Boiler | CON | PCL | WS BOP | LGT |  |  |  |
| WSC-BOP-E&I-1990 | H2 Storage Terminate Inst Cables | 15d | 2027-10-01 | 2027-10-21 | WSC-BOP-E&I-1970, WSC-BOP-E&I-1980 | 99d |  | Electrical [600 h] | 4 |  | HY | CON | PCL | WS BOP | INST | 1-10 |  |  |
| WSC-BOP-E&I-1010 | Aux Boiler Bulding Loop checks Electrical | 50d | 2027-10-08 | 2027-12-20 | WSC-BOP-PIP-1050, WSC-BOP-E&I-1070, WSC-BOP-E&I-1000 | 99.9d | 147d | Electrical [850 h] | 1.7 |  | Aux Boiler | CON | PCL | WS BOP | INST |  |  |  |
| WSC-BOP-E&I-2060 | H2 Storage Terminate Lighting Cables | 40d | 2027-10-08 | 2027-12-06 | WSC-BOP-E&I-2030, WSC-BOP-E&I-2050 | 109d | 157d | Electrical [400 h] | 0.888888888888889 |  | HY | CON | PCL | WS BOP | LGT | 11-30 |  |  |
| WSC-BOP-E&I-1830 | Fuel Gas Pull Inst Cable to Devices | 15d | 2027-10-13 | 2027-11-02 | WSC-BOP-E&I-1800 | 66d | 40d | Electrical [450 h] | 3 |  | FG Yard | CON | PCL | WS BOP | INST |  |  |  |
| WSC-BOP-E&I-1290 | BFW Building Terminate Lighting Cables | 25d | 2027-10-14 | 2027-11-17 | WSC-BOP-E&I-1260, WSC-BOP-E&I-1280 | 95d | 62.1d | Electrical [175 h] | 0.7 |  | BFW | CON | PCL | WS BOP | LGT |  |  |  |
| WSC-BOP-E&I-1650 | Electrical Switch Yard Instrumentation | 30d | 2027-10-14 | 2027-11-24 | WSC-BOP-E&I-1660 | 35.9d | 0d | Electrical [450 h] | 1.5 |  | Elect Yard | CON | PCL | WS BOP | INST |  |  |  |
| WSC-BOP-E&I-1720 | Electrical Switch Yard Install Inst Conduit | 40d | 2027-10-14 | 2027-12-10 | WSC-BOP-E&I-1660 | -4.1d | 0d | Electrical [800 h] | 2 |  | Elect Yard | CON | PCL | WS BOP | INST |  |  |  |
| WSC-BOP-E&I-1220 | BFW Building Terminate Inst Cables | 15d | 2027-10-21 | 2027-11-10 | WSC-BOP-E&I-1200, WSC-BOP-E&I-1210 | 100d | 67.1d | Electrical [125 h] | 0.833333333333333 |  | BFW | CON | PCL | WS BOP | INST |  |  |  |
| WSC-BOP-E&I-1820 | Fuel Gas Pull Inst Cable (Home Runs) | 45d | 2027-10-27 | 2028-01-04 | WSC-BOP-E&I-1870, WSC-BOP-E&I-1770 | 26d | 0d | Electrical [2600 h] | 5.77777777777778 |  | FG Yard | CON | PCL | WS BOP | INST |  |  |  |
| WSC-BOP-E&I-1850 | Fuel Gas Pull Power Cable | 45d | 2027-10-27 | 2028-01-04 | WSC-BOP-E&I-1770 | 46d | 0d | Electrical [2200 h] | 4.88888888888889 |  | FG Yard | CON | PCL | WS BOP | LV |  |  |  |

| ID | Activity | Duration | Start | Finish | Predecessors | Total float | Free float | Resources | Crew Size | WS System | WS Sub Area | WS EPC | WS Resp | WS Area | WS Equipment Set | WS CCWA Area | WS Discipline | WS Float Path | WS Power Train Center Line | zInteger_01 |
| --- | --- | --- | --- | --- | --- | --- | --- | --- | --- | --- | --- | --- | --- | --- | --- | --- | --- | --- | --- | --- |
| WSC-BOP-E&I-1880 | Fuel Gas Install Lighting Fixtures | 50d | 2027-10-27 | 2028-01-11 | WSC-BOP-E&I-1890 | 41d | 0d | Electrical [600 h] | 1.2 | LGT | FG Yard | CON | PCL | WS BOP |  |  |  |  |  |  |
| WSC-BOP-E&I-1900 | Fuel Gas Pull Lighting Cable | 45d | 2027-10-27 | 2028-01-04 | WSC-BOP-E&I-1890 | 46d | 5d | Electrical [1100 h] | 2.44444444444444 | LGT | FG Yard | CON | PCL | WS BOP |  |  |  |  |  |  |
| WSC-BOP-E&I-1390 | BOP Electrical Building Terminate Inst Cables | 15d | 2027-10-28 | 2027-11-17 | WSC-BOP-E&I-1370, WSC-BOP-E&I-1380 | 70.9d | 0d | Electrical [600 h] | 4 | INST | BOP Elect | CON | PCL | WS BOP |  |  |  |  |  |  |
| WSC-BOP-E&I-1410 | BOP Electrical Building Terminate Power Cables | 45d | 2027-10-28 | 2028-01-05 | WSC-BOP-E&I-1400 | 90d | 138d | Electrical [600 h] | 1.33333333333333 | LV | BOP Elect | CON | PCL | WS BOP |  |  |  |  |  |  |
| WSC-BOP-MEC-1430 | Set GSU (3 ea.) | 10d | 2027-11-01 | 2027-11-15 | WSC-INT-MIL-1850, WSC-INT-MIL-2050 | -196.9d | 0d | Mechanical | 0 |  | Elect Yard | CON | PCL | WS BOP | FND | CCWA_13 | Mechanical |  |  |  |
| WSC-BOP-E&I-1530 | Closed Loop Cooling Pull Inst Cable to Devices | 15d | 2027-11-02 | 2027-11-22 | WSC-BOP-E&I-1500 | 52d | 40d | Electrical [450 h] | 3 | INST | CL Cool | CON | PCL | WS BOP |  |  |  |  |  |  |
| WSC-BOP-E&I-1460 | BOP Electrical Building Terminate Lighting Cables | 45d | 2027-11-04 | 2028-01-12 | WSC-BOP-E&I-1430, WSC-BOP-E&I-1450 | 85d | 133d | Electrical [400 h] | 0.888888888888889 | LGT | BOP Elect | CON | PCL | WS BOP |  |  |  |  |  |  |
| WSC-BOP-E&I-1520 | Closed Loop Cooling Pull Inst Cable (Home Runs) | 45d | 2027-11-16 | 2028-01-24 | WSC-BOP-E&I-1570, WSC-BOP-E&I-1470 | 12d | 0d | Electrical [2600 h] | 5.77777777777778 | INST | CL Cool | CON | PCL | WS BOP |  |  |  | 11-30 |  |  |
| WSC-BOP-E&I-1550 | Closed Loop Cooling Pull Power Cable | 45d | 2027-11-16 | 2028-01-24 | WSC-BOP-E&I-1470 | 32d | 0d | Electrical [2200 h] | 4.88888888888889 | LV | CL Cool | CON | PCL | WS BOP |  |  |  |  |  |  |
| WSC-BOP-E&I-1330 | BOP Electrical Building Loop checks Electrical | 50d | 2027-11-18 | 2028-02-02 | WSC-BOP-E&I-1390, WSC-BOP-E&I-1320 | 70.9d | 75d | Electrical [850 h] | 1.7 | INST | BOP Elect | CON | PCL | WS BOP |  |  |  |  |  |  |
| WSC-BOP-MEC-1410 | Final Alignment Boiler Feedwater Pumps | 10d | 2027-11-18 | 2027-12-03 | WSC-BOP-PIP-1100, WSC-BOP-MEC-1080 | 110.9d | 158d | Mechanical [35 h] | 0.35 |  | BFW | CON | PCL | WS BOP |  |  | Mechanical |  |  |  |
| WSC-BOP-PIP-1110 | BFW Building Test Cold Piping | 20d | 2027-11-18 | 2027-12-17 | WSC-BOP-PIP-1130, WSC-BOP-PIP-1100, WSC-BOP-PIP-1080 | -25d | 0d | Pipe [850 h] | 4.25 |  | BFW | CON | PCL | WS BOP |  |  |  | 1-10 | Yes |  |
| WSC-BOP-E&I-1580 | Closed Loop Cooling Install Lighting Fixtures | 50d | 2027-11-23 | 2028-02-07 | WSC-BOP-E&I-1590 | 22d | 0d | Electrical [600 h] | 1.2 | LGT | CL Cool | CON | PCL | WS BOP |  |  |  | 11-30 |  |  |
| WSC-BOP-E&I-1600 | Closed Loop Cooling Pull Lighting Cable | 45d | 2027-11-23 | 2028-01-31 | WSC-BOP-E&I-1590 | 27d | 5d | Electrical [1100 h] | 2.44444444444444 | LGT | CL Cool | CON | PCL | WS BOP |  |  |  | 11-30 |  |  |
| WSC-BOP-E&I-1680 | Electrical Switch Yard Pull Inst Cable to Devices | 15d | 2027-11-29 | 2027-12-17 | WSC-BOP-E&I-1650 | 35.9d | 40d | Electrical [450 h] | 3 | INST | Elect Yard | CON | PCL | WS BOP |  |  |  |  |  |  |
| WSC-BOP-CIV-1060 | Switch Yard Misc Equipment Grout | 45d | 2027-12-01 | 2028-02-07 | WSC-BOP-MEC-1230 | 68.8d | 115.9d | Concrete [500 h] | 1.11111111111111 |  | Elect Yard | CON | PCL | WS BOP |  |  | Civil |  |  | 0 |
| WSC-BOP-MEC-1070 | Set 6.9kV Station Service XFMR(BFW Area) | 10d | 2027-12-01 | 2027-12-15 | WSC-INT-MIL-1570, WSC-BOP-MEC-1080, WSC-BOP-MEC-1230 | -196.9d | 0d | Mechanical [65 h] | 0.65 |  | BFW | CON | PCL | WS BOP | FND | CCWA_11 | Mechanical |  |  |  |
| WSC-BOP-E&I-1670 | Electrical Switch Yard Pull Inst Cable (Home Runs) | 45d | 2027-12-13 | 2028-02-16 | WSC-BOP-E&I-1720, WSC-BOP-E&I-1620 | -4.1d | 0d | Electrical [2600 h] | 5.77777777777778 | INST | Elect Yard | CON | PCL | WS BOP |  |  |  |  |  |  |
| WSC-BOP-E&I-1700 | Electrical Switch Yard Pull Power Cable | 45d | 2027-12-13 | 2028-02-16 | WSC-BOP-E&I-1620 | 15d | 0d | Electrical [2200 h] | 4.88888888888889 | LV | Elect Yard | CON | PCL | WS BOP |  |  |  |  |  |  |
| WSC-BOP-E&I-1730 | Electrical Switch Yard Install Lighting Fixtures | 50d | 2027-12-13 | 2028-02-24 | WSC-BOP-E&I-1740 | 10d | 0d | Electrical [600 h] | 1.2 | LGT | Elect Yard | CON | PCL | WS BOP |  |  |  |  |  |  |
| WSC-BOP-E&I-1750 | Electrical Switch Yard Pull Lighting Cable | 45d | 2027-12-13 | 2028-02-16 | WSC-BOP-E&I-1740 | 15d | 5d | Electrical [1100 h] | 2.44444444444444 | LGT | Elect Yard | CON | PCL | WS BOP |  |  |  |  |  |  |
| WSC-BOP-E&I-1240 | BFW Building Terminate Power Cables | 45d | 2027-12-15 | 2028-02-22 | WSC-BOP-MEC-1070, WSC-BOP-E&I-1230 | 32.9d | 0d | Electrical [85 h] | 0.188888888888889 | LV | BFW | CON | PCL | WS BOP |  |  |  |  |  |  |
| WSC-BOP-PIP-1190 | Closed Loop Cooling Test Cold Piping | 20d | 2027-12-20 | 2028-01-19 | WSC-BOP-PIP-1110, WSC-BOP-PIP-1180, WSC-BOP-PIP-1160 | -25d | 0d | Pipe [850 h] | 4.25 |  | CL Cool | CON | PCL | WS BOP |  |  |  | 1-10 | Yes |  |
| WSC-BOP-E&I-1840 | Fuel Gas Terminate Inst Cables | 15d | 2028-01-05 | 2028-01-25 | WSC-BOP-E&I-1820, WSC-BOP-E&I-1830 | 26d | 16d | Electrical [600 h] | 4 | INST | FG Yard | CON | PCL | WS BOP |  |  |  |  |  |  |
| WSC-BOP-E&I-1860 | Fuel Gas Terminate Power Cables | 45d | 2028-01-05 | 2028-03-08 | WSC-BOP-E&I-1850 | 46d | 51d | Electrical [600 h] | 1.33333333333333 | LV | FG Yard | CON | PCL | WS BOP |  |  |  |  |  |  |
| WSC-BOP-E&I-1910 | Fuel Gas Terminate Lighting Cables | 45d | 2028-01-12 | 2028-03-15 | WSC-BOP-E&I-1880, WSC-BOP-E&I-1900 | 41d | 46d | Electrical [400 h] | 0.888888888888889 | LGT | FG Yard | CON | PCL | WS BOP |  |  |  |  |  |  |
| WSC-BOP-PIP-1250 | Fuel Gas Test Cold Piping | 20d | 2028-01-20 | 2028-02-16 | WSC-BOP-PIP-1190, WSC-BOP-PIP-1240, WSC-BOP-PIP-1220 | -25d | 0d | Pipe [850 h] | 4.25 |  | FG Yard | CON | PCL | WS BOP |  |  |  | 1-10 | Yes |  |
| WSC-BOP-E&I-1540 | Closed Loop Cooling Terminate Inst Cables | 15d | 2028-01-25 | 2028-02-14 | WSC-BOP-E&I-1520, WSC-BOP-E&I-1530 | 12d | 0d | Electrical [600 h] | 4 | INST | CL Cool | CON | PCL | WS BOP |  |  |  | 11-30 |  |  |
| WSC-BOP-E&I-1560 | Closed Loop Cooling Terminate Power Cables | 45d | 2028-01-25 | 2028-03-28 | WSC-BOP-E&I-1550 | 32d | 37d | Electrical [600 h] | 1.33333333333333 | LV | CL Cool | CON | PCL | WS BOP |  |  |  |  |  |  |
| WSC-BOP-E&I-1610 | Closed Loop Cooling Terminate Lighting Cables | 45d | 2028-02-08 | 2028-04-11 | WSC-BOP-E&I-1580, WSC-BOP-E&I-1600 | 22d | 27d | Electrical [400 h] | 0.888888888888889 | LGT | CL Cool | CON | PCL | WS BOP |  |  |  | 11-30 |  |  |
| WSC-BOP-E&I-1480 | Closed Loop Cooling Loop checks Electrical | 50d | 2028-02-15 | 2028-04-25 | WSC-BOP-PIP-1190, WSC-BOP-E&I-1540, WSC-BOP-E&I-1470 | 12d | 17d | Electrical [850 h] | 1.7 | INST | CL Cool | CON | PCL | WS BOP |  |  |  | 11-30 |  |  |
| WSC-BOP-E&I-1690 | Electrical Switch Yard Terminate Inst Cables | 15d | 2028-02-17 | 2028-03-09 | WSC-BOP-E&I-1670, WSC-BOP-E&I-1680 | -4.1d | 0d | Electrical [600 h] | 4 | INST | Elect Yard | CON | PCL | WS BOP |  |  |  |  |  |  |
| WSC-BOP-E&I-1710 | Electrical Switch Yard Terminate Power Cables | 45d | 2028-02-17 | 2028-04-20 | WSC-BOP-E&I-1700 | 15d | 20d | Electrical [600 h] | 1.33333333333333 | LV | Elect Yard | CON | PCL | WS BOP |  |  |  |  |  |  |
| WSC-BOP-E&I-1780 | Fuel Gas Loop checks Electrical | 50d | 2028-02-17 | 2028-04-27 | WSC-BOP-PIP-1250, WSC-BOP-E&I-1840, WSC-BOP-E&I-1770 | 10d | 15d | Electrical [850 h] | 1.7 | INST | FG Yard | CON | PCL | WS BOP |  |  |  | 11-30 |  |  |
| WSC-BOP-PIP-1310 | H2 Storage Test Cold Piping | 20d | 2028-02-17 | 2028-03-16 | WSC-BOP-CIV-1080, WSC-BOP-PIP-1250, WSC-BOP-PIP-1300, WSC-BOP-PIP-1280 | -25d | 0d | Pipe [850 h] | 4.25 |  | HY | CON | PCL | WS BOP |  |  |  | 1-10 | Yes |  |
| WSC-BOP-E&I-1160 | BFW Building Loop checks Electrical | 25d | 2028-02-22 | 2028-03-28 | WSC-BOP-PIP-1110, WSC-BOP-E&I-1300, WSC-BOP-E&I-1240, WSC-BOP-E&I-1290, WSC-BOP-E&I-1220, WSC-BOP-E&I-1150 | 32.9d | 37.9d | Electrical [325 h] | 1.3 | INST | BFW | CON | PCL | WS BOP |  |  |  |  |  |  |
| WSC-BOP-E&I-1760 | Electrical Switch Yard Terminate Lighting Cables | 45d | 2028-02-25 | 2028-04-27 | WSC-BOP-E&I-1730, WSC-BOP-E&I-1750 | 10d | 15d | Electrical [400 h] | 0.888888888888889 | LGT | Elect Yard | CON | PCL | WS BOP |  |  |  |  |  |  |
| WSC-BOP-E&I-1630 | Electrical Switch Yard Loop checks Electrical | 50d | 2028-03-10 | 2028-05-18 | WSC-BOP-E&I-1690, WSC-BOP-E&I-1620 | -4.1d | 0d | Electrical [850 h] | 1.7 | INST | Elect Yard | CON | PCL | WS BOP |  |  |  |  |  |  |
| WSC-BOP-E&I-1930 | H2 Storage Loop checks Electrical | 40d | 2028-03-17 | 2028-05-11 | WSC-BOP-PIP-1310, WSC-BOP-E&I-1990, WSC-BOP-E&I-1920 | 0d | 5d | Electrical [850 h] | 2.125 | INST | HY | CON | PCL | WS BOP |  |  |  | 1-10 |  |  |

| ID | WBS | Activity | Duration | Start | Finish | Predecessors | Total float | Free float | Constraint | Resources | Crew Size | WS Sub Area | WS EPC | WS Resp | WS Area | WS Equipment Set | WS CCWA Area | WS Discipline | WS Float Path |
| --- | --- | --- | --- | --- | --- | --- | --- | --- | --- | --- | --- | --- | --- | --- | --- | --- | --- | --- | --- |
|  | 1 | **Grout** |  |  |  |  |  |  |  |  |  |  |  |  |  |  |  |  |  |
|  | 2 | **Structural** |  | 2027-03-04 | 2027-10-26 |  |  |  |  |  |  |  |  |  |  |  |  |  |  |
| WSC-BOP-STL-1030 |  | Closed Loop Cooling Misc Steel Installation | 64d | 2027-03-04 | 2027-06-02 | WSC-INT-MIL-1120 | 198.9d | 102d |  | Structural Steel [3502 h] | 5.471875 | CL Cool | CON | PCL | WS BOP |  |  |  |  |
| WSC-BOP-STL-1000 |  | Aux Boiler Misc Steel Installation | 64d | 2027-06-15 | 2027-09-14 | WSC-PR-STL-1000, WSC-ARCH-STL-1080 SS, PCL-BOP-STR-1000 (other project) FF, CCWA_10-63109 (other project), CCWA_01-6120 (other project) | -53.8d | 0d |  | Structural Steel [3502 h] | 5.471875 | Aux Boiler | CON | PCL | WS BOP |  |  |  |  |
| WSC-BOP-STL-1040 |  | BOP Buss Duct Steel Installation | 64d | 2027-07-28 | 2027-10-26 | WSC-PR-STL-1010, WSC-INT-MIL-1850 | 136.9d | 0d |  | Structural Steel [3502 h] | 5.471875 | Elect Yard | CON | PCL | WS BOP |  |  |  |  |
|  | 3 | **Mechanical** |  | 2026-09-29 | 2028-07-20 |  |  |  |  |  |  |  |  |  |  |  |  |  |  |
| WSC-BOP-MEC-1020 |  | Install Oil Water Separator | 10d | 2026-09-29 | 2026-10-12 | WSC-INT-MIL-1620 | 8.2d | 0d |  | Mechanical [100 h] | 1 | Aux Boiler | CON | PCL | WS BOP | FND | CCWA_14 | Mechanical |  |
| WSC-BOP-MEC-1250 |  | Install Generator Cricut Breaker | 10d | 2026-10-01 | 2026-10-14 | WSC-INT-MIL-1560 | 16.2d | 0d |  | Mechanical [100 h] | 1 | Elect Yard | CON | PCL | WS BOP | FND | CCWA_13 | Mechanical |  |
| WSC-BOP-MEC-1180 |  | BOP Install and Dress Out Electrical Equipment | 40d | 2026-10-14 | 2026-12-10 | WSC-INT-MIL-1560, WSC-INT-MIL-1450, WSC-HRSG-MEC-1180 | -2.8d | 0d |  | Mechanical [2399 h] | 5.9975 | Elect Yard | CON | PCL | WS BOP |  |  | Mechanical |  |
| WSC-BOP-MEC-1280 |  | Set Dc Link Reactor | 10d | 2026-10-15 | 2026-10-28 | WSC-BOP-MEC-1250, WSC-INT-MIL-1560 | 16.2d | 0d |  | Mechanical | 0 | Elect Yard | CON | PCL | WS BOP | FND | CCWA_13 | Mechanical |  |
| WSC-BOP-MEC-1290 |  | Install HV Disconnect Breakers | 10d | 2026-10-29 | 2026-11-11 | WSC-BOP-MEC-1280, WSC-INT-MIL-1560 | 16.2d | 19d |  | Mechanical | 0 | Elect Yard | CON | PCL | WS BOP | FND | CCWA_13 | Mechanical |  |
| WSC-BOP-MEC-1330 |  | Mechanical Balancing | 420d | 2026-11-18 | 2028-07-20 | WSC-HRSG-MEC-1430 SS | -47.1d | 0d | start on or after 2026-11-17 | Mechanical [62131 h] | 14.7930952380952 | FG Yard | CON | PCL | WS BOP |  |  | Mechanical |  |
| WSC-BOP-MEC-1260 |  | Set AC Link Reactor | 10d | 2026-12-11 | 2026-12-28 | WSC-BOP-MEC-1290, WSC-BOP-MEC-1180, WSC-INT-MIL-1450 | -2.8d | 102d |  | Mechanical | 0 | Elect Yard | CON | PCL | WS BOP | FND | CCWA_13 | Mechanical |  |
| WSC-BOP-MEC-1010 |  | Install Air Compressors | 10d | 2026-12-22 | 2027-01-07 | WSC-INT-MIL-1290 | 40.2d | 116.2d |  | Mechanical | 0 | Aux Boiler | CON | PCL | WS BOP | FND | CCWA_14 | Mechanical |  |
| WSC-BOP-MEC-1030 |  | Install Compressed Air Dryers | 10d | 2026-12-22 | 2027-01-07 | WSC-INT-MIL-1290 | 40.2d | 388d |  | Mechanical | 0 | Aux Boiler | CON | PCL | WS BOP | FND | CCWA_14 | Mechanical |  |
| WSC-BOP-MEC-1050 |  | Set Compressed Air Receiver Tanks | 10d | 2026-12-23 | 2027-01-08 | WSC-INT-MIL-1290, WSC-INT-MIL-1510 | -0.8d | 0d |  | Mechanical | 0 | Aux Boiler | CON | PCL | WS BOP | FND | CCWA_14 | Mechanical |  |
| WSC-BOP-MEC-1110 |  | PEECC | 10d | 2027-02-22 | 2027-03-05 | WSC-BOP-MEC-1420 | -9.8d | 0d |  | Mechanical [100 h] | 1 | BOP Elect | CON | PCL | WS BOP | FND | CCWA_08 | Mechanical |  |
| WSC-BOP-MEC-1040 |  | Install Auxiliary Boiler | 10d | 2027-02-25 | 2027-03-11 | WSC-INT-MIL-1870, WSC-INT-MIL-1000 | -3.2d | 344.6d |  | Mechanical [100 h] | 1 | Aux Boiler | CON | PCL | WS BOP | FND | CCWA_14 | Mechanical |  |
| WSC-BOP-MEC-1060 |  | Aux Boiler Deaerator | 10d | 2027-03-03 | 2027-03-17 | WSC-INT-MIL-1000, CCWA_14-63804 (other project) | -27.2d | 0d |  | Mechanical | 0 | Aux Boiler | CON | PCL | WS BOP | FND | CCWA_14 | Mechanical |  |
| WSC-BOP-MEC-1170 |  | Install CCCW Head Tank | 10d | 2027-03-04 | 2027-03-17 | WSC-INT-MIL-1120, WSC-INT-MIL-1830, WSC-INT-MIL-1490 | -77.8d | 5d |  | Mechanical [100 h] | 1 | CT Off | CON | PCL | WS BOP | FND | CCWA_02 | Mechanical | 11-30 |
| WSC-BOP-MEC-1140 |  | Install Evaporative Cooler Water Skid | 10d | 2027-03-08 | 2027-03-19 | WSC-BOP-MEC-1110 | -9.8d | 0d |  | Mechanical | 0 | CL Cool | CON | PCL | WS BOP | FND | CCWA_10 | Mechanical |  |
| WSC-BOP-MEC-1440 |  | Aux Boiler Blowdown Tank | 10d | 2027-03-17 | 2027-03-31 | WSC-BOP-MEC-1060 | -27.2d | 0d |  | Mechanical | 0 | Aux Boiler | CON | PCL | WS BOP | FND | CCWA_14 | Mechanical |  |
| WSC-BOP-MEC-1160 |  | Install Fin Fan Cooler | 25d | 2027-03-25 | 2027-04-28 | WSC-BOP-MEC-1170, WSC-INT-MIL-1010 | -82.8d | 0d |  | Mechanical [100 h] | 0.4 | CL Cool | CON | PCL | WS BOP | FND | CCWA_10 | Mechanical | 11-30 |
| WSC-BOP-MEC-1300 |  | Set Fuel Gas Drains Tank | 10d | 2027-04-09 | 2027-04-22 | WSC-INT-MIL-1890, WSC-INT-MIL-1050, WSC-INT-MIL-1040, WSC-INT-MIL-1030 | -33.8d | 314d |  | Mechanical | 0 | FG Yard | CON | PCL | WS BOP | FND | CCWA_17 | Mechanical |  |
| WSC-BOP-MEC-1310 |  | Install Fuel Gas Dew Point Heater | 10d | 2027-04-09 | 2027-04-22 | WSC-INT-MIL-1890, WSC-INT-MIL-1050, WSC-INT-MIL-1040, WSC-INT-MIL-1030, WSC-INT-MIL-1730, WSC-INT-MIL-1720, WSC-INT-MIL-1020 | -73.8d | 0d |  | Mechanical | 0 | FG Yard | CON | PCL | WS BOP | FND | CCWA_17 | Mechanical |  |
| WSC-BOP-MEC-1320 |  | Install Fuel Gas Conditioning Skid | 10d | 2027-04-09 | 2027-04-22 | WSC-INT-MIL-1890, WSC-INT-MIL-1040, WSC-INT-MIL-1030, WSC-INT-MIL-1050 | -33.8d | 314d |  | Mechanical | 0 | FG Yard | CON | PCL | WS BOP | FND | CCWA_17 | Mechanical |  |
| WSC-BOP-MEC-1150 |  | Install Cooling Water Pumps | 25d | 2027-04-29 | 2027-06-03 | WSC-BOP-MEC-1160, WSC-INT-MIL-1120 | -82.8d | 0d |  | Mechanical [100 h] | 0.4 | CL Cool | CON | PCL | WS BOP | FND | CCWA_10 | Mechanical | 11-30 |
| WSC-BOP-STL-1010 |  | Erect Boiler Feed Pipe Rack | 20d | 2027-05-03 | 2027-05-28 | WSC-DEL-STR-1050, WSC-INT-MIL-1880 | -79.8d | 0d |  | Structural Steel [365 h] | 1.825 | BFW | CON | PCL | WS BOP |  |  |  | 1-10 |
| WSC-BOP-MEC-1220 |  | Install Main Power Distribution Center | 10d | 2027-05-24 | 2027-06-07 | WSC-BOP-MEC-1260, WSC-INT-MIL-1590, WSC-INT-MIL-1580, WSC-INT-MIL-1480, MST1580 (other project) | -104.8d | 0d |  | Mechanical [100 h] | 1 | Elect Yard | CON | PCL | WS BOP | FND | CCWA_13 | Mechanical |  |
| WSC-BOP-MEC-1120 |  | Install Battery Compartment | 10d | 2027-05-28 | 2027-06-11 | WSC-INT-MIL-1540 | 231.9d | 279d |  | Mechanical [100 h] | 1 | BOP Elect | CON | PCL | WS BOP |  |  | Mechanical |  |
| WSC-BOP-MEC-1080 |  | Install Boiler Feedwater Pumps | 10d | 2027-06-01 | 2027-06-14 | WSC-BOP-STL-1010, WSC-INT-MIL-1090, WSC-INT-MIL-1080 | -79.8d | 0d |  | Mechanical [165 h] | 1.65 | BFW | CON | PCL | WS BOP | FND | CCWA_11 | Mechanical |  |
| WSC-BOP-MEC-1190 |  | BOP 138 KV Breaker Yard | 10d | 2027-10-05 | 2027-10-18 | WSC-INT-MIL-1750 | 132.9d | 46d |  | Mechanical | 0 | Elect Yard | CON | PCL | WS BOP |  |  | Mechanical |  |
| WSC-BOP-MEC-1210 |  | Install Auxiliary Transformer | 10d | 2027-11-01 | 2027-11-12 | WSC-INT-MIL-1660, WSC-INT-MIL-1600, WSC-INT-MIL-1570 | -186.8d | 0.1d |  | Mechanical | 0 | Elect Yard | CON | PCL | WS BOP | FND | CCWA_13 | Mechanical |  |
| WSC-BOP-MEC-1130 |  | BOP Electrical Building Set Non-Seg Bus | 10d | 2027-11-11 | 2027-11-24 | WSC-INT-MIL-1770 | -184.8d | 163d |  | Electrical [100 h] | 1 | BOP Elect | CON | PCL | WS BOP | Yes |  |  |  |
| WSC-BOP-MEC-1230 |  | Set LCI and Exciter Compartment | 10d | 2027-11-15 | 2027-12-01 | WSC-BOP-MEC-1430 | -196.9d | 0d |  | Mechanical [100 h] | 1 | Elect Yard | CON | PCL | WS BOP | FND | CCWA_13 | Mechanical |  |
| WSC-BOP-MEC-1240 |  | Erect CTG Excitation XFMR | 10d | 2027-11-15 | 2027-12-01 | WSC-BOP-MEC-1210, WSC-BOP-MEC-1430 | -186.9d | 160.9d |  | Mechanical [100 h] | 1 | Elect Yard | CON | PCL | WS BOP | FND | CCWA_13 | Mechanical |  |
| WSC-BOP-MEC-1270 |  | Install Isolated Phase Bus Duct (Ipb) | 10d | 2027-12-28 | 2028-01-11 | WSC-BOP-MEC-1190, WSC-INT-MIL-1760, WSC-INT-MIL-1750 | 86.9d | 134d |  | Mechanical [100 h] | 1 | Elect Yard | CON | PCL | WS BOP |  |  | Mechanical |  |

| ID | WBS | Activity | Duration | Start | Finish | Predecessors | Total float | Free float | Constraint | Calendar | Resources | Crew Size | WS Sub Area | WS EPC | WS Resp | WS Area | WS Float Path |
| --- | --- | --- | --- | --- | --- | --- | --- | --- | --- | --- | --- | --- | --- | --- | --- | --- | --- |
|  | 4 | **Pipe** |  |  |  |  |  |  |  |  |  |  |  |  |  |  |  |
|  | 5 | **Electrical & Instrumentation** |  |  |  |  |  |  |  |  |  |  |  |  |  |  |  |
|  | 6 | **Paint and Insulation** |  |  |  |  |  |  |  |  |  |  |  |  |  |  |  |
|  | 7 | **Subcontractor** |  |  |  |  |  |  |  |  |  |  |  |  |  |  |  |
|  | 8 | **Architectural Buidings** |  | 2026-10-05 | 2028-04-05 |  |  |  |  |  |  |  |  |  |  |  |  |
|  | 1 | **Grout** |  |  |  |  |  |  |  |  |  |  |  |  |  |  |  |
|  | 2 | **Structural** |  |  |  |  |  |  |  |  |  |  |  |  |  |  |  |
|  | 3 | **Mechanical** |  |  |  |  |  |  |  |  |  |  |  |  |  |  |  |
|  | 4 | **Pipe** |  |  |  |  |  |  |  |  |  |  |  |  |  |  |  |
|  | 5 | **Electrical & Instrumentation** |  |  |  |  |  |  |  |  |  |  |  |  |  |  |  |
|  | 6 | **Paint and Insulation** |  |  |  |  |  |  |  |  |  |  |  |  |  |  |  |
|  | 7 | **Subcontractor** |  | 2026-10-05 | 2028-04-05 |  |  |  |  |  |  |  |  |  |  |  |  |
| WSC-ARCH-STL-1000 |  | Erect Aux Boiler Building Stuctural Walls | 60d | 2026-10-05 | 2026-12-31 | WSC-CON-MIL1020 | 164.9d | 0d | start on or after 2026-10-05 |  | Subcontractor | 0 | Aux Boiler | CON | P-SUB | WS ARCH |  |
| WSC-ARCH-STL-1040 |  | Boiler Feedwater Building Erect Structural Walls | 20d | 2026-11-12 | 2026-12-11 | WSC-CON-MIL1020 | 281.9d | 0d | start on or after 2026-11-12 |  | Subcontractor | 0 | BFW | CON | P-SUB | WS ARCH |  |
| WSC-ARCH-SUB-1010 |  | Warehouse Building Erect Stuctural Walls | 30d | 2026-12-04 | 2027-01-20 | WSC-INT-MIL-1970 | 232.5d | 0d |  |  | Subcontractor | 0 | Build and Ground | CON | P-SUB | WS ARCH |  |
| WSC-ARCH-STL-1080 |  | Erect Admin & WH Building | 350d | 2026-12-10 | 2027-11-25 | CCWA_12-64601 (other project) | 109.8d | 140.7d |  | 10hr 7day No Holidays | Subcontractor | 0 | Build and Ground | CON | PCL | WS ARCH |  |
| WSC-ARCH-STL-1050 |  | Pre-Assemble Boiler Feedwater Building Roof Trusses | 15d | 2026-12-14 | 2027-01-06 | WSC-ARCH-STL-1040 | 281.9d | 0d |  |  | Subcontractor | 0 | BFW | CON | P-SUB | WS ARCH |  |
| WSC-ARCH-STL-1010 |  | Pre-Assemble Aux Boiler Building Roof Trusses | 60d | 2027-01-04 | 2027-03-29 | WSC-ARCH-STL-1000 | 164.9d | 0d |  |  | Subcontractor | 0 | Aux Boiler | CON | P-SUB | WS ARCH |  |
| WSC-ARCH-STL-1100 |  | Turbine Building Erect Structural Walls | 60d | 2027-01-04 | 2027-03-30 | WSC-INT-MIL-1930 | 154.1d | 0d | start on or after 2027-01-04 |  | Subcontractor | 0 | Turbine Build | CON | P-SUB | WS ARCH |  |
| WSC-ARCH-SUB-1000 |  | Admin / Control Building Erect Walls | 40d | 2027-01-05 | 2027-03-02 | WSC-INT-MIL-1240 | 83.9d | 0d |  |  | Subcontractor | 0 | Build and Ground | CON | P-SUB | WS ARCH |  |
| WSC-ARCH-STL-1060 |  | Install Boiler Feedwater Building Roof | 20d | 2027-01-07 | 2027-02-03 | WSC-ARCH-STL-1050 | 281.9d | 0d |  |  | Subcontractor | 0 | BFW | CON | P-SUB | WS ARCH |  |
| WSC-ARCH-SUB-1050 |  | Pre-Assemble Warehouse Building Roof Trusses | 20d | 2027-01-20 | 2027-02-18 | WSC-ARCH-SUB-1010 | 232.5d | 0d |  |  | Subcontractor | 0 | Build and Ground | CON | P-SUB | WS ARCH |  |
| WSC-ARCH-STL-1070 |  | Install Boiler Feedwater Building Exterior Skin | 40d | 2027-02-04 | 2027-04-01 | WSC-ARCH-STL-1060 | 281.9d | 329d |  |  | Subcontractor | 0 | BFW | CON | P-SUB | WS ARCH |  |
| WSC-ARCH-SUB-1060 |  | Install Warehouse Building Roof Trusses | 20d | 2027-02-18 | 2027-03-18 | WSC-ARCH-SUB-1050 | 232.5d | 0d |  |  | Subcontractor | 0 | Build and Ground | CON | P-SUB | WS ARCH |  |
| WSC-ARCH-SUB-1020 |  | Admin / Control Building Install Roof | 40d | 2027-03-03 | 2027-04-27 | WSC-ARCH-SUB-1000 | 83.9d | 0d |  |  | Subcontractor | 0 | Build and Ground | CON | P-SUB | WS ARCH |  |
| WSC-ARCH-SUB-1070 |  | Install Warehouse Building Exterior Skin | 60d | 2027-03-18 | 2027-06-11 | WSC-ARCH-SUB-1060 | 232.5d | 279.6d |  |  | Subcontractor | 0 | Build and Ground | CON | P-SUB | WS ARCH |  |
| WSC-ARCH-STL-1020 |  | Install Aux Boiler Building Roof Trusses | 60d | 2027-03-30 | 2027-06-22 | WSC-ARCH-STL-1010 | 164.9d | 0d |  |  | Subcontractor | 0 | Aux Boiler | CON | P-SUB | WS ARCH |  |
| WSC-ARCH-STL-1110 |  | Pre-Assemble Turbine Building Roof Trusses | 30d | 2027-03-30 | 2027-05-11 | WSC-ARCH-STL-1100 | 154.1d | 0d |  |  | Subcontractor | 0 | Turbine Build | CON | P-SUB | WS ARCH |  |
| WSC-ARCH-STL-1120 |  | Install Turbine Building Crane Steel and Rails | 30d | 2027-03-30 | 2027-05-11 | WSC-ARCH-STL-1110 SS | 154.1d | 127.2d |  |  | Subcontractor | 0 | Turbine Build | CON | P-SUB | WS ARCH |  |
| WSC-ARCH-STL-1140 |  | Install Turbine Building Wall Skin | 60d | 2027-03-30 | 2027-06-23 | WSC-ARCH-STL-1100 | 194.1d | 167.2d |  |  | Subcontractor | 0 | Turbine Build | CON | P-SUB | WS ARCH |  |
| WSC-ARCH-SUB-1030 |  | Admin / Control Building Install Wall Skin | 30d | 2027-04-28 | 2027-06-09 | WSC-ARCH-SUB-1020 | 83.9d | 0d |  |  | Subcontractor | 0 | Build and Ground | CON | P-SUB | WS ARCH |  |
| WSC-ARCH-SUB-1040 |  | Admin / Control Building Interior | 150d | 2027-06-10 | 2028-01-14 | WSC-ARCH-SUB-1030 | 83.9d | 131d |  |  | Subcontractor | 0 | Build and Ground | CON | P-SUB | WS ARCH |  |
| WSC-ARCH-STL-1030 |  | Install Aux Boiler Building Exterior Skin | 60d | 2027-06-23 | 2027-09-16 | WSC-ARCH-STL-1020 | 164.9d | 212d |  |  | Subcontractor | 0 | Aux Boiler | CON | P-SUB | WS ARCH |  |
| WSC-ARCH-STL-1090 |  | Erect Turbine Building | 200d | 2027-07-13 | 2028-01-29 | WSC-PR-STL-1000, WSC-ARCH-STL-1080 SS, WSC-ST-MEC-1060, CCWA_01-6120 (other project), CCWA_02-6266 (other project) | 103.9d | 173d |  | 10hr 7day No Holidays | Subcontractor | 0 | Build and Ground | CON | PCL | WS ARCH |  |
| WSC-ARCH-STL-1130 |  | Install Turbine Building Roof Trusses | 10d | 2027-11-10 | 2027-11-23 | WSC-ARCH-STL-1170 SS, WSC-ARCH-STL-1120 | 26.9d | 0d |  |  | Subcontractor | 0 | Turbine Build | CON | P-SUB | WS ARCH | 11-30 |
| WSC-ARCH-STL-1170 |  | Install Turbine Building Crane and Commission | 30d | 2027-11-10 | 2027-12-23 | WSC-ST-MEC-1100, WSC-ARCH-STL-1120 | 26.9d | 0d |  |  | Subcontractor | 0 | Turbine Build | CON | P-SUB | WS ARCH | 11-30 |
| WSC-ARCH-STL-1150 |  | Install Turbine Building Roof Skin | 60d | 2027-11-24 | 2028-02-23 | WSC-ARCH-STL-1130, WSC-ARCH-STL-1140 SS | 26.9d | 0d |  |  | Subcontractor | 0 | Turbine Build | CON | P-SUB | WS ARCH | 11-30 |
| WSC-ARCH-STL-1160 |  | Turbine Building Dress Out Interior | 30d | 2028-02-24 | 2028-04-05 | WSC-ARCH-STL-1150 | 26.9d | 74d |  |  | Subcontractor | 0 | Turbine Build | CON | P-SUB | WS ARCH | 11-30 |

| ID | WBS | Activity | Duration | Start | Finish | Predecessors | Total float | Free float | Calendar | Crew Size | WS EPC | WS Resp | WS Area |
| --- | --- | --- | --- | --- | --- | --- | --- | --- | --- | --- | --- | --- | --- |
|  | COMM | **WSC Commissioning** |  | 2027-05-04 | 2028-05-04 |  |  |  |  |  |  |  |  |
|  | 1 | **Cold Commissioning** |  | 2027-05-04 | 2028-05-04 |  |  |  |  |  |  |  |  |
| Comm-03 |  | Lube Oil Flush | 15d | 2027-05-04 | 2027-05-18 | WSC-CT-MEC-1090 FS+16d | 327.88d | 0d | Standard 7 Day Workweek | 0 | COM | Client | WS SU |
| Comm-04 |  | GE Equipment Cold Comissioning Period | 25d | 2027-05-19 | 2027-06-12 | Comm-03 | 327.88d | 320d | Standard 7 Day Workweek | 0 | COM | Client | WS SU |
| Comm-01 |  | Cold Commissioning | 90d | 2028-01-29 | 2028-04-27 | WSC-CT-E&I-1000 | -145d | 0d | Standard 7 Day Workweek | 0 | COM | Client | WS SU |
| Comm-02 |  | HRSG Cleaning | 20d | 2028-02-01 | 2028-02-20 | Comm-01 SS+3d | 80.88d | 73d | Standard 7 Day Workweek | 0 | COM | Client | WS HRSG |
| Comm-05 |  | System Line-up and Preparations for First Fire | 6d | 2028-04-28 | 2028-05-03 | Comm-01, Comm-04 | 7.88d | 0d | Standard 7 Day Workweek | 0 | COM | Client | WS SU |
| Comm-06 |  | Ready For First Fire | 1d | 2028-05-04 | 2028-05-04 | Comm-05, Comm-02 | 7.88d | 0d | Standard 7 Day Workweek | 0 | COM | Client | WS SU |
|  | 2 | **Hot Commissioning** |  |  |  |  |  |  |  |  |  |  |  |
|  | 3 | **Performance Testing and Closeout** |  |  |  |  |  |  |  |  |  |  |  |
|  | COMM | **Commissioning** |  |  |  |  |  |  |  |  |  |  |  |
|  | 1 | **Cold Commissioning** |  |  |  |  |  |  |  |  |  |  |  |
|  | 2 | **Hot Commissioning** |  |  |  |  |  |  |  |  |  |  |  |
|  | 3 | **Performance Testing and Closeout** |  |  |  |  |  |  |  |  |  |  |  |

## Activity codes

| Code | Value | Meaning |
| --- | --- | --- |
| WS Area | WS ACC | Air Cooled Condensor |
| WS Area | WS ARCH | Architectural Buildings |
| WS Area | WS BOP | Balance of Plant |
| WS Area | WS CT | Combustion Turbine |
| WS Area | WS G | General |
| WS Area | WS GEN | Generator |
| WS Area | WS HRSG | Heat Recovery Steam Generatoor |
| WS Area | WS PR | Utility Rack |
| WS Area | WS ST | Steam Turbine |
| WS Area | WS SU | Start Up / Commissioning |
| WS Area | WS WT | Water Treatment |
| WS CCWA Area | CCWA_01 | HRSG Area |
| WS CCWA Area | CCWA_02 | Turbine Area |
| WS CCWA Area | CCWA_05 | Utility Rack Area |
| WS CCWA Area | CCWA_06 | ACC Area |
| WS CCWA Area | CCWA_07 | Emergency Diesel Area |
| WS CCWA Area | CCWA_08 | LV Swithchgear PDC Area |
| WS CCWA Area | CCWA_09 | Air Inlet Filter Area |
| WS CCWA Area | CCWA_10 | Fin Fan Cooler Area |
| WS CCWA Area | CCWA_11 | Boiler Feed Area |
| WS CCWA Area | CCWA_12 | Control/Admin/Warehouse Bldg Area |
| WS CCWA Area | CCWA_13 | GSU Area |
| WS CCWA Area | CCWA_14 | Aux Boiler Area |
| WS CCWA Area | CCWA_17 | Plant Gas Area |
| WS CCWA Area | CCWA_19 | Ammonia Storage Area |
| WS CCWA Area | CCWA_21 | Service/Fire/Demin Water Area |
| WS CCWA Area | CCWA_22 | H2 Storage Area |
| WS Discipline | Architectural | Buildings |
| WS Discipline | Elect | Electrical |
| WS EPC | COM | Start Up / Commissioning |
| WS EPC | CON | Construction |
| WS EPC | GEN | General |
| WS EPC | PRO | Procurement |
| WS Equipment | CT | Gas Turbine |
| WS Equipment | Gen | Generator |
| WS Equipment | ST | Steam Turbine |
| WS Equipment Set | FND | Yes Foundation |
| WS Float Path | 0 | 0 Days |
| WS Float Path | 1-10 | 1-10 Days |
| WS Float Path | 11-30 | 11-30 Days |
| WS Milestone Type | Baker | Foundation Complete Milestone |
| WS Milestone Type | ENG | Engineering |
| WS Milestone Type | PRO | Procurement Milestone |
| WS Power Train Center Line | Yes | Center Line Equipment |
| WS Resp | Client | Owner / Client |
| WS Resp | P-SUB | PCL Subcontractor |
| WS Resp | PCL | PCL Construction |
| WS Sequence | 120 | 120 Day Activity |
| WS Sequence | CTG Steel | CTG / Steel Sequence |
| WS Sequence 2 | 1 | HP Module |
| WS Sequence 2 | 2 | IP Module |
| WS Sequence 2 | 3 | LP Module 1 |
| WS Sequence 2 | 4 | LP Module 2 |
| WS Sequence 2 | 5 | LP Module 3 |
| WS Sub Area | ACC ON | Acc On Base |
| WS Sub Area | ACC Off | ACC Off Base |
| WS Sub Area | Aux Boiler | Aux Boiler Building |
| WS Sub Area | BFW | BFW Building |
| WS Sub Area | BOP Elect | BOP Electrical Area |
| WS Sub Area | Build and Ground | Buildings and Grounds |
| WS Sub Area | CL Cool | Closed Loop Cooling |
| WS Sub Area | CT Off | CT Off Base |
| WS Sub Area | CT On | CT On Base |
| WS Sub Area | Elect Yard | Electrical Switch Yard |
| WS Sub Area | FG Yard | Fuel Gas |
| WS Sub Area | Gen Off | Gen Off Base |
| WS Sub Area | Gen On | Gen On Base |
| WS Sub Area | HRSG Off | HRSG Off Base |
| WS Sub Area | HY | Hydrogen Storage |
| WS Sub Area | ST Off | ST Off Base |
| WS Sub Area | Turbine Build | Turbine Building |
| WS Sub-Equipment | GEN-M | (New Code Value) |
| WS Sub-Equipment | GT-EXhaust | (New Code Value) |
| WS Sub-Equipment | GT-Inlet | (New Code Value) |
| WS Sub-Equipment | GT-M | (New Code Value) |
| WS Sub-Equipment | HRSG Stair | (New Code Value) |
| WS Sub-Equipment | HRSG-Ext Equip | (New Code Value) |
| WS Sub-Equipment | HRSG-Inlet | (New Code Value) |
| WS Sub-Equipment | HRSG-M | (New Code Value) |
| WS Sub-Equipment | HRSG-Stack | (New Code Value) |
| WS Sub-Equipment | ST-EXT Equip | (New Code Value) |
| WS Sub-Equipment | ST-HP | (New Code Value) |
| WS Sub-Equipment | ST-IP/LP | (New Code Value) |
| WS System | AP | Ammonia Piping |
| WS System | CT | Cable Tray |
| WS System | Demin | Demin Water |
| WS System | FW | Fire Water |
| WS System | INST | Instrumentation |
| WS System | LGT | Lighting |
| WS System | LV | Low Voltage Power |
| WS System | SW | Service water |
| WS System | WW | Waste Water |

# Kindle Wolf Summit Energy - Detail Engineering - ZE Current

Schedule from Primavera P6, 2025-11-03 to 2027-07-19, data date 2025-12-21, A marks actual dates.

## Schedule

| WBS | Activity | Start | Finish |
| --- | --- | --- | --- |
| 8 | **Project Milestones** |  |  |
| 1 | **Engineering Milestones** |  |  |
| 7 | **Payment Milestones** |  |  |
| 1 | **2025** |  |  |
| 7 | **July** |  |  |
| 8 | **August** |  |  |
| 9 | **September** |  |  |
| 10 | **October** |  |  |
| 11 | **November** |  |  |
| 12 | **December** |  |  |
| 2 | **2026** |  |  |
| 1 | **January** |  |  |
| 2 | **February** |  |  |
| 3 | **March** |  |  |
| 4 | **April** |  |  |
| 5 | **May** |  |  |
| 6 | **June** |  |  |
| 7 | **July** |  |  |
| 8 | **August** |  |  |
| 9 | **September** |  |  |
| 10 | **October** |  |  |
| 11 | **November** |  |  |
| 12 | **December** |  |  |
| 3 | **2027** |  |  |
| 1 | **January** |  |  |
| 2 | **February** |  |  |
| 3 | **March** |  |  |
| 4 | **April** |  |  |
| 5 | **May** |  |  |
| 6 | **June** |  |  |
| 7 | **July** |  |  |
| 8 | **August** |  |  |
| 10 | **Interface Milestones** | 2026-03-03 | 2027-07-19 |
| 6 | **Interface Milestones - Baker** |  |  |
| 1 | **CSA** |  |  |
| 1 | **CWA-01 - HRSG Area** |  |  |
| 2 | **HRSG - Blowdown Drain Sump - (GA Item# 46) - Foundations** |  |  |
| 3 | **HRSG - Main - (GA Item# 3 \ 108) - Pile Layout** |  |  |
| 4 | **HRSG - Main - (GA Item# 3 \ 108) - Foundations** |  |  |
| 1 | **HRSG - South - (GA Item# 48 \ 49 \ 108) - Pile Layout** |  |  |
| 6 | **HRSG - South - (GA Item# 48 \ 49 \ 108) - Foundations** |  |  |
| 2 | **CWA-02 - Turbine Area** |  |  |
| 11 | **Air Processing Unit - (GA Item# 78) - Foundations** |  |  |
| 4 | **CT \ ST - (GA Item# 1 \ 2 \ 5 \ 91) - Pile Layout** |  |  |
| 5 | **CT \ ST - (GA Item# 1 \ 2 \ 5 \ 91) - Foundations** |  |  |
| 13 | **Oil Water Separator - (GA Item# 30) - Foundations** |  |  |
| 6 | **Turbine Bldg - (GA Item# 27 \ 55 \ 71 \ 72 \ 82 \ 83 \ 105) - Pile Layout** |  |  |
| 7 | **Turbine Bldg - (GA Item# 27 \ 55 \ 71 \ 72 \ 82 \ 83 \ 105) - Foundations** |  |  |
| 1 | **Utility Pipe Rack (West) - (GA Item# 74) - Pile Layout** |  |  |
| 2 | **Utility Pipe Rack (West) - (GA Item# 74) - Foundations** |  |  |
| 9 | **Vacuum Drains Tank and Pit - (GA Item# 73) - Foundations** |  |  |
| 3 | **Wash Water Drains - (GA Item #37) - Sump Layout** |  |  |
| 12 | **Water Wash Skid (GA Item# 42) - Foundations** |  |  |
| 3 | **CWA-05 - Utility Rack Area** |  |  |
| 4 | **CT Performance Heater - (GA Item# 47) - Foundations** |  |  |
| 5 | **Fuel Gas Absolute Separator - (GA Item# 57) - Foundations** |  |  |
| 6 | **Fuel Gas Electric Heater - (GA Item# 18) - Foundations** |  |  |
| 1 | **Utility Rack - (GA Item# 56) - Pile Layout** |  |  |
| 2 | **Utility Rack - (GA Item# 56) - Foundations** |  |  |
| 4 | **CWA-06 - ACC Area** |  |  |
| 4 | **ACC - (GA Item# 4) - Pile Layout** |  |  |
| 5 | **ACC - (GA Item# 4) - Foundations** |  |  |
| 11 | **ACC - Cleaning Pump - (GA Item# 77) - Foundations** |  |  |
| 12 | **ACC - Condensate Pumps - (GA Item# 95) - Foundations** |  |  |
| 10 | **ACC - Drain Pot \ Pumps \ Pit - (GA Item# 76) - Foundations** |  |  |
| 3 | **ACC - Holding Steam Jet Air Ejectors - (GA Item# 94) - Foundations** |  |  |
| 6 | **ACC - PDC - (GA Item# 21) - Foundations** |  |  |
| 1 | **ACC - Turbine Exhaust Duct - (GA Item# 75) - Pile Layout** |  |  |
| 9 | **ACC - Turbine Exhaust Duct - (GA Item# 75) - Foundations** |  |  |
| 7 | **ACC - Vacuum Pump Skids - (GA Item# 23) - Foundations** |  |  |

| WBS | Activity |
| --- | --- |
| 8 | **Condensate Collection Tank \ Deaerator - (GA Item# 43) - Foundations** |
| 2 | **Cycle Chemical Feed Totes & Pumps - (GA Item# 85) - Foundations** |
| 5 | **CWA-07 - Emergency Diesel Gen. Area** |
| 1 | **Emergency Diesel Generator - (GA Item# 14) - Pile Layout** |
| 2 | **Emergency Diesel Generator - (GA Item# 14) - Foundations** |
| 6 | **CWA-08 - LV Switchgear PDC Area** |
| 4 | **CT Battery Compartment - (GA Item# 31) - Foundations** |
| 3 | **CT Water Mist Skid - (GA Item# 33) - Foundations** |
| 1 | **Evap Cooler Water Skid - (GA Item# 68) - Foundations** |
| 2 | **PEECC - (GA Item# 32) - Foundations** |
| 7 | **CWA-09 - Air Inlet Filter Area** |
| 1 | **Air Inlet Filter - (GA Item# 62) - Pile Layout** |
| 2 | **Air Inlet Filter - (GA Item# 62) - Foundations** |
| 8 | **CWA-10 - Fin Fan Cooler** |
| 1 | **Closed Cycle Cooling Water Pumps - (GA Item# 34) - Foundations** |
| 2 | **Finfan Cooler - (GA Item# 20) - Foundations** |
| 9 | **CWA-11 - Boiler Feed Pump Bldg Area** |
| 3 | **Boiler Feed Pipe Rack - (GA Item# 67) - Pile Layout** |
| 4 | **Boiler Feed Pipe Rack - (GA Item# 67) - Foundations** |
| 1 | **Boiler Feed Pump Bldg - (GA Item# 22 \ 44 \ 45 \ 50) - Pile Layout** |
| 2 | **Boiler Feed Pump Bldg - (GA Item# 22 \ 44 \ 45 \ 50) - Foundations** |
| 7 | **HRSG - PDC - (GA Item# 44) - Foundations** |
| 10 | **CWA-12 - Control Room \ Admin \ Warehouse** |
| 2 | **Control \ Admin \ Warehouse Bldg - (GA Item# 11 \ 17) - Foundations** |
| 11 | **CWA-13 - GSU** |
| 1 | **Main PDC - (GA Item# 28) - Foundations** |
| 5 | **6.9kV Station Service Transformers - (GA Item# 63) - Foundations** |
| 8 | **AC Link Reactor - (GA Item# 69) - Foundations** |
| 4 | **CT Excitation Transformer - (GA Item# 39) - Foundations** |
| 2 | **CT Isolation Transformer - (GA Item# 40) - Foundations** |
| 9 | **DC Link Reactor - (GA Item# 90) - Foundations** |
| 6 | **Generator Circuit Breaker - (GA Item# 41) - Foundations** |
| 10 | **Generator Step-Up Transformer - (GA Item# 15) - Pile Layout** |
| 11 | **Generator Step-Up Transformer - (GA Item# 15) - Foundations** |
| 15 | **Generator Step-Up Transformer - (GA Item# 15) - Firewalls** |
| 7 | **Isolated Phase Bus Duct - (GA Item# 89) - Foundations** |
| 3 | **LCI and Exciter Compartment - (GA Item# 38) - Foundations** |
| 12 | **Unit Aux Transformer - (GA Item# 19) - Pile Layout** |
| 13 | **Unit Aux Transformer - (GA Item# 19) - Foundations** |
| 14 | **Unit Aux Transformer - (GA Item# 19) - Firewalls** |
| 12 | **CWA-14 - Aux Boiler Bldg Area** |
| 1 | **Aux Boiler Bldg - (GA Item# 10 \ 29 \ 65 \ 87 \ 97 \ 98 \ 99) - Pile Layout** |
| 2 | **Aux Boiler Bldg - (GA Item# 10 \ 29 \ 65 \ 87 \ 97 \ 98 \ 99) - Foundations** |
| 13 | **CWA-17 - Plant Gas Yard Area** |
| 7 | **Fuel Gas Conditioning Skid - (GA Item# 101) - Pile Layout** |
| 8 | **Fuel Gas Conditioning Skid - (GA Item# 101) - Foundations** |
| 5 | **Fuel Gas Dew Point Heater - (GA Item# 100) - Pile Layout** |
| 6 | **Fuel Gas Dew Point Heater - (GA Item# 100) - Foundations** |
| 1 | **Fuel Gas Drains Tank - (GA Item# 102) - Pile Layout** |
| 2 | **Fuel Gas Drains Tank - (GA Item# 102) - Foundations** |
| 3 | **Gas Metering Station - (GA Item# 53) - Pile Layout** |
| 4 | **Gas Metering Station - (GA Item# 53) - Foundations** |
| 14 | **CWA-19 - Ammonia Storage Tank Area** |
| 1 | **Ammonia Storage Tank - (GA Item# 13 \ 88 \ 93) - Pile Layout** |
| 2 | **Ammonia Storage Tank - (GA Item# 13 \ 88 \ 93) - Foundations** |
| 15 | **CWA-21 - Service \ Fire Protection \ Demin Water Area** |
| 3 | **Demin Water Tank - (GA Item# 7) - Pile Layout** |
| 4 | **Demin Water Tank - (GA Item# 7) - Foundations** |
| 2 | **Demin Water Supply Pumps - (GA Item# 35) - Foundations** |
| 10 | **Demin Water Treatment Trailer Parking Pad - (GA Item# 52) - Foundations** |
| 11 | **Fire Pump Enclosure - (GA Item# 12) - Pile Layout** |
| 12 | **Fire Pump Enclosure - (GA Item# 12) - Foundations** |
| 9 | **Service Water Pumps - (GA Item# 96) - Foundations** |
| 8 | **Waste Water Forwarding Pumps - (GA Item# 84) - Foundations** |
| 1 | **Waste Water Tank - (GA Item# 9) - Pile Layout** |
| 7 | **Waste Water Tank - (GA Item# 9) - Foundations** |
| 16 | **CWA-22 - Hydrogen Storage Area** |
| 2 | **Hydrogen Bulk Storage - (GA Item# 54) - Foundations** |
| 2 | **Mechanical** |
| 1 | **CWA-01 - HRSG Area** |

| ID | WBS | Activity | Type | Duration | Start | Finish | Total float | Free float |
| --- | --- | --- | --- | --- | --- | --- | --- | --- |
|  | 3 | **CWA-02 - Turbine Area** |  |  |  |  |  |  |
|  | 2 | **AST - Ammonia Storage & Transfer** |  |  |  |  |  |  |
|  | 16 | **CAI - Instrument Air** |  |  |  |  |  |  |
|  | 7 | **CCW - Closed Cycle Cooling Water** |  |  |  |  |  |  |
|  | 12 | **CTG - Combustion Turbine \ Generator** |  |  |  |  |  |  |
|  | 13 | **DMN - Demineralized Water** |  |  |  |  |  |  |
|  | 14 | **FGS - Fuel Gas Regulating & Conditioning** |  |  |  |  |  |  |
|  | 15 | **FWS - Firewater** |  |  |  |  |  |  |
|  | 17 | **WSP - Potable Water** |  |  |  |  |  |  |
|  | 22 | **WSS - Service Water** |  |  |  |  |  |  |
|  | 23 | **WWC - Waste Water Collection** |  |  |  |  |  |  |
|  | 3 | **Electrical** |  |  |  |  |  |  |
|  | 1 | **CWA-01 - HRSG Area** |  |  |  |  |  |  |
|  | 2 | **CWA-02 - Turbine Area** |  |  |  |  |  |  |
|  | 3 | **CWA-05 - Utility Rack Area** |  |  |  |  |  |  |
|  | 4 | **CWA-06 - ACC Area** |  |  |  |  |  |  |
|  | 5 | **CWA-07 - Emergency Diesel Gen. Area** |  |  |  |  |  |  |
|  | 6 | **CWA-08 - LV Switchgear PDC Area** |  |  |  |  |  |  |
|  | 7 | **CWA-09 - Air Inlet Filter Area** |  |  |  |  |  |  |
|  | 8 | **CWA-10 - Fin Fan Cooler** |  |  |  |  |  |  |
|  | 9 | **CWA-11 - Boiler Feed Pump Bldg Area** |  |  |  |  |  |  |
|  | 10 | **CWA-12 - Control Room \ Admin \ Warehouse** |  |  |  |  |  |  |
|  | 11 | **CWA-13 - GSU** |  |  |  |  |  |  |
|  | 12 | **CWA-14 - Aux Boiler Bldg Area** |  |  |  |  |  |  |
|  | 13 | **CWA-17 - Plant Gas Yard Area** |  |  |  |  |  |  |
|  | 14 | **CWA-19 - Ammonia Storage Tank Area** |  |  |  |  |  |  |
|  | 15 | **CWA-21 - Service \ Fire Protection \ Demin Water Area** |  |  |  |  |  |  |
|  | 16 | **CWA-22 - Hydrogen Storage Area** |  |  |  |  |  |  |
|  | 1 | **Interface Milestones - D&Z** |  |  | 2026-03-03 | 2027-07-19 |  |  |
|  | 4 | **CSA** |  |  | 2026-03-03 | 2027-05-05 |  |  |
|  | 2 | **Pre-Engineered Buildings** |  |  | 2026-03-03 | 2026-07-07 |  |  |
|  | 1 | **Admin \ Control \ Warehouse Building** |  |  | 2026-03-03 | 2026-03-03 |  |  |
| ZE.IM.CSA.3140 |  | Admin \ Control \ Warehouse Building - Technical Req. Package - Issue Rev. 0 \ RFP Package | milestone | 0d | 2026-03-03 | 2026-03-03 | 508d | 0d |

| ID | WBS | Activity | Type | Duration | Start | Finish | Total float | Free float |
| --- | --- | --- | --- | --- | --- | --- | --- | --- |
|  | 3 | **Aux Boiler Building** |  |  | 2026-07-07 | 2026-07-07 |  |  |
| ZE.IM.CSA.3160 |  | Aux Boiler Building - Technical Req. Package - Issue Rev. 0 \ RFP Package | milestone | 0d | 2026-07-07 | 2026-07-07 | 422d | 0d |
|  | 6 | **Structural Steel** |  |  | 2026-06-29 | 2027-05-05 |  |  |
|  | 10 | **CT \ ST & Turbine Building Steel** |  |  | 2026-06-29 | 2027-03-17 |  |  |
| ZE.IM.CSA.3540 |  | Turbine Building Structural Steel Drawings - Issue Rev. A | milestone | 0d | 2026-06-29 | 2026-06-29 | 427d | 187d |
| ZE.IM.CSA.3810 |  | Turbine Building Structural Steel Drawings - Issue Rev. 0 | milestone | 0d | 2026-07-28 | 2026-07-28 | 407d | 182d |
| ZE.IM.CSA.3520 |  | CT Access Platform Drawings - Issue Rev. A | milestone | 0d | 2026-08-28 | 2026-08-28 | 384d | 144d |
| ZE.IM.CSA.3530 |  | ST Access Platform Drawings - Issue Rev. A | milestone | 0d | 2026-08-28 | 2026-08-28 | 384d | 144d |
| ZE.IM.CSA.3570 |  | CT Access Platform Drawings - Issue Rev. 0 | milestone | 0d | 2026-09-21 | 2026-09-21 | 369d | 144d |
| ZE.IM.CSA.3800 |  | ST Access Platform Drawings - Issue Rev. 0 | milestone | 0d | 2026-09-21 | 2026-09-21 | 369d | 144d |
| ZE.IM.CSA.3660 |  | Utility Pipe Rack (West) Drawings - Issue Rev. A | milestone | 0d | 2026-09-28 | 2026-09-28 | 364d | 124d |
| ZE.IM.CSA.3700 |  | Generator Rotor Pull Support Steel & Access Platform Drawings - Issue Rev. A | milestone | 0d | 2026-10-26 | 2026-10-26 | 344d | 104d |
| ZE.IM.CSA.3930 |  | Utility Pipe Rack (West) Drawings - Issue Rev. 0 | milestone | 0d | 2026-10-26 | 2026-10-26 | 344d | 119d |
| ZE.IM.CSA.3980 |  | Generator Rotor Pull Support Steel & Access Platform Drawings - Issue Rev. 0 | milestone | 0d | 2026-11-16 | 2026-11-16 | 329d | 104d |
| ZE.IM.CSA.3990 |  | Lube Oil Structural Steel & Pipe Support Drawings - Issue Rev. A | milestone | 0d | 2027-01-26 | 2027-01-26 | 294d | 54d |
| ZE.IM.CSA.4000 |  | ST Pipe Support Drawings - Issue Rev. A | milestone | 0d | 2027-01-26 | 2027-01-26 | 294d | 54d |
| ZE.IM.CSA.4080 |  | Lube Oil Structural Steel & Pipe Support Drawings - Issue Rev. 0 | milestone | 0d | 2027-02-17 | 2027-02-17 | 279d | 54d |
| ZE.IM.CSA.4090 |  | ST Pipe Support Drawings - Issue Rev. 0 | milestone | 0d | 2027-02-17 | 2027-02-17 | 279d | 54d |
| ZE.IM.CSA.4030 |  | CT Enclosure Roof Guardrail Drawings - Issue Rev. A | milestone | 0d | 2027-02-24 | 2027-02-24 | 274d | 34d |
| ZE.IM.CSA.4100 |  | CT Enclosure Roof Guardrail Drawings - Issue Rev. 0 | milestone | 0d | 2027-03-17 | 2027-03-17 | 259d | 34d |
|  | 4 | **Electrical Equipment Steel** |  |  |  |  |  |  |
|  | 9 | **Miscellaneous Steel** |  |  | 2027-01-28 | 2027-02-19 |  |  |
| ZE.IM.CSA.3970 |  | Misc Valve Access Platform Drawings - Issue Rev. A | milestone | 0d | 2027-01-28 | 2027-01-28 | 292d | 52d |
| ZE.IM.CSA.4070 |  | Misc Valve Access Platform Drawings - Issue Rev. 0 | milestone | 0d | 2027-02-19 | 2027-02-19 | 277d | 52d |

| ID | WBS | Activity | Type | Duration | Start | Finish | Total float | Free float |
| --- | --- | --- | --- | --- | --- | --- | --- | --- |
|  | 8 | **Pipe Rack Steel** |  |  |  |  |  |  |
|  | 1 | **Pipe Support Steel** |  |  | 2027-04-14 | 2027-05-05 |  |  |
| ZE.IM.CSA.4020 |  | Misc Pipe & Electrical Support Drawings - Issue Rev. A | milestone | 0d | 2027-04-14 | 2027-04-14 | 240d | 0d |
| ZE.IM.CSA.4130 |  | Misc Pipe & Electrical Support Drawings - Issue Rev. 0 | milestone | 0d | 2027-05-05 | 2027-05-05 | 225d | 0d |
|  | 3 | **Sumps and Pits Steel** |  |  |  |  |  |  |
|  | 1 | **Mechanical** |  |  | 2026-06-05 | 2027-05-19 |  |  |
|  | 3 | **Lists** |  |  |  |  |  |  |
|  | 2 | **AST - Ammonia Storage & Transfer** |  |  |  |  |  |  |
|  | 4 | **BFW - Boiler Feedwater** |  |  |  |  |  |  |
|  | 16 | **CAI - Instrument Air** |  |  |  |  |  |  |
|  | 5 | **CCF - Steam Cycle & Evaporative Cooler Chemical Feed** |  |  |  |  |  |  |
|  | 7 | **CCW - Closed Cycle Cooling Water** |  |  |  |  |  |  |
|  | 28 | **CGS - Compressed Gas** |  |  |  |  |  |  |
|  | 9 | **CND - Condenser** |  |  |  |  |  |  |
|  | 10 | **CNS - Condensate** |  |  |  |  |  |  |
|  | 11 | **CSA - Cycle Sampling & Analysis** |  |  |  |  |  |  |
|  | 12 | **CTG - Combustion Turbine \ Generator** |  |  |  |  |  |  |
|  | 13 | **DMN - Demineralized Water** |  |  |  |  |  |  |
|  | 14 | **FGS - Fuel Gas Regulating & Conditioning** |  |  |  |  |  |  |
|  | 15 | **FWS - Firewater** |  |  |  |  |  |  |
|  | 18 | **SAB - Auxiliary Boiler** |  |  |  |  |  |  |
|  | 19 | **SAX - Auxiliary Steam** |  |  |  |  |  |  |
|  | 29 | **SHP - High Pressure Steam** |  |  |  |  |  |  |
|  | 30 | **SLP - Low Pressure Steam** |  |  |  |  |  |  |
|  | 31 | **SRC - Steam Reheat (Cold)** |  |  |  |  |  |  |
|  | 6 | **SRH - Steam Reheat (Hot)** |  |  |  |  |  |  |
|  | 21 | **STG - Steam Turbine \ Generator** |  |  |  |  |  |  |
|  | 17 | **WSP - Potable Water** |  |  |  |  |  |  |
|  | 22 | **WSS - Service Water** |  |  |  |  |  |  |
|  | 23 | **WWC - Waste Water Collection** |  |  |  |  |  |  |
|  | 24 | **WWT - Waste Water Treatment** |  |  |  |  |  |  |
|  | 5 | **Pipe - Large Bore Cold** |  |  | 2026-06-17 | 2027-05-19 |  |  |
|  | 7 | **CCW - Closed Cycle Cooling Water** |  |  | 2026-07-22 | 2026-07-22 |  |  |
| ZE.IM.MECH.2300 |  | CCW - Closed Cycle Cooling Water - Large Bore Cold - Piping Isos - Issue Rev. 0 | milestone | 0d | 2026-07-22 | 2026-07-22 | 411d | 196d |

| ID | WBS | Activity | Type | Duration | Start | Finish | Total float | Free float |
| --- | --- | --- | --- | --- | --- | --- | --- | --- |
|  | 9 | **CND - Condenser** |  |  | 2027-01-14 | 2027-01-14 |  |  |
| ZE.IM.MECH.3360 |  | CND - Condenser - Large Bore Cold - Piping Isos - Issue Rev. 0 | milestone | 0d | 2027-01-14 | 2027-01-14 | 301d | 86d |
|  | 1 | **CNE - Condenser Air Extraction** |  |  | 2027-01-14 | 2027-01-14 |  |  |
| ZE.IM.MECH.3370 |  | CNE - Condenser Air Extraction - Large Bore Cold - Piping Isos - Issue Rev. 0 | milestone | 0d | 2027-01-14 | 2027-01-14 | 301d | 86d |
|  | 10 | **CNS - Condensate** |  |  | 2027-01-29 | 2027-01-29 |  |  |
| ZE.IM.MECH.3500 |  | CNS - Condensate - Large Bore Cold - Piping Isos - Issue Rev. 0 | milestone | 0d | 2027-01-29 | 2027-01-29 | 291d | 76d |
|  | 12 | **CTG - Combustion Turbine \ Generator** |  |  | 2027-02-12 | 2027-02-12 |  |  |
| ZE.IM.MECH.3550 |  | CTG - Combustion Turbine \ Generator - Large Bore Cold - Piping Isos - Issue Rev. 0 | milestone | 0d | 2027-02-12 | 2027-02-12 | 281d | 66d |
|  | 13 | **DMN - Demineralized Water** |  |  | 2027-03-01 | 2027-03-01 |  |  |
| ZE.IM.MECH.3620 |  | DMN - Demineralized Water - Large Bore Cold - Piping Isos - Issue Rev. 0 | milestone | 0d | 2027-03-01 | 2027-03-01 | 271d | 56d |
|  | 14 | **FGS - Fuel Gas Regulating & Conditioning** |  |  | 2027-04-06 | 2027-04-06 |  |  |
| ZE.IM.MECH.3690 |  | FGS - Fuel Gas Regulating & Conditioning - Large Bore Cold - Piping Isos - Issue Rev. 0 | milestone | 0d | 2027-04-06 | 2027-04-06 | 246d | 31d |
|  | 15 | **FWS - Firewater** |  |  | 2027-04-20 | 2027-04-20 |  |  |
| ZE.IM.MECH.3750 |  | FWS - Firewater - Large Bore Cold - Piping Isos - Issue Rev. 0 | milestone | 0d | 2027-04-20 | 2027-04-20 | 236d | 21d |
|  | 21 | **STG - Steam Turbine \ Generator** |  |  | 2027-01-26 | 2027-01-26 |  |  |
| ZE.IM.MECH.3470 |  | STG - Steam Turbine \ Generator - Large Bore Cold - Piping Isos - Issue Rev. 0 | milestone | 0d | 2027-01-26 | 2027-01-26 | 294d | 79d |
|  | 17 | **WSP - Potable Water** |  |  | 2026-06-17 | 2026-06-17 |  |  |
| ZE.IM.MECH.2170 |  | WSP - Potable Water - Large Bore Cold - Piping Isos - Issue Rev. 0 | milestone | 0d | 2026-06-17 | 2026-06-17 | 434d | 219d |
|  | 22 | **WSS - Service Water** |  |  | 2026-09-02 | 2026-09-02 |  |  |
| ZE.IM.MECH.2690 |  | WSS - Service Water - Large Bore Cold - Piping Isos - Issue Rev. 0 | milestone | 0d | 2026-09-02 | 2026-09-02 | 381d | 166d |
|  | 23 | **WWC - Waste Water Collection** |  |  | 2026-08-04 | 2026-08-04 |  |  |
| ZE.IM.MECH.2450 |  | WWC - Waste Water Collection - Large Bore Cold - Piping Isos - Issue Rev. 0 | milestone | 0d | 2026-08-04 | 2026-08-04 | 402d | 187d |
|  | 24 | **WWT - Waste Water Treatment** |  |  | 2027-05-19 | 2027-05-19 |  |  |
| ZE.IM.MECH.3850 |  | WWT - Waste Water Treatment - Large Bore Cold - Piping Isos - Issue Rev. 0 | milestone | 0d | 2027-05-19 | 2027-05-19 | 215d | 0d |

| ID | WBS | Activity | Type | Duration | Start | Finish | Total float | Free float |
| --- | --- | --- | --- | --- | --- | --- | --- | --- |
|  | 6 | **Pipe - Large Bore Hot** |  |  | 2026-06-05 | 2026-10-22 |  |  |
|  | 4 | **BFW - Boiler Feedwater** |  |  | 2026-06-05 | 2026-06-05 |  |  |
| ZE.IM.MECH.2060 |  | BFW - Boiler Feedwater - Large Bore Hot - Piping Isos - Update Model based on Stress Report | milestone | 0d | 2026-06-05 | 2026-06-05 | 442d | 96d |
|  | 9 | **CND - Condenser** |  |  | 2026-08-05 | 2026-08-05 |  |  |
| ZE.IM.MECH.2480 |  | CND - Condenser - Large Bore Hot - Piping Isos - Update Model based on Stress Report | milestone | 0d | 2026-08-05 | 2026-08-05 | 401d | 55d |
|  | 1 | **CNE - Condenser Air Extraction** |  |  | 2026-08-05 | 2026-08-05 |  |  |
| ZE.IM.MECH.2490 |  | CNE - Condenser Air Extraction - Large Bore Hot - Piping Isos - Update Model based on Stress Report | milestone | 0d | 2026-08-05 | 2026-08-05 | 401d | 55d |
|  | 14 | **FGS - Fuel Gas Regulating & Conditioning** |  |  | 2026-10-22 | 2026-10-22 |  |  |
| ZE.IM.MECH.2890 |  | FGS - Fuel Gas Regulating & Conditioning - Large Bore Hot - Piping Isos - Update Model based on Stress Report | milestone | 0d | 2026-10-22 | 2026-10-22 | 346d | 0d |
|  | 18 | **SAB - Auxiliary Boiler** |  |  | 2026-07-02 | 2026-07-02 |  |  |
| ZE.IM.MECH.2120 |  | SAB - Auxiliary Boiler - Large Bore Hot - Piping Isos - Update Model based on Stress Report | milestone | 0d | 2026-07-02 | 2026-07-02 | 424d | 78d |
|  | 19 | **SAX - Auxiliary Steam** |  |  | 2026-07-10 | 2026-07-10 |  |  |
| ZE.IM.MECH.2240 |  | SAX - Auxiliary Steam - Large Bore Hot - Piping Isos - Update Model based on Stress Report | milestone | 0d | 2026-07-10 | 2026-07-10 | 419d | 73d |
|  | 29 | **SHP - High Pressure Steam** |  |  | 2026-07-10 | 2026-07-10 |  |  |
| ZE.IM.MECH.2250 |  | SHP - High Pressure Steam - Large Bore Hot - Piping Isos - Update Model based on Stress Report | milestone | 0d | 2026-07-10 | 2026-07-10 | 419d | 73d |
|  | 30 | **SLP - Low Pressure Steam** |  |  | 2026-07-24 | 2026-07-24 |  |  |
| ZE.IM.MECH.2410 |  | SLP - Low Pressure Steam - Large Bore Hot - Piping Isos - Update Model based on Stress Report | milestone | 0d | 2026-07-24 | 2026-07-24 | 409d | 63d |
|  | 31 | **SRC - Steam Reheat (Cold)** |  |  | 2026-07-24 | 2026-07-24 |  |  |
| ZE.IM.MECH.2420 |  | SRC - Steam Reheat (Cold) - Large Bore Hot - Piping Isos - Update Model based on Stress Report | milestone | 0d | 2026-07-24 | 2026-07-24 | 409d | 63d |
|  | 6 | **SRH - Steam Reheat (Hot)** |  |  | 2026-07-10 | 2026-07-10 |  |  |
| ZE.IM.MECH.2260 |  | SRH - Steam Reheat (Hot) - Large Bore Hot - Piping Isos - Update Model based on Stress Report | milestone | 0d | 2026-07-10 | 2026-07-10 | 419d | 73d |
|  | 21 | **STG - Steam Turbine \ Generator** |  |  | 2026-08-07 | 2026-08-07 |  |  |
| ZE.IM.MECH.2560 |  | STG - Steam Turbine \ Generator - Large Bore Hot - Piping Isos - Update Model based on Stress Report | milestone | 0d | 2026-08-07 | 2026-08-07 | 399d | 53d |
|  | 7 | **Pipe - Small Bore Cold** |  |  | 2026-07-24 | 2027-05-19 |  |  |
|  | 2 | **AST - Ammonia Storage & Transfer** |  |  | 2026-07-24 | 2026-08-07 |  |  |
| ZE.IM.MECH.2230 |  | AST - Ammonia Storage & Transfer - Small Bore Cold - Piping Isos - 3D Modeling \ Routing | milestone | 0d | 2026-07-24 | 2026-07-24 | 409d | 184d |
| ZE.IM.MECH.2340 |  | AST - Ammonia Storage & Transfer - Small Bore Cold - Piping Isos - Issue Rev. 0 | milestone | 0d | 2026-08-07 | 2026-08-07 | 399d | 184d |

| ID | WBS | Activity | Type | Duration | Start | Finish | Total float | Free float |
| --- | --- | --- | --- | --- | --- | --- | --- | --- |
|  | 16 | **CAI - Instrument Air** |  |  | 2026-08-07 | 2026-08-21 |  |  |
| ZE.IM.MECH.2330 |  | CAI - Instrument Air - Small Bore Cold - Piping Isos - 3D Modeling \ Routing | milestone | 0d | 2026-08-07 | 2026-08-07 | 399d | 174d |
| ZE.IM.MECH.2500 |  | CAI - Instrument Air - Small Bore Cold - Piping Isos - Issue Rev. 0 | milestone | 0d | 2026-08-21 | 2026-08-21 | 389d | 174d |
|  | 5 | **CCF - Steam Cycle & Evaporative Cooler Chemical Feed** |  |  | 2026-11-06 | 2026-11-20 |  |  |
| ZE.IM.MECH.3050 |  | CCF - Steam Cycle & Evaporative Cooler Chemical Feed - Small Bore Cold - Piping Isos - 3D Modeling \ Routing | milestone | 0d | 2026-11-06 | 2026-11-06 | 335d | 110d |
| ZE.IM.MECH.3200 |  | CCF - Steam Cycle & Evaporative Cooler Chemical Feed - Small Bore Cold - Piping Isos - Issue Rev. 0 | milestone | 0d | 2026-11-20 | 2026-11-20 | 325d | 110d |
|  | 7 | **CCW - Closed Cycle Cooling Water** |  |  | 2026-11-06 | 2026-11-20 |  |  |
| ZE.IM.MECH.3040 |  | CCW - Closed Cycle Cooling Water - Small Bore Cold - Piping Isos - 3D Modeling \ Routing | milestone | 0d | 2026-11-06 | 2026-11-06 | 335d | 110d |
| ZE.IM.MECH.3210 |  | CCW - Closed Cycle Cooling Water - Small Bore Cold - Piping Isos - Issue Rev. 0 | milestone | 0d | 2026-11-20 | 2026-11-20 | 325d | 110d |
|  | 28 | **CGS - Compressed Gas** |  |  | 2026-08-07 | 2026-08-21 |  |  |
| ZE.IM.MECH.2320 |  | CGS - Compressed Gas - Small Bore Cold - Piping Isos - 3D Modeling \ Routing | milestone | 0d | 2026-08-07 | 2026-08-07 | 399d | 174d |
| ZE.IM.MECH.2510 |  | CGS - Compressed Gas - Small Bore Cold - Piping Isos - Issue Rev. 0 | milestone | 0d | 2026-08-21 | 2026-08-21 | 389d | 174d |
|  | 10 | **CNS - Condensate** |  |  | 2026-11-06 | 2026-11-20 |  |  |
| ZE.IM.MECH.3060 |  | CNS - Condensate - Small Bore Cold - Piping Isos - 3D Modeling \ Routing | milestone | 0d | 2026-11-06 | 2026-11-06 | 335d | 110d |
| ZE.IM.MECH.3190 |  | CNS - Condensate - Small Bore Cold - Piping Isos - Issue Rev. 0 | milestone | 0d | 2026-11-20 | 2026-11-20 | 325d | 110d |
|  | 11 | **CSA - Cycle Sampling & Analysis** |  |  | 2027-02-01 | 2027-02-16 |  |  |
| ZE.IM.MECH.3510 |  | CSA - Cycle Sampling & Analysis - Small Bore Cold - Piping Isos - 3D Modeling \ Routing | milestone | 0d | 2027-02-01 | 2027-02-01 | 290d | 65d |
| ZE.IM.MECH.3570 |  | CSA - Cycle Sampling & Analysis - Small Bore Cold - Piping Isos - Issue Rev. 0 | milestone | 0d | 2027-02-16 | 2027-02-16 | 280d | 65d |
|  | 12 | **CTG - Combustion Turbine \ Generator** |  |  | 2027-03-30 | 2027-04-13 |  |  |
| ZE.IM.MECH.3660 |  | CTG - Combustion Turbine \ Generator - Small Bore Cold - Piping Isos - 3D Modeling \ Routing | milestone | 0d | 2027-03-30 | 2027-03-30 | 251d | 26d |
| ZE.IM.MECH.3710 |  | CTG - Combustion Turbine \ Generator - Small Bore Cold - Piping Isos - Issue Rev. 0 | milestone | 0d | 2027-04-13 | 2027-04-13 | 241d | 26d |
|  | 13 | **DMN - Demineralized Water** |  |  | 2027-04-13 | 2027-04-27 |  |  |
| ZE.IM.MECH.3720 |  | DMN - Demineralized Water - Small Bore Cold - Piping Isos - 3D Modeling \ Routing | milestone | 0d | 2027-04-13 | 2027-04-13 | 241d | 16d |
| ZE.IM.MECH.3790 |  | DMN - Demineralized Water - Small Bore Cold - Piping Isos - Issue Rev. 0 | milestone | 0d | 2027-04-27 | 2027-04-27 | 231d | 16d |

| ID | WBS | Activity | Type | Duration | Start | Finish | Total float | Free float |
| --- | --- | --- | --- | --- | --- | --- | --- | --- |
|  | 14 | **FGS - Fuel Gas Regulating & Conditioning** |  |  | 2027-04-13 | 2027-04-27 |  |  |
| ZE.IM.MECH.3730 |  | FGS - Fuel Gas Regulating & Conditioning - Small Bore Cold - Piping Isos - 3D Modeling \ Routing | milestone | 0d | 2027-04-13 | 2027-04-13 | 241d | 16d |
| ZE.IM.MECH.3780 |  | FGS - Fuel Gas Regulating & Conditioning - Small Bore Cold - Piping Isos - Issue Rev. 0 | milestone | 0d | 2027-04-27 | 2027-04-27 | 231d | 16d |
|  | 18 | **SAB - Auxiliary Boiler** |  |  | 2026-09-14 | 2026-09-28 |  |  |
| ZE.IM.MECH.2620 |  | SAB - Auxiliary Boiler - Small Bore Cold - Piping Isos - 3D Modeling \ Routing | milestone | 0d | 2026-09-14 | 2026-09-14 | 374d | 149d |
| ZE.IM.MECH.2710 |  | SAB - Auxiliary Boiler - Small Bore Cold - Piping Isos - Issue Rev. 0 | milestone | 0d | 2026-09-28 | 2026-09-28 | 364d | 149d |
|  | 21 | **STG - Steam Turbine \ Generator** |  |  | 2027-01-11 | 2027-01-26 |  |  |
| ZE.IM.MECH.3290 |  | STG - Steam Turbine \ Generator - Small Bore Cold - Piping Isos - 3D Modeling \ Routing | milestone | 0d | 2027-01-11 | 2027-01-11 | 304d | 79d |
| ZE.IM.MECH.3460 |  | STG - Steam Turbine \ Generator - Small Bore Cold - Piping Isos - Issue Rev. 0 | milestone | 0d | 2027-01-26 | 2027-01-26 | 294d | 79d |
|  | 17 | **WSP - Potable Water** |  |  | 2027-01-11 | 2027-01-26 |  |  |
| ZE.IM.MECH.3300 |  | WSP - Potable Water - Small Bore Cold - Piping Isos - 3D Modeling \ Routing | milestone | 0d | 2027-01-11 | 2027-01-11 | 304d | 79d |
| ZE.IM.MECH.3450 |  | WSP - Potable Water - Small Bore Cold - Piping Isos - Issue Rev. 0 | milestone | 0d | 2027-01-26 | 2027-01-26 | 294d | 79d |
|  | 22 | **WSS - Service Water** |  |  | 2027-01-11 | 2027-01-26 |  |  |
| ZE.IM.MECH.3310 |  | WSS - Service Water - Small Bore Cold - Piping Isos - 3D Modeling \ Routing | milestone | 0d | 2027-01-11 | 2027-01-11 | 304d | 79d |
| ZE.IM.MECH.3440 |  | WSS - Service Water - Small Bore Cold - Piping Isos - Issue Rev. 0 | milestone | 0d | 2027-01-26 | 2027-01-26 | 294d | 79d |
|  | 23 | **WWC - Waste Water Collection** |  |  | 2027-01-11 | 2027-01-26 |  |  |
| ZE.IM.MECH.3320 |  | WWC - Waste Water Collection - Small Bore Cold - Piping Isos - 3D Modeling \ Routing | milestone | 0d | 2027-01-11 | 2027-01-11 | 304d | 79d |
| ZE.IM.MECH.3430 |  | WWC - Waste Water Collection - Small Bore Cold - Piping Isos - Issue Rev. 0 | milestone | 0d | 2027-01-26 | 2027-01-26 | 294d | 79d |
|  | 24 | **WWT - Waste Water Treatment** |  |  | 2027-05-05 | 2027-05-19 |  |  |
| ZE.IM.MECH.3810 |  | WWT - Waste Water Treatment - Small Bore Cold - Piping Isos - 3D Modeling \ Routing | milestone | 0d | 2027-05-05 | 2027-05-05 | 225d | 0d |
| ZE.IM.MECH.3840 |  | WWT - Waste Water Treatment - Small Bore Cold - Piping Isos - Issue Rev. 0 | milestone | 0d | 2027-05-19 | 2027-05-19 | 215d | 0d |
|  | 8 | **Pipe - Small Bore Hot** |  |  |  |  |  |  |
|  | 4 | **BFW - Boiler Feedwater** |  |  |  |  |  |  |
|  | 9 | **CND - Condenser** |  |  |  |  |  |  |
|  | 1 | **CNE - Condenser Air Extraction** |  |  |  |  |  |  |
|  | 11 | **CSA - Cycle Sampling & Analysis** |  |  |  |  |  |  |
|  | 14 | **FGS - Fuel Gas Regulating & Conditioning** |  |  |  |  |  |  |
|  | 18 | **SAB - Auxiliary Boiler** |  |  |  |  |  |  |
|  | 19 | **SAX - Auxiliary Steam** |  |  |  |  |  |  |
|  | 29 | **SHP - High Pressure Steam** |  |  |  |  |  |  |
|  | 30 | **SLP - Low Pressure Steam** |  |  |  |  |  |  |
|  | 31 | **SRC - Steam Reheat (Cold)** |  |  |  |  |  |  |
|  | 6 | **SRH - Steam Reheat (Hot)** |  |  |  |  |  |  |
|  | 21 | **STG - Steam Turbine \ Generator** |  |  |  |  |  |  |
|  | 13 | **Pipe Supports - Large Bore Cold** |  |  |  |  |  |  |
|  | 14 | **Pipe Supports - Large Bore Hot** |  |  |  |  |  |  |
|  | 16 | **Pipe Supports - Small Bore Cold** |  |  |  |  |  |  |
|  | 15 | **Pipe Supports - Small Bore Hot** |  |  |  |  |  |  |
|  | 1 | **Valves** |  |  |  |  |  |  |
|  | 2 | **Electrical** |  |  | 2026-03-17 | 2027-07-19 |  |  |
|  | 7 | **Power Distribution (One \ Three Lines)** |  |  |  |  |  |  |
|  | 1 | **Specifications** |  |  |  |  |  |  |
|  | 16 | **Heat Trace** |  |  |  |  |  |  |
|  | 19 | **Lightning Protection** |  |  |  |  |  |  |
|  | 10 | **Wire & Cable** |  |  |  |  |  |  |
|  | 2 | **Arrangements \ Layouts** |  |  |  |  |  |  |
|  | 3 | **Cable Tray** |  |  | 2026-12-04 | 2027-06-25 |  |  |
|  | 1 | **CWA-01 - HRSG Area** |  |  | 2026-12-04 | 2026-12-04 |  |  |
| ZE.IM.ELEC.2720 |  | CWA-01 (HRSG Area) - Cable Tray Drawings - HRSG Area - Issue Rev. 0 | milestone | 0d | 2026-12-04 | 2026-12-04 | 320d | 130d |
| ZE.IM.ELEC.2740 |  | CWA-01 (HRSG Area) - Cable Tray Drawings - CEMS \ SCR - Issue Rev. 0 | milestone | 0d | 2026-12-04 | 2026-12-04 | 320d | 130d |

| ID | WBS | Activity | Type | Duration | Start | Finish | Total float | Free float |
| --- | --- | --- | --- | --- | --- | --- | --- | --- |
|  | 2 | **CWA-02 - Turbine Area** |  |  | 2027-01-15 | 2027-01-15 |  |  |
| ZE.IM.ELEC.3300 |  | CWA-02 (Turbine Area) - Cable Tray Drawings - CT \ ST Area - Issue Rev. 0 | milestone | 0d | 2027-01-15 | 2027-01-15 | 300d | 110d |
|  | 3 | **CWA-05 - Utility Rack Area** |  |  | 2027-02-01 | 2027-02-01 |  |  |
| ZE.IM.ELEC.3560 |  | CWA-05 (Utility Rack Area) - Cable Tray Drawings - Utility Rack Area - Issue Rev. 0 | milestone | 0d | 2027-02-01 | 2027-02-01 | 290d | 100d |
|  | 4 | **CWA-06 - ACC Area** |  |  | 2027-02-16 | 2027-02-16 |  |  |
| ZE.IM.ELEC.3640 |  | CWA-06 (ACC Area) - Cable Tray Drawings - ACC Area - Issue Rev. 0 | milestone | 0d | 2027-02-16 | 2027-02-16 | 280d | 90d |
|  | 6 | **CWA-08 - LV Switchgear PDC Area** |  |  | 2027-04-28 | 2027-04-28 |  |  |
| ZE.IM.ELEC.4110 |  | CWA-08 (LV Switchgear PDC Area) - Cable Tray Drawings - Battery Compartment - Issue Rev. 0 | milestone | 0d | 2027-04-28 | 2027-04-28 | 230d | 40d |
| ZE.IM.ELEC.4120 |  | CWA-08 (LV Switchgear PDC Area) - Cable Tray Drawings - PEEEC - Issue Rev. 0 | milestone | 0d | 2027-04-28 | 2027-04-28 | 230d | 40d |
|  | 7 | **CWA-09 - Air Inlet Filter Area** |  |  | 2027-03-23 | 2027-03-23 |  |  |
| ZE.IM.ELEC.3960 |  | CWA-09 (Air Inlet Filter Area) - Cable Tray Drawings - Air Inlet Filter Area - Issue Rev. 0 | milestone | 0d | 2027-03-23 | 2027-03-23 | 255d | 65d |
|  | 8 | **CWA-10 - Fin Fan Cooler** |  |  | 2027-05-12 | 2027-05-12 |  |  |
| ZE.IM.ELEC.4150 |  | CWA-10 (Fin Fan Cooler Area) - Cable Tray Drawings - Fin Fan Cooler Area - Issue Rev. 0 | milestone | 0d | 2027-05-12 | 2027-05-12 | 220d | 30d |
|  | 9 | **CWA-11 - Boiler Feed Pump Bldg Area** |  |  | 2027-06-03 | 2027-06-03 |  |  |
| ZE.IM.ELEC.4200 |  | CWA-11 (Boiler Feed Pump Bldg Area) - Cable Tray Drawings - Boiler Feed Pump Bldg Area - Issue Rev. 0 | milestone | 0d | 2027-06-03 | 2027-06-03 | 205d | 15d |
|  | 10 | **CWA-12 - Control Room \ Admin \ Warehouse** |  |  | 2027-06-25 | 2027-06-25 |  |  |
| ZE.IM.ELEC.4210 |  | CWA-12 (Control Room \ Admin\ Warehouse Area) - Cable Tray Drawings - Issue Rev. 0 | milestone | 0d | 2027-06-25 | 2027-06-25 | 190d | 0d |
|  | 11 | **CWA-13 - GSU** |  |  | 2027-03-31 | 2027-03-31 |  |  |
| ZE.IM.ELEC.4020 |  | CWA-13 (GSU Area) - Cable Tray Drawings - Main PDC - Issue Rev. 0 | milestone | 0d | 2027-03-31 | 2027-03-31 | 250d | 60d |
| ZE.IM.ELEC.4030 |  | CWA-13 (GSU Area) - Cable Tray Drawings - LCI \ Excitation Compartment - Issue Rev. 0 | milestone | 0d | 2027-03-31 | 2027-03-31 | 250d | 60d |
|  | 12 | **CWA-14 - Aux Boiler Bldg Area** |  |  | 2027-06-25 | 2027-06-25 |  |  |
| ZE.IM.ELEC.4220 |  | CWA-14 (Aux Boiler Bldg Area) - Cable Tray Drawings - Aux Boiler Bldg - Issue Rev. 0 | milestone | 0d | 2027-06-25 | 2027-06-25 | 190d | 0d |
|  | 5 | **Lighting** |  |  | 2026-03-17 | 2026-11-10 |  |  |
|  | 1 | **CWA-01 - HRSG Area** |  |  | 2026-08-31 | 2026-08-31 |  |  |
| ZE.IM.ELEC.2160 |  | CWA-01 (HRSG Area) - Area Lighting Plans - Issue Rev. 0 | milestone | 0d | 2026-08-31 | 2026-08-31 | 383d | 50d |

| ID | WBS | Activity | Type | Duration | Start | Finish | Total float | Free float |
| --- | --- | --- | --- | --- | --- | --- | --- | --- |
|  | 2 | **CWA-02 - Turbine Area** |  |  | 2026-09-22 | 2026-09-22 |  |  |
| ZE.IM.ELEC.2410 |  | CWA-02 (Turbine Area) - Area Lighting Plans - Issue Rev. 0 | milestone | 0d | 2026-09-22 | 2026-09-22 | 368d | 35d |
|  | 3 | **CWA-05 - Utility Rack Area** |  |  | 2026-10-06 | 2026-10-06 |  |  |
| ZE.IM.ELEC.2430 |  | CWA-05 (Utility Rack Area) - Area Lighting Plans - Issue Rev. 0 | milestone | 0d | 2026-10-06 | 2026-10-06 | 358d | 25d |
|  | 4 | **CWA-06 - ACC Area** |  |  | 2026-10-27 | 2026-10-27 |  |  |
| ZE.IM.ELEC.2580 |  | CWA-06 (ACC Area) - Area Lighting Plans - Issue Rev. 0 | milestone | 0d | 2026-10-27 | 2026-10-27 | 343d | 10d |
|  | 5 | **CWA-07 - Emergency Diesel Gen. Area** |  |  | 2026-11-10 | 2026-11-10 |  |  |
| ZE.IM.ELEC.2620 |  | CWA-07 (Emergency Diesel Generator Area) - Area Lighting Plans - Issue Rev. 0 | milestone | 0d | 2026-11-10 | 2026-11-10 | 333d | 0d |
|  | 6 | **CWA-08 - LV Switchgear PDC Area** |  |  | 2026-03-17 | 2026-03-17 |  |  |
| ZE.IM.ELEC.1980 |  | CWA-08 (LV Switchgear PDC Area) - Area Lighting Plans - Issue Rev. 0 | milestone | 0d | 2026-03-17 | 2026-03-17 | 498d | 165d |
|  | 7 | **CWA-09 - Air Inlet Filter Area** |  |  | 2026-03-17 | 2026-03-17 |  |  |
| ZE.IM.ELEC.1990 |  | CWA-09 (Air Inlet Filter Area) - Area Lighting Plans - Issue Rev. 0 | milestone | 0d | 2026-03-17 | 2026-03-17 | 498d | 165d |
|  | 8 | **CWA-10 - Fin Fan Cooler** |  |  | 2026-03-17 | 2026-03-17 |  |  |
| ZE.IM.ELEC.2000 |  | CWA-10 (Fin Fan Cooler Area) - Area Lighting Plans - Issue Rev. 0 | milestone | 0d | 2026-03-17 | 2026-03-17 | 498d | 165d |
|  | 9 | **CWA-11 - Boiler Feed Pump Bldg Area** |  |  | 2026-03-17 | 2026-03-17 |  |  |
| ZE.IM.ELEC.2010 |  | CWA-11 (Boiler Feed Pump Bldg Area) - Area Lighting Plans - Issue Rev. 0 | milestone | 0d | 2026-03-17 | 2026-03-17 | 498d | 165d |
|  | 10 | **CWA-12 - Control Room \ Admin \ Warehouse** |  |  | 2026-03-17 | 2026-03-17 |  |  |
| ZE.IM.ELEC.2020 |  | CWA-12 (Control Room \ Admin \ Warehouse Area) - Area Lighting Plans - Issue Rev. 0 | milestone | 0d | 2026-03-17 | 2026-03-17 | 498d | 165d |
|  | 11 | **CWA-13 - GSU** |  |  | 2026-03-17 | 2026-03-17 |  |  |
| ZE.IM.ELEC.2030 |  | CWA-13 (GSU Area) - Area Lighting Plans - Issue Rev. 0 | milestone | 0d | 2026-03-17 | 2026-03-17 | 498d | 165d |
|  | 12 | **CWA-14 - Aux Boiler Bldg Area** |  |  | 2026-03-17 | 2026-03-17 |  |  |
| ZE.IM.ELEC.2040 |  | CWA-14 (Aux Boiler Bldg Area) - Area Lighting Plans - Issue Rev. 0 | milestone | 0d | 2026-03-17 | 2026-03-17 | 498d | 165d |
|  | 13 | **CWA-17 - Plant Gas Yard Area** |  |  | 2026-03-17 | 2026-03-17 |  |  |
| ZE.IM.ELEC.2050 |  | CWA-17 (Plant Gas Yard Area) - Area Lighting Plans - Issue Rev. 0 | milestone | 0d | 2026-03-17 | 2026-03-17 | 498d | 165d |

| ID | WBS | Activity | Type | Duration | Start | Finish | Total float | Free float |
| --- | --- | --- | --- | --- | --- | --- | --- | --- |
|  | 14 | **CWA-19 - Ammonia Storage Tank Area** |  |  | 2026-03-17 | 2026-03-17 |  |  |
| ZE.IM.ELEC.2060 |  | CWA-19 (Ammonia Storage Tank Area) - Area Lighting Plans - Issue Rev. 0 | milestone | 0d | 2026-03-17 | 2026-03-17 | 498d | 165d |
|  | 15 | **CWA-21 - Service \ Fire Protection \ Demin Water Area** |  |  | 2026-03-17 | 2026-03-17 |  |  |
| ZE.IM.ELEC.2070 |  | CWA-21 (Service \ Fire Protection \ Demin Tank Area) - Area Lighting Plans - Issue Rev. 0 | milestone | 0d | 2026-03-17 | 2026-03-17 | 498d | 165d |
|  | 16 | **CWA-22 - Hydrogen Storage Area** |  |  | 2026-03-17 | 2026-03-17 |  |  |
| ZE.IM.ELEC.2080 |  | CWA-22 (Hydrogen Storage Area) - Area Lighting Plans - Issue Rev. 0 | milestone | 0d | 2026-03-17 | 2026-03-17 | 498d | 165d |
|  | 8 | **Relay Settings** |  |  |  |  |  |  |
|  | 9 | **Wiring & Cable Routing** |  |  | 2027-01-08 | 2027-07-19 |  |  |
|  | 1 | **AST - Ammonia Storage & Transfer System** |  |  | 2027-01-08 | 2027-01-08 |  |  |
| ZE.IM.ELEC.3010 |  | AST - Ammonia Storage & Transfer - Cable Routing Diagrams - Issue Rev. 0 | milestone | 0d | 2027-01-08 | 2027-01-08 | 305d | 130d |
|  | 2 | **BBS - Boiler Blowdown System** |  |  | 2027-01-08 | 2027-01-08 |  |  |
| ZE.IM.ELEC.3020 |  | BBS - Boiler Blowdown - Cable Routing Diagrams - Issue Rev. 0 | milestone | 0d | 2027-01-08 | 2027-01-08 | 305d | 130d |
|  | 10 | **CCS - CO Catalyst System** |  |  | 2027-05-05 | 2027-05-05 |  |  |
| ZE.IM.ELEC.4090 |  | CCS - CO Catalyst System - Cable Routing Diagrams - Issue Rev. 0 | milestone | 0d | 2027-05-05 | 2027-05-05 | 225d | 50d |
|  | 11 | **CCW - Closed Cycle Cooling Water System** |  |  | 2027-01-08 | 2027-01-08 |  |  |
| ZE.IM.ELEC.3070 |  | CCW - Closed Cycle Cooling Water - Cable Routing Diagrams - Issue Rev. 0 | milestone | 0d | 2027-01-08 | 2027-01-08 | 305d | 130d |
|  | 12 | **CEM - Continuous Emissions Monitoring System (CEMS)** |  |  | 2027-01-08 | 2027-01-08 |  |  |
| ZE.IM.ELEC.3080 |  | CEM - Continuous Emissions Monitoring System - Cable Routing Diagrams - Issue Rev. 0 | milestone | 0d | 2027-01-08 | 2027-01-08 | 305d | 130d |
|  | 13 | **CMT - Cycle Makeup Treatment** |  |  | 2027-04-07 | 2027-04-07 |  |  |
| ZE.IM.ELEC.3970 |  | CMT - Cycle Makeup Treatment - Cable Routing Diagrams - Issue Rev. 0 | milestone | 0d | 2027-04-07 | 2027-04-07 | 245d | 70d |
|  | 14 | **CND - Condensor** |  |  | 2027-01-08 | 2027-01-08 |  |  |
| ZE.IM.ELEC.3090 |  | CND - Condensor - Cable Routing Diagrams - Issue Rev. 0 | milestone | 0d | 2027-01-08 | 2027-01-08 | 305d | 130d |
|  | 15 | **CNE - Condensor Air Extraction System** |  |  | 2027-02-08 | 2027-02-08 |  |  |
| ZE.IM.ELEC.3450 |  | CNE - Condensor Air Extraction - Cable Routing Diagrams - Issue Rev. 0 | milestone | 0d | 2027-02-08 | 2027-02-08 | 285d | 110d |

| ID | WBS | Activity | Type | Duration | Start | Finish | Total float | Free float |
| --- | --- | --- | --- | --- | --- | --- | --- | --- |
|  | 16 | **CNS - Condensate System** |  |  | 2027-03-09 | 2027-03-09 |  |  |
| ZE.IM.ELEC.3750 |  | CNS - Condensate System - Cable Routing Diagrams - Issue Rev. 0 | milestone | 0d | 2027-03-09 | 2027-03-09 | 265d | 90d |
|  | 17 | **CSA - Cycle (Water\Steam) Sampling & Analysis System** |  |  | 2027-02-08 | 2027-02-08 |  |  |
| ZE.IM.ELEC.3460 |  | CSA - Cycle (Water\Steam) Sampling & Analysis - Cable Routing Diagrams - Issue Rev. 0 | milestone | 0d | 2027-02-08 | 2027-02-08 | 285d | 110d |
|  | 18 | **CTE - CT Inlet Evap Cooler System** |  |  | 2027-02-08 | 2027-02-08 |  |  |
| ZE.IM.ELEC.3470 |  | CTE - CT Inlet Evap Cooler System - Cable Routing Diagrams - Issue Rev. 0 | milestone | 0d | 2027-02-08 | 2027-02-08 | 285d | 110d |
|  | 19 | **CTG - Combustion Turbine \ Generator** |  |  | 2027-01-08 | 2027-01-08 |  |  |
| ZE.IM.ELEC.3100 |  | CTG - Combustion Turbine \ Generator - Cable Routing Diagrams - Issue Rev. 0 | milestone | 0d | 2027-01-08 | 2027-01-08 | 305d | 130d |
|  | 20 | **CTW - CT Water Wash System** |  |  | 2027-03-09 | 2027-03-09 |  |  |
| ZE.IM.ELEC.3760 |  | CTW - CT Water Wash System - Cable Routing Diagrams - Issue Rev. 0 | milestone | 0d | 2027-03-09 | 2027-03-09 | 265d | 90d |
|  | 21 | **DBU - Duct Burner Unit** |  |  | 2027-07-19 | 2027-07-19 |  |  |
| ZE.IM.ELEC.4250 |  | DBU - Duct Burner Unit - Cable Routing Diagrams - Issue Rev. 0 | milestone | 0d | 2027-07-19 | 2027-07-19 | 175d | 0d |
|  | 22 | **DMN - Demineralized Water System** |  |  | 2027-01-08 | 2027-01-08 |  |  |
| ZE.IM.ELEC.3110 |  | DMN - Demineralized Water System - Cable Routing Diagrams - Issue Rev. 0 | milestone | 0d | 2027-01-08 | 2027-01-08 | 305d | 130d |
|  | 23 | **EDC - DC Power System** |  |  | 2027-03-03 | 2027-03-03 |  |  |
| ZE.IM.ELEC.3710 |  | EDC - DC Power System - Cable Routing Diagrams - Issue Rev. 0 | milestone | 0d | 2027-03-03 | 2027-03-03 | 269d | 94d |
|  | 24 | **EDG - Emergency Diesel Generator System** |  |  | 2027-03-12 | 2027-03-12 |  |  |
| ZE.IM.ELEC.3800 |  | EDG - Emergency Diesel Generator - Cable Routing Diagrams - Issue Rev. 0 | milestone | 0d | 2027-03-12 | 2027-03-12 | 262d | 87d |
|  | 25 | **EEP - Essential Electrical System** |  |  | 2027-02-08 | 2027-02-08 |  |  |
| ZE.IM.ELEC.3480 |  | EEP - Essential Electrical System - Cable Routing Diagrams - Issue Rev. 0 | milestone | 0d | 2027-02-08 | 2027-02-08 | 285d | 110d |
|  | 27 | **ELA - Low Voltage AC Power System (480V)** |  |  | 2027-03-25 | 2027-03-25 |  |  |
| ZE.IM.ELEC.3880 |  | ELA - LV AC Power System (480V) - Cable Routing Diagrams - Issue Rev. 0 | milestone | 0d | 2027-03-25 | 2027-03-25 | 253d | 78d |
|  | 29 | **ELS - Emergency Lighting System** |  |  | 2027-01-08 | 2027-01-08 |  |  |
| ZE.IM.ELEC.3120 |  | ELS - Emergency Lighting System - Cable Routing Diagrams - Issue Rev. 0 | milestone | 0d | 2027-01-08 | 2027-01-08 | 305d | 130d |

| ID | WBS | Activity | Type | Duration | Start | Finish | Total float | Free float |
| --- | --- | --- | --- | --- | --- | --- | --- | --- |
|  | 3 | **BFW - Boiler Feed Water System** |  |  | 2027-01-08 | 2027-01-08 |  |  |
| ZE.IM.ELEC.3030 |  | BFW - Boiler Feed Water - Cable Routing Diagrams - Issue Rev. 0 | milestone | 0d | 2027-01-08 | 2027-01-08 | 305d | 130d |
|  | 30 | **EMB - Medium Voltage AC Power System (6.9kV)** |  |  | 2027-01-08 | 2027-01-08 |  |  |
| ZE.IM.ELEC.3130 |  | EMB - MV AC Power System (6.9kV) - Cable Routing Diagrams - Issue Rev. 0 | milestone | 0d | 2027-01-08 | 2027-01-08 | 305d | 130d |
|  | 31 | **EMC - Medium Voltage AC Power System (8kV - 34kV)** |  |  | 2027-02-08 | 2027-02-08 |  |  |
| ZE.IM.ELEC.3490 |  | EMC - MV AC Power System (8kV - 34kV) - Cable Routing Diagrams - Issue Rev. 0 | milestone | 0d | 2027-02-08 | 2027-02-08 | 285d | 110d |
|  | 32 | **FDS - Fire Detection System** |  |  | 2027-01-08 | 2027-01-08 |  |  |
| ZE.IM.ELEC.3140 |  | FDS - Fire Detection System - Cable Routing Diagrams - Issue Rev. 0 | milestone | 0d | 2027-01-08 | 2027-01-08 | 305d | 130d |
|  | 33 | **FGS - Fuel Gas Supply System** |  |  | 2027-01-08 | 2027-01-08 |  |  |
| ZE.IM.ELEC.3150 |  | FGS - Fuel Gas Supply System - Cable Routing Diagrams - Issue Rev. 0 | milestone | 0d | 2027-01-08 | 2027-01-08 | 305d | 130d |
|  | 34 | **FPA - Plant Fire Protection** |  |  | 2027-01-08 | 2027-01-08 |  |  |
| ZE.IM.ELEC.3160 |  | FPA - Plant Fire Protection - Cable Routing Diagrams - Issue Rev. 0 | milestone | 0d | 2027-01-08 | 2027-01-08 | 305d | 130d |
|  | 35 | **FWS - Fire Water System** |  |  | 2027-02-08 | 2027-02-08 |  |  |
| ZE.IM.ELEC.3500 |  | FWS - Fire Water System - Cable Routing Diagrams - Issue Rev. 0 | milestone | 0d | 2027-02-08 | 2027-02-08 | 285d | 110d |
|  | 36 | **GCB - Generator Circuit Breaker** |  |  | 2027-01-08 | 2027-01-08 |  |  |
| ZE.IM.ELEC.3170 |  | GCB - Generator Circuit Breaker - Cable Routing Diagrams - Issue Rev. 0 | milestone | 0d | 2027-01-08 | 2027-01-08 | 305d | 130d |
|  | 37 | **GSU - Generator Step Up Transformer** |  |  | 2027-04-07 | 2027-04-07 |  |  |
| ZE.IM.ELEC.3980 |  | GSU - Generator Step Up Transformer - Cable Routing Diagrams - Issue Rev. 0 | milestone | 0d | 2027-04-07 | 2027-04-07 | 245d | 70d |
|  | 38 | **GVA - Generator & Excitation** |  |  | 2027-03-03 | 2027-03-03 |  |  |
| ZE.IM.ELEC.3720 |  | GVA - Generator & Excitation - Cable Routing Diagrams - Issue Rev. 0 | milestone | 0d | 2027-03-03 | 2027-03-03 | 269d | 94d |
|  | 39 | **HRS - Heat Recovery Steam Generator** |  |  | 2027-02-08 | 2027-02-08 |  |  |
| ZE.IM.ELEC.3510 |  | HRS - Heat Recovery Steam Generator - Cable Routing Diagrams - Issue Rev. 0 | milestone | 0d | 2027-02-08 | 2027-02-08 | 285d | 110d |
|  | 4 | **BLA - Admin \ Control Building** |  |  | 2027-01-08 | 2027-01-08 |  |  |
| ZE.IM.ELEC.3040 |  | BLA - Admin \ Control Building - Cable Routing Diagrams - Issue Rev. 0 | milestone | 0d | 2027-01-08 | 2027-01-08 | 305d | 130d |

| ID | WBS | Activity | Type | Duration | Start | Finish | Total float | Free float |
| --- | --- | --- | --- | --- | --- | --- | --- | --- |
|  | 40 | **IBS - Isolated Phase Bus Duct** |  |  | 2027-06-03 | 2027-06-03 |  |  |
| ZE.IM.ELEC.4180 |  | IBS - Isolated Phase Bus Duct - Cable Routing Diagrams - Issue Rev. 0 | milestone | 0d | 2027-06-03 | 2027-06-03 | 205d | 30d |
|  | 41 | **PLS - Plant Lighting System** |  |  | 2027-01-08 | 2027-01-08 |  |  |
| ZE.IM.ELEC.3180 |  | PLS - Plant Lighting System - Cable Routing Diagrams - Issue Rev. 0 | milestone | 0d | 2027-01-08 | 2027-01-08 | 305d | 130d |
|  | 42 | **PRS - Protective Relay System** |  |  | 2027-03-23 | 2027-03-23 |  |  |
| ZE.IM.ELEC.3870 |  | PRS - Protective Relay System - Cable Routing Diagrams - Issue Rev. 0 | milestone | 0d | 2027-03-23 | 2027-03-23 | 255d | 80d |
|  | 43 | **SAB - Auxiliary Boiler System** |  |  | 2027-03-09 | 2027-03-09 |  |  |
| ZE.IM.ELEC.3770 |  | SAB - Auxiliary Boiler System - Cable Routing Diagrams - Issue Rev. 0 | milestone | 0d | 2027-03-09 | 2027-03-09 | 265d | 90d |
|  | 44 | **SAX - Auxiliary Steam System** |  |  | 2027-04-07 | 2027-04-07 |  |  |
| ZE.IM.ELEC.3990 |  | SAX - Auxiliary Steam System - Cable Routing Diagrams - Issue Rev. 0 | milestone | 0d | 2027-04-07 | 2027-04-07 | 245d | 70d |
|  | 45 | **SCR - Selective Catalytic Reduction System** |  |  | 2027-04-07 | 2027-04-07 |  |  |
| ZE.IM.ELEC.4000 |  | SCR - Selective Catalytic Reduction System - Cable Routing Diagrams - Issue Rev. 0 | milestone | 0d | 2027-04-07 | 2027-04-07 | 245d | 70d |
|  | 46 | **SHP - High Pressure Steam System** |  |  | 2027-01-08 | 2027-01-08 |  |  |
| ZE.IM.ELEC.3190 |  | SHP - HP Steam System - Cable Routing Diagrams - Issue Rev. 0 | milestone | 0d | 2027-01-08 | 2027-01-08 | 305d | 130d |
|  | 47 | **SIP - Intermediate Pressure Steam System** |  |  | 2027-02-08 | 2027-02-08 |  |  |
| ZE.IM.ELEC.3520 |  | SIP - IP Steam System - Cable Routing Diagrams - Issue Rev. 0 | milestone | 0d | 2027-02-08 | 2027-02-08 | 285d | 110d |
|  | 48 | **SLP - Low Pressure Steam System** |  |  | 2027-02-08 | 2027-02-08 |  |  |
| ZE.IM.ELEC.3530 |  | SLP - LP Steam System - Cable Routing Diagrams - Issue Rev. 0 | milestone | 0d | 2027-02-08 | 2027-02-08 | 285d | 110d |
|  | 49 | **SRC - Cold Reheat Steam System** |  |  | 2027-01-08 | 2027-01-08 |  |  |
| ZE.IM.ELEC.3200 |  | SRC - Cold Reheat Steam System - Cable Routing Diagrams - Issue Rev. 0 | milestone | 0d | 2027-01-08 | 2027-01-08 | 305d | 130d |
|  | 5 | **BLD - Miscellaneous Buildings & Structures** |  |  | 2027-02-16 | 2027-02-16 |  |  |
| ZE.IM.ELEC.3610 |  | BLD - Misc Buildings & Structures - Cable Routing Diagrams - Issue Rev. 0 | milestone | 0d | 2027-02-16 | 2027-02-16 | 280d | 105d |
|  | 50 | **SRH - Hot Reheat Steam System** |  |  | 2027-01-08 | 2027-01-08 |  |  |
| ZE.IM.ELEC.3210 |  | SRH - Hot Reheat Steam System - Cable Routing Diagrams - Issue Rev. 0 | milestone | 0d | 2027-01-08 | 2027-01-08 | 305d | 130d |

| ID | WBS | Activity | Type | Duration | Start | Finish | Total float | Free float |
| --- | --- | --- | --- | --- | --- | --- | --- | --- |
|  | 51 | **SST - Station Service Transformer** |  |  | 2027-03-25 | 2027-03-25 |  |  |
| ZE.IM.ELEC.3890 |  | SST - Station Service Transformer - Cable Routing Diagrams - Issue Rev. 0 | milestone | 0d | 2027-03-25 | 2027-03-25 | 253d | 78d |
|  | 52 | **STG - Steam Turbine \ Generator** |  |  | 2027-03-09 | 2027-03-09 |  |  |
| ZE.IM.ELEC.3780 |  | STG - Steam Turbine \ Generator - Cable Routing Diagrams - Issue Rev. 0 | milestone | 0d | 2027-03-09 | 2027-03-09 | 265d | 90d |
|  | 53 | **STI - Steam Turbine Instrumentation** |  |  | 2027-06-03 | 2027-06-03 |  |  |
| ZE.IM.ELEC.4190 |  | STI - Steam Turbine Instrumentation - Cable Routing Diagrams - Issue Rev. 0 | milestone | 0d | 2027-06-03 | 2027-06-03 | 205d | 30d |
|  | 54 | **STL - Steam Turbine Lube Oil System** |  |  | 2027-04-07 | 2027-04-07 |  |  |
| ZE.IM.ELEC.4010 |  | STL - Steam Turbine Lube Oil System - Cable Routing Diagrams - Issue Rev. 0 | milestone | 0d | 2027-04-07 | 2027-04-07 | 245d | 70d |
|  | 55 | **STS - Steam Turbine Seals System** |  |  | 2027-05-05 | 2027-05-05 |  |  |
| ZE.IM.ELEC.4100 |  | STS - Steam Turbine Seals System - Cable Routing Diagrams - Issue Rev. 0 | milestone | 0d | 2027-05-05 | 2027-05-05 | 225d | 50d |
|  | 56 | **TCP - Temporary Construction Power System** |  |  | 2027-02-08 | 2027-02-08 |  |  |
| ZE.IM.ELEC.3540 |  | TCP - Temporary Construction Power System - Cable Routing Diagrams - Issue Rev. 0 | milestone | 0d | 2027-02-08 | 2027-02-08 | 285d | 110d |
|  | 57 | **UAT - Unit Aux Transformer** |  |  | 2027-02-08 | 2027-02-08 |  |  |
| ZE.IM.ELEC.3550 |  | UAT - Unit Aux Transformer - Cable Routing Diagrams - Issue Rev. 0 | milestone | 0d | 2027-02-08 | 2027-02-08 | 285d | 110d |
|  | 58 | **WSS - Service Water System** |  |  | 2027-01-08 | 2027-01-08 |  |  |
| ZE.IM.ELEC.3220 |  | WSS - Service Water System - Cable Routing Diagrams - Issue Rev. 0 | milestone | 0d | 2027-01-08 | 2027-01-08 | 305d | 130d |
|  | 6 | **BLP - Power Distribution Center** |  |  | 2027-01-08 | 2027-01-08 |  |  |
| ZE.IM.ELEC.3050 |  | BLP - Power Distribution Center - Cable Routing Diagrams - Issue Rev. 0 | milestone | 0d | 2027-01-08 | 2027-01-08 | 305d | 130d |
|  | 7 | **BLT - CT \ ST Building** |  |  | 2027-01-08 | 2027-01-08 |  |  |
| ZE.IM.ELEC.3060 |  | BLT - CT \ ST Building - Cable Routing Diagrams - Issue Rev. 0 | milestone | 0d | 2027-01-08 | 2027-01-08 | 305d | 130d |
|  | 8 | **CAI - Instrument Air** |  |  | 2027-03-12 | 2027-03-12 |  |  |
| ZE.IM.ELEC.3790 |  | CAI - Instrument Air - Cable Routing Diagrams - Issue Rev. 0 | milestone | 0d | 2027-03-12 | 2027-03-12 | 262d | 87d |
|  | 9 | **CCF - Steam Cycle Chemical Feed** |  |  | 2027-02-08 | 2027-02-08 |  |  |
| ZE.IM.ELEC.3440 |  | CCF - Steam Cycle Chemical Feed - Cable Routing Diagrams - Issue Rev. 0 | milestone | 0d | 2027-02-08 | 2027-02-08 | 285d | 110d |

| ID | WBS | Activity | Type | Duration | Start | Finish | Total float | Free float |
| --- | --- | --- | --- | --- | --- | --- | --- | --- |
|  | 59 | **WWC - Wastewater Collection System** |  |  | 2027-07-19 | 2027-07-19 |  |  |
| ZE.IM.ELEC.4260 |  | WWC - Wastewater Collection System - Cable Routing Diagrams - Issue Rev. 0 | milestone | 0d | 2027-07-19 | 2027-07-19 | 175d | 0d |
|  | 3 | **I&C** |  |  |  |  |  |  |
|  | 4 | **Lists** |  |  |  |  |  |  |
|  | 10 | **Arrangements \ Layouts** |  |  |  |  |  |  |
|  | 5 | **Control Narratives** |  |  |  |  |  |  |
|  | 2 | **DCS Screens & Graphics** |  |  |  |  |  |  |
|  | 8 | **Installation Details** |  |  |  |  |  |  |
|  | 6 | **Loop Diagrams \ Wiring** |  |  |  |  |  |  |
|  | 1 | **Instruments** |  |  |  |  |  |  |
|  | 6 | **Interface Milestones - Baker** |  |  |  |  |  |  |
|  | 1 | **CSA** |  |  |  |  |  |  |
|  | 1 | **CWA-01 - HRSG Area** |  |  |  |  |  |  |
|  | 2 | **HRSG - Blowdown Drain Sump - (GA Item# 46) - Foundations** |  |  |  |  |  |  |
|  | 3 | **HRSG - Main - (GA Item# 3 \ 108) - Pile Layout** |  |  |  |  |  |  |
|  | 4 | **HRSG - Main - (GA Item# 3 \ 108) - Foundations** |  |  |  |  |  |  |
|  | 1 | **HRSG - South - (GA Item# 48 \ 49 \ 108) - Pile Layout** |  |  |  |  |  |  |
|  | 6 | **HRSG - South - (GA Item# 48 \ 49 \ 108) - Foundations** |  |  |  |  |  |  |
|  | 5 | **HRSG - CEMS - (GA Item# 25) - Foundations** |  |  |  |  |  |  |
|  | 2 | **CWA-02 - Turbine Area** |  |  |  |  |  |  |
|  | 11 | **Air Processing Unit - (GA Item# 78) - Foundations** |  |  |  |  |  |  |
|  | 8 | **Atmospheric ST Drains Tank and Pumps - (GA Item# 70) - Foundations** |  |  |  |  |  |  |
|  | 4 | **CT \ ST - (GA Item# 1 \ 2 \ 5 \ 91) - Pile Layout** |  |  |  |  |  |  |
|  | 5 | **CT \ ST - (GA Item# 1 \ 2 \ 5 \ 91) - Foundations** |  |  |  |  |  |  |
|  | 13 | **Oil Water Separator - (GA Item# 30) - Foundations** |  |  |  |  |  |  |
|  | 1 | **Utility Pipe Rack (West) - (GA Item# 74) - Pile Layout** |  |  |  |  |  |  |
|  | 2 | **Utility Pipe Rack (West) - (GA Item# 74) - Foundations** |  |  |  |  |  |  |
|  | 10 | **Stator Cooling Water Skid \ Air Processing Unit - (GA Item# 81) - Foundations** |  |  |  |  |  |  |
|  | 6 | **Turbine Bldg - (GA Item# 27 \ 55 \ 71 \ 72 \ 82 \ 83 \ 105) - Pile Layout** |  |  |  |  |  |  |
|  | 7 | **Turbine Bldg - (GA Item# 27 \ 55 \ 71 \ 72 \ 82 \ 83 \ 105) - Foundations** |  |  |  |  |  |  |
|  | 9 | **Vacuum Drains Tank and Pit - (GA Item# 73) - Foundations** |  |  |  |  |  |  |
|  | 12 | **Water Wash Skid (GA Item# 42) - Foundations** |  |  |  |  |  |  |
|  | 3 | **CWA-05 - Utility Rack Area** |  |  |  |  |  |  |
|  | 4 | **CT Performance Heater - (GA Item# 47) - Foundations** |  |  |  |  |  |  |
|  | 5 | **Fuel Gas Absolute Separator - (GA Item# 57) - Foundations** |  |  |  |  |  |  |
|  | 6 | **Fuel Gas Electric Heater - (GA Item# 18) - Foundations** |  |  |  |  |  |  |
|  | 3 | **LP Economizer Recirc Pumps - (GA Item# 24) - Foundations** |  |  |  |  |  |  |
|  | 1 | **Utility Rack - (GA Item# 56) - Pile Layout** |  |  |  |  |  |  |
|  | 2 | **Utility Rack - (GA Item# 56) - Foundations** |  |  |  |  |  |  |
|  | 4 | **CWA-06 - ACC Area** |  |  |  |  |  |  |
|  | 4 | **ACC - (GA Item# 4) - Pile Layout** |  |  |  |  |  |  |
|  | 5 | **ACC - (GA Item# 4) - Foundations** |  |  |  |  |  |  |
|  | 11 | **ACC - Cleaning Pump - (GA Item# 77) - Foundations** |  |  |  |  |  |  |
|  | 12 | **ACC - Condensate Pumps - (GA Item# 95) - Foundations** |  |  |  |  |  |  |
|  | 10 | **ACC - Drain Pot \ Pumps \ Pit - (GA Item# 76) - Foundations** |  |  |  |  |  |  |
|  | 3 | **ACC - Holding Steam Jet Air Ejectors - (GA Item# 94) - Foundations** |  |  |  |  |  |  |
|  | 6 | **ACC - PDC - (GA Item# 21) - Foundations** |  |  |  |  |  |  |
|  | 1 | **ACC - Turbine Exhaust Duct - (GA Item# 75) - Pile Layout** |  |  |  |  |  |  |
|  | 9 | **ACC - Turbine Exhaust Duct - (GA Item# 75) - Foundations** |  |  |  |  |  |  |
|  | 7 | **ACC - Vacuum Pump Skids - (GA Item# 23) - Foundations** |  |  |  |  |  |  |
|  | 8 | **Condensate Collection Tank \ Deaerator - (GA Item# 43) - Foundations** |  |  |  |  |  |  |
|  | 2 | **Cycle Chemical Feed Totes & Pumps - (GA Item# 85) - Foundations** |  |  |  |  |  |  |
|  | 5 | **CWA-07 - Emergency Diesel Gen. Area** |  |  |  |  |  |  |
|  | 1 | **Emergency Diesel Generator - (GA Item# 14) - Pile Layout** |  |  |  |  |  |  |
|  | 2 | **Emergency Diesel Generator - (GA Item# 14) - Foundations** |  |  |  |  |  |  |
|  | 6 | **CWA-08 - LV Switchgear PDC Area** |  |  |  |  |  |  |
|  | 4 | **CT Battery Compartment - (GA Item# 31) - Foundations** |  |  |  |  |  |  |
|  | 3 | **CT Water Mist Skid - (GA Item# 33) - Foundations** |  |  |  |  |  |  |
|  | 1 | **Evap Cooler Water Skid - (GA Item# 68) - Foundations** |  |  |  |  |  |  |
|  | 2 | **PEECC - (GA Item# 32) - Foundations** |  |  |  |  |  |  |
|  | 7 | **CWA-09 - Air Inlet Filter Area** |  |  |  |  |  |  |
|  | 1 | **Air Inlet Filter - (GA Item# 62) - Pile Layout** |  |  |  |  |  |  |
|  | 2 | **Air Inlet Filter - (GA Item# 62) - Foundations** |  |  |  |  |  |  |
|  | 8 | **CWA-10 - Fin Fan Cooler** |  |  |  |  |  |  |
|  | 1 | **Closed Cycle Cooling Water Pumps - (GA Item# 34) - Foundations** |  |  |  |  |  |  |
|  | 2 | **Finfan Cooler - (GA Item# 20) - Foundations** |  |  |  |  |  |  |
|  | 9 | **CWA-11 - Boiler Feed Pump Bldg Area** |  |  |  |  |  |  |
|  | 3 | **Boiler Feed Pipe Rack - (GA Item# 67) - Pile Layout** |  |  |  |  |  |  |
|  | 4 | **Boiler Feed Pipe Rack - (GA Item# 67) - Foundations** |  |  |  |  |  |  |
|  | 1 | **Boiler Feed Pump Bldg - (GA Item# 22 \ 44 \ 45 \ 50) - Pile Layout** |  |  |  |  |  |  |

| WBS | Activity |
| --- | --- |
| 2 | **Boiler Feed Pump Bldg - (GA Item# 22 \ 44 \ 45 \ 50) - Foundations** |
| 7 | **HRSG - PDC - (GA Item# 44) - Foundations** |
| 10 | **CWA-12 - Control Room \ Admin \ Warehouse** |
| 1 | **Control \ Admin \ Warehouse Bldg - (GA Item# 11\ 17) - Pile Layout** |
| 2 | **Control \ Admin \ Warehouse Bldg - (GA Item# 11 \ 17) - Foundations** |
| 11 | **CWA-13 - GSU** |
| 1 | **Main PDC - (GA Item# 28) - Foundations** |
| 5 | **6.9kV Station Service Transformers - (GA Item# 63) - Foundations** |
| 8 | **AC Link Reactor - (GA Item# 69) - Foundations** |
| 4 | **CT Excitation Transformer - (GA Item# 39) - Foundations** |
| 2 | **CT Isolation Transformer - (GA Item# 40) - Foundations** |
| 9 | **DC Link Reactor - (GA Item# 90) - Foundations** |
| 6 | **Generator Circuit Breaker - (GA Item# 41) - Foundations** |
| 10 | **Generator Step-Up Transformer - (GA Item# 15) - Pile Layout** |
| 11 | **Generator Step-Up Transformer - (GA Item# 15) - Foundations** |
| 15 | **Generator Step-Up Transformer - (GA Item# 15) - Firewalls** |
| 7 | **Isolated Phase Bus Duct - (GA Item# 89) - Foundations** |
| 3 | **LCI and Exciter Compartment - (GA Item# 38) - Foundations** |
| 12 | **Unit Aux Transformer - (GA Item# 19) - Pile Layout** |
| 13 | **Unit Aux Transformer - (GA Item# 19) - Foundations** |
| 14 | **Unit Aux Transformer - (GA Item# 19) - Firewalls** |
| 12 | **CWA-14 - Aux Boiler Bldg Area** |
| 1 | **Aux Boiler Bldg - (GA Item# 10 \ 29 \ 65 \ 87 \ 97 \ 98 \ 99) - Pile Layout** |
| 2 | **Aux Boiler Bldg - (GA Item# 10 \ 29 \ 65 \ 87 \ 97 \ 98 \ 99) - Foundations** |
| 13 | **CWA-17 - Plant Gas Yard Area** |
| 7 | **Fuel Gas Conditioning Skid - (GA Item# 101) - Pile Layout** |
| 8 | **Fuel Gas Conditioning Skid - (GA Item# 101) - Foundations** |
| 5 | **Fuel Gas Dew Point Heater - (GA Item# 100) - Pile Layout** |
| 6 | **Fuel Gas Dew Point Heater - (GA Item# 100) - Foundations** |
| 1 | **Fuel Gas Drains Tank - (GA Item# 102) - Pile Layout** |
| 2 | **Fuel Gas Drains Tank - (GA Item# 102) - Foundations** |
| 3 | **Gas Metering Station - (GA Item# 53) - Pile Layout** |
| 4 | **Gas Metering Station - (GA Item# 53) - Foundations** |
| 14 | **CWA-19 - Ammonia Storage Tank Area** |
| 1 | **Ammonia Storage Tank - (GA Item# 13 \ 88 \ 93) - Pile Layout** |
| 2 | **Ammonia Storage Tank - (GA Item# 13 \ 88 \ 93) - Foundations** |
| 15 | **CWA-21 - Service \ Fire Protection \ Demin Water Area** |
| 3 | **Demin Water Tank - (GA Item# 7) - Pile Layout** |
| 4 | **Demin Water Tank - (GA Item# 7) - Foundations** |
| 2 | **Demin Water Supply Pumps - (GA Item# 35) - Foundations** |
| 5 | **Service \ Fire Protection Water Tank - (GA Item# 8) - Pile Layout** |
| 6 | **Service \ Fire Protection Water Tank - (GA Item# 8) - Foundations** |
| 10 | **Demin Water Treatment Trailer Parking Pad - (GA Item# 52) - Foundations** |
| 11 | **Fire Pump Enclosure - (GA Item# 12) - Pile Layout** |
| 12 | **Fire Pump Enclosure - (GA Item# 12) - Foundations** |
| 9 | **Service Water Pumps - (GA Item# 96) - Foundations** |
| 8 | **Waste Water Forwarding Pumps - (GA Item# 84) - Foundations** |
| 1 | **Waste Water Tank - (GA Item# 9) - Pile Layout** |
| 7 | **Waste Water Tank - (GA Item# 9) - Foundations** |
| 16 | **CWA-22 - Hydrogen Storage Area** |
| 2 | **Hydrogen Bulk Storage - (GA Item# 54) - Foundations** |
| 2 | **Mechanical** |
| 1 | **CWA-01 - HRSG Area** |
| 3 | **CWA-02 - Turbine Area** |
| 2 | **AST - Ammonia Storage & Transfer** |
| 16 | **CAI - Instrument Air** |
| 4 | **CWA-06 - ACC Area** |
| 5 | **CWA-07 - Emergency Diesel Gen. Area** |
| 6 | **CWA-08 - LV Switchgear PDC Area** |
| 8 | **CWA-10 - Fin Fan Cooler** |
| 7 | **CCW - Closed Cycle Cooling Water** |
| 9 | **CWA-11 - Boiler Feed Pump Blgd Area** |
| 10 | **CWA-12 - Control Room \ Admin \ Warehouse** |
| 11 | **CWA-13 - GSU** |
| 12 | **CTG - Combustion Turbine \ Generator** |
| 13 | **DMN - Demineralized Water** |
| 14 | **FGS - Fuel Gas Regulating & Conditioning** |
| 15 | **FWS - Firewater** |
| 17 | **WSP - Potable Water** |
| 22 | **WSS - Service Water** |

| WBS | Activity | Start | Finish |
| --- | --- | --- | --- |
| 23 | **WWC - Waste Water Collection** |  |  |
| 3 | **Electrical** |  |  |
| 1 | **CWA-01 - HRSG Area** |  |  |
| 2 | **CWA-02 - Turbine Area** |  |  |
| 3 | **CWA-05 - Utility Rack Area** |  |  |
| 4 | **CWA-06 - ACC Area** |  |  |
| 5 | **CWA-07 - Emergency Diesel Gen. Area** |  |  |
| 6 | **CWA-08 - LV Switchgear PDC Area** |  |  |
| 7 | **CWA-09 - Air Inlet Filter Area** |  |  |
| 8 | **CWA-10 - Fin Fan Cooler** |  |  |
| 9 | **CWA-11 - Boiler Feed Pump Bldg Area** |  |  |
| 10 | **CWA-12 - Control Room \ Admin \ Warehouse** |  |  |
| 11 | **CWA-13 - GSU** |  |  |
| 12 | **CWA-14 - Aux Boiler Bldg Area** |  |  |
| 13 | **CWA-17 - Plant Gas Yard Area** |  |  |
| 14 | **CWA-19 - Ammonia Storage Tank Area** |  |  |
| 15 | **CWA-21 - Service \ Fire Protection \ Demin Water Area** |  |  |
| 16 | **CWA-22 - Hydrogen Storage Area** |  |  |
| 2 | **Client Input** |  |  |
| 3 | **Client Meetings** |  |  |
| 1 | **Overall Model Reviews** |  |  |
| 2 | **Turbine Building** |  |  |
| 1 | **Client Provided Information** |  |  |
| 3 | **Engineering** | 2025-11-03 | 2027-05-19 |
| 1 | **Civil \ Structural \ Architectural** | 2025-11-03 | 2026-10-08 |
| 3 | **CSA MTOs (For Early Material Purchase)** |  |  |
| 7 | **Specifications** |  |  |
| 6 | **CSA General Specifications** |  |  |
| 4 | **Civil Specifications** |  |  |
| 7 | **Concrete Specifications** |  |  |
| 6 | **CSA General Specifications** |  |  |
| 5 | **Geotech** |  |  |
| 1 | **Fabricated Structural Steel** |  |  |
| 5 | **Geotech** |  |  |
| 8 | **Overhead Bridge Crane** |  |  |
| 3 | **Piles** |  |  |
| 10 | **Pre-Cast Concrete Firewalls** |  |  |
| 9 | **Pre-Cast Concrete Waste Water Sumps** |  |  |
| 2 | **Pre-Engineered Buildings** |  |  |
| 5 | **General PEMB Specification** |  |  |
| 1 | **Admin \ Control \ Warehouse Building** |  |  |
| 3 | **Aux Boiler Building** |  |  |
| 4 | **Boiler Feed Pump Building** |  |  |
| 2 | **Turbine Building** |  |  |
| 11 | **3D Modeling** |  |  |
| 1 | **Arrangements \ Layouts** |  |  |
| 1 | **Foundation Location Plan** |  |  |
| 2 | **General Notes** |  |  |
| 3 | **Site Plan** |  |  |
| 2 | **Foundations** |  |  |
| 1 | **ACC Foundations** |  |  |
| 7 | **ACC - (GA Item# 4)** |  |  |
| 1 | **ACC - (GA Item# 4) - Pile Layout** |  |  |
| 2 | **ACC - (GA Item# 4) - Foundations** |  |  |
| 55 | **ACC - Cleaning Pump - (GA Item# 77)** |  |  |
| 2 | **ACC Cleaning Pump - (GA Item# 77) - Foundations** |  |  |
| 12 | **ACC - Condensate Pumps - (GA Item# 95)** |  |  |
| 2 | **ACC Condensate Pumps - (GA Item# 95) - Foundations** |  |  |
| 54 | **ACC - Drain Pot \ Pumps \ Pit - (GA Item# 76)** |  |  |
| 2 | **ACC Drain Pot \ Pumps \ Pit - (GA Item# 76) - Foundations** |  |  |
| 11 | **ACC - Holding Steam Jet Air Ejectors - (GA Item# 94)** |  |  |
| 2 | **ACC Holding Steam Jet Air Ejectors - (GA Item# 94) - Foundations** |  |  |
| 18 | **ACC - PDC - (GA Item# 21)** |  |  |
| 2 | **ACC PDC - (GA Item# 21) - Foundations** |  |  |
| 53 | **ACC - Turbine Exhaust Duct - (GA Item# 75)** |  |  |
| 1 | **ACC Turbine Exhaust Duct - (GA Item# 75) - Pile Layout** |  |  |
| 2 | **ACC Turbine Exhaust Duct - (GA Item# 75) - Foundations** |  |  |
| 19 | **ACC - Vacuum Pump Skids - (GA Item# 23)** |  |  |
| 2 | **ACC Vacuum Pump Skids - (GA Item# 23) - Foundations** |  |  |
| 38 | **Condensate Collection Tank \ Deaerator - (GA Item# 43)** |  |  |

| WBS | Activity |
| --- | --- |
| 2 | **Condensate Collection Tank \ Deaerator - (GA Item# 43) - Foundations** |
| 59 | **Cycle Chemical Feed Totes & Pumps - (GA Item# 85)** |
| 2 | **Cycle Chemical Feed Totes & Pumps - (GA Item# 85) - Foundations** |
| 16 | **CT \ ST and Turbine Bldg Foundations** |
| 45 | **Air Inlet Filter - (GA Item# 62)** |
| 1 | **Air Inlet Filter - (GA Item# 62) - Pile Layout** |
| 2 | **Air Inlet Filter - (GA Item# 62) - Foundations** |
| 56 | **Air Processing Unit - (GA Item# 78)** |
| 2 | **Air Processing Unit - (GA Item# 78) - Foundations** |
| 1 | **CT \ ST - (GA Item# 1 \ 2 \ 5 \ 91)** |
| 1 | **CT \ ST - (GA Item# 1 \ 2 \ 5 \ 91) - Pile Layout** |
| 2 | **CT \ ST - (GA Item# 1 \ 2 \ 5 \ 91) - Foundations** |
| 40 | **CT Performance Heater - (GA Item# 47)** |
| 2 | **CT Performance Heater - (GA Item# 47) - Foundations** |
| 50 | **Atmospheric ST Drains Tank and Pumps - (GA Item# 70)** |
| 2 | **Atmospheric ST Drains Tank and Pumps - (GA Item# 70) - Foundations** |
| 57 | **Stator Cooling Water Skid \ Air Processing Unit - (GA Item# 81)** |
| 2 | **Stator Cooling Water Skid \ Air Processing Unit - (GA Item# 81) - Foundations** |
| 52 | **Utility Pipe Rack (West) - (GA Item# 74)** |
| 1 | **Utility Pipe Rack (West) - (GA Item# 74) - Pile Layout** |
| 2 | **Utility Pipe Rack (West) - (GA Item# 74) - Foundations** |
| 15 | **Turbine Bldg - (GA Item# 27 \ 55 \ 71 \ 72 \ 82 \ 83 \ 105)** |
| 1 | **Turbine Bldg - (GA Item# 27 \ 55 \ 71 \ 72 \ 82 \ 83 \ 105) - Pile Layout** |
| 2 | **Turbine Bldg - (GA Item# 27 \ 55 \ 71 \ 72 \ 82 \ 83 \ 105) - Foundations** |
| 51 | **Vacuum Drains Tank and Pit - (GA Item# 73)** |
| 2 | **Vacuum Drains Tank and Pit - (GA Item# 73) - Foundations** |
| 3 | **Wash Water Drains - (GA Item #37) - Sump Layout** |
| 2 | **Water Wash Skid (GA Item# 42)** |
| 1 | **Water Wash Skid (GA Item# 42) - Foundations** |
| 6 | **BOP Foundations** |
| 31 | **CT Water Mist Skid - (GA Item# 33)** |
| 2 | **CT Water Mist Skid - (GA Item# 33) - Foundations** |
| 41 | **Demin Water Treatment Trailer Parking Pad - (GA Item# 52)** |
| 2 | **Demin Water Treatment Trailer Parking Pad - (GA Item# 52) - Foundations** |
| 25 | **Emergency Diesel Generator - (GA Item# 14)** |
| 1 | **Emergency Diesel Generator - (GA Item# 14) - Pile Layout** |
| 2 | **Emergency Diesel Generator - (GA Item# 14) - Foundations** |
| 48 | **Evap Cooler Water Skid - (GA Item# 68)** |
| 2 | **Evap Cooler Water Skid - (GA Item# 68) - Foundations** |
| 5 | **Finfan Cooler - (GA Item# 20)** |
| 2 | **Finfan Cooler - (GA Item# 20) - Foundations** |
| 43 | **Hydrogen Bulk Storage - (GA Item# 54)** |
| 2 | **Hydrogen Bulk Storage - (GA Item# 54) - Foundations** |
| 28 | **Oil Water Separator - (GA Item# 30)** |
| 2 | **Oil Water Separator - (GA Item# 30) - Foundations** |
| 4 | **Building and Enclosure Foundations** |
| 14 | **Aux Boiler Bldg - (GA Item# 10 \ 29 \ 65 \ 87 \ 97 \ 98 \ 99)** |
| 1 | **Aux Boiler Bldg - (GA Item# 10 \ 29 \ 65 \ 87 \ 97 \ 98 \ 99) - Pile Layout** |
| 2 | **Aux Boiler Bldg - (GA Item# 10 \ 29 \ 65 \ 87 \ 97 \ 98 \ 99) - Foundations** |
| 2 | **Boiler Feed Pump Bldg - (GA Item# 22 \ 44 \ 45 \ 50)** |
| 1 | **Boiler Feed Pump Bldg - (GA Item# 22 \ 44 \ 45 \ 50) - Pile Layout** |
| 2 | **Boiler Feed Pump Bldg - (GA Item# 22 \ 44 \ 45 \ 50) - Foundations** |
| 10 | **Control \ Admin \ Warehouse Bldg - (GA Item# 11 \ 17)** |
| 1 | **Control \ Admin \ Warehouse Bldg - (GA Item# 11\ 17) - Pile Layout** |
| 2 | **Control \ Admin \ Warehouse Bldg - (GA Item# 11 \ 17) - Foundations** |
| 23 | **Fire Pump Enclosure - (GA Item# 12)** |
| 1 | **Fire Pump Enclosure - (GA Item# 12) - Pile Layout** |
| 2 | **Fire Pump Enclosure - (GA Item# 12) - Foundations** |
| 61 | **Fire Protection Valve House - (GA Item# 104)** |
| 2 | **Fire Protection Valve House - (GA Item# 104) - Foundations** |
| 8 | **Electrical Equipment Foundations** |
| 47 | **6.9kV Station Service Transformers - (GA Item# 63)** |
| 2 | **6.9kV Station Service Transformers - (GA Item# 63) - Foundations** |
| 49 | **AC Link Reactor - (GA Item# 69)** |
| 2 | **AC Link Reactor - (GA Item# 69) - Foundations** |
| 29 | **CT Battery Compartment - (GA Item# 31)** |
| 2 | **CT Battery Compartment - (GA Item# 31) - Foundations** |
| 35 | **CT Excitation Transformer - (GA Item# 39)** |
| 2 | **CT Excitation Transformer - (GA Item# 39) - Foundations** |
| 36 | **CT Isolation Transformer - (GA Item# 40)** |

| WBS | Activity |
| --- | --- |
| 2 | **CT Isolation Transformer - (GA Item# 40) - Foundations** |
| 9 | **DC Link Reactor - (GA Item# 90)** |
| 2 | **DC Link Reactor - (GA Item# 90) - Foundations** |
| 37 | **Generator Circuit Breaker - (GA Item# 41)** |
| 2 | **Generator Circuit Breaker - (GA Item# 41) - Foundations** |
| 4 | **Generator Step-Up Transformer - (GA Item# 15)** |
| 1 | **Generator Step-Up Transformer - (GA Item# 15) - Pile Layout** |
| 2 | **Generator Step-Up Transformer - (GA Item# 15) - Foundations** |
| 3 | **Generator Step-Up Transformer - (GA Item# 15) - Firewalls** |
| 1 | **HRSG PDC - (GA Item# 44)** |
| 2 | **HRSG PDC - (GA Item# 44) - Foundations** |
| 6 | **Isolated Phase Bus Duct - (GA Item# 89)** |
| 2 | **Isolated Phase Bus Duct - (GA Item# 89) - Foundations** |
| 34 | **LCI and Exciter Compartment - (GA Item# 38)** |
| 2 | **LCI and Exciter Compartment - (GA Item# 38) - Foundations** |
| 13 | **Main PDC - (GA Item# 28)** |
| 2 | **Main PDC - (GA Item# 28) - Foundations** |
| 2 | **Misc Pipe & Electrical Supports** |
| 2 | **Misc Pipe & Electrical Supports - Foundations** |
| 30 | **PEECC - (GA Item# 32)** |
| 2 | **PEECC - (GA Item# 32) - Foundations** |
| 27 | **Unit Aux Transformer - (GA Item# 19)** |
| 1 | **Unit Aux Transformer - (GA Item# 19) - Pile Layout** |
| 2 | **Unit Aux Transformer - (GA Item# 19) - Foundations** |
| 3 | **Unit Aux Transformer - (GA Item# 19) - Firewalls** |
| 3 | **Gas Yard Foundations** |
| 63 | **Fuel Gas Conditioning Skid - (GA Item# 101)** |
| 1 | **Fuel Gas Conditioning Skid - (GA Item# 101) - Pile Layout** |
| 2 | **Fuel Gas Conditioning Skid - (GA Item# 101) - Foundations** |
| 62 | **Fuel Gas Dew Point Heater - (GA Item# 100)** |
| 1 | **Fuel Gas Dew Point Heater - (GA Item# 100) - Pile Layout** |
| 2 | **Fuel Gas Dew Point Heater - (GA Item# 100) - Foundations** |
| 42 | **Fuel Gas Drains Tank - (GA Item# 53)** |
| 1 | **Fuel Gas Drains Tank - (GA Item# 53) - Pile Layout** |
| 2 | **Fuel Gas Drains Tank - (GA Item# 53) - Foundations** |
| 64 | **Fuel Gas Knockout Drum - (GA Item# 102)** |
| 1 | **Fuel Gas Knockout Drum - (GA Item# 102) - Pile Layout** |
| 2 | **Fuel Gas Knockout Drum - (GA Item# 102) - Foundations** |
| 65 | **HRSG Foundations** |
| 16 | **HRSG - Auxiliary** |
| 2 | **LP Economizer Recirc Pumps - (GA Item# 24) - Foundations** |
| 1 | **HRSG CEMS - (GA Item# 25) - Foundations** |
| 3 | **HRSG Blowdown Tank - (GA Item# 26) - Foundations** |
| 39 | **HRSG - Blowdown Drain Sump - (GA Item# 46)** |
| 2 | **HRSG Blowdown Drain Sump - (GA Item# 46) - Foundations** |
| 3 | **HRSG - Main - (GA Item# 3 \ 108)** |
| 1 | **HRSG - Main - (GA Item# 3 \ 108) - Pile Layout** |
| 2 | **HRSG - Main - (GA Item# 3 \ 108) - Foundations** |
| 17 | **HRSG - South - (GA Item# 48 \ 49 \ 108)** |
| 1 | **HRSG - South - (GA Item# 48 \ 49 \ 108) - Pile Layout** |
| 2 | **HRSG - South - (GA Item# 48 \ 49 \ 108) - Foundations** |
| 44 | **Fuel Gas Absolute Separator - (GA Item# 57)** |
| 2 | **Fuel Gas Absolute Separator - (GA Item# 57) - Foundations** |
| 26 | **Fuel Gas Electric Heater - (GA Item# 18)** |
| 2 | **Fuel Gas Electric Heater - (GA Item# 18) - Foundations** |
| 11 | **Pipe Rack Foundations** |
| 46 | **Boiler Feed Pipe Rack - (GA Item# 67)** |
| 1 | **Boiler Feed Pipe Rack - (GA Item# 67) - Pile Layout** |
| 2 | **Boiler Feed Pipe Rack - (GA Item# 67) - Foundations** |
| 8 | **Utility Rack - (GA Item# 56)** |
| 1 | **Utility Rack - (GA Item# 56) - Pile Layout** |
| 2 | **Utility Rack - (GA Item# 56) - Foundations** |
| 2 | **Pump Foundations** |
| 32 | **Closed Cycle Cooling Water Pumps - (GA Item# 34)** |
| 2 | **Closed Cycle Cooling Water Pumps - (GA Item# 34) - Foundations** |
| 33 | **Demin Water Supply Pumps - (GA Item# 35)** |
| 2 | **Demin Water Supply Pumps - (GA Item# 35) - Foundations** |
| 60 | **Service Water Pumps - (GA Item# 96)** |
| 2 | **Service Water Pumps - (GA Item# 96) - Foundations** |
| 58 | **Waste Water Forwarding Pumps - (GA Item# 84)** |

| ID | WBS | Activity | Duration | Start | Finish | Remaining | Planned start | Planned finish | Total float | Free float | Expected finish |
| --- | --- | --- | --- | --- | --- | --- | --- | --- | --- | --- | --- |
|  | 2 | **Waste Water Forwarding Pumps - (GA Item# 84) - Foundations** |  |  |  |  |  |  |  |  |  |
|  | 7 | **Tank Foundations** |  |  |  |  |  |  |  |  |  |
|  | 24 | **Ammonia Storage Tank - (GA Item# 13 \ 88 \ 93)** |  |  |  |  |  |  |  |  |  |
|  | 1 | **Ammonia Storage Tank - (GA Item# 13 \ 88 \ 93) - Pile Layout** |  |  |  |  |  |  |  |  |  |
|  | 2 | **Ammonia Storage Tank - (GA Item# 13 \ 88 \ 93) - Foundations** |  |  |  |  |  |  |  |  |  |
|  | 20 | **Demin Water Tank - (GA Item# 7)** |  |  |  |  |  |  |  |  |  |
|  | 1 | **Demin Water Tank - (GA Item# 7) - Pile Layout** |  |  |  |  |  |  |  |  |  |
|  | 2 | **Demin Water Tank - (GA Item# 7) - Foundations** |  |  |  |  |  |  |  |  |  |
|  | 22 | **Waste Water Tank - (GA Item# 9)** |  |  |  |  |  |  |  |  |  |
|  | 1 | **Waste Water Tank - (GA Item# 9) - Pile Layout** |  |  |  |  |  |  |  |  |  |
|  | 2 | **Waste Water Tank - (GA Item# 9) - Foundations** |  |  |  |  |  |  |  |  |  |
|  | 21 | **Service \ Fire Protection Water Tank - (GA Item# 8)** |  |  |  |  |  |  |  |  |  |
|  | 1 | **Service \ Fire Protection Water Tank - (GA Item# 8) - Pile Layout** |  |  |  |  |  |  |  |  |  |
|  | 2 | **Service \ Fire Protection Water Tank - (GA Item# 8) - Foundations** |  |  |  |  |  |  |  |  |  |
|  | 9 | **Roads \ Paving \ Parking** |  |  |  |  |  |  |  |  |  |
|  | 5 | **Sitework \ Grading & Drainage \ Stormwater** |  |  |  |  |  |  |  |  |  |
|  | 10 | **Fencing & Security** |  |  |  |  |  |  |  |  |  |
|  | 1 | **Grading \ Drainage** |  |  |  |  |  |  |  |  |  |
|  | 2 | **Stormwater** |  |  |  |  |  |  |  |  |  |
|  | 6 | **Structural Steel** |  | 2025-11-03 | 2026-10-08 |  |  |  |  |  |  |
|  | 10 | **CT \ ST & Turbine Building Steel** |  | 2025-11-03 | 2026-09-28 |  |  |  |  |  |  |
| ZE.CSA.9198 |  | Utility Pipe Rack (West) Drawings - Issue Rev. A | 40d | 2025-11-03 A | 2026-09-28 | 184d | 2026-08-03 | 2026-09-28 | -114d | 0d | 2026-09-28 |
| ZE.CSA.1310 |  | CT Access Platform Drawings - Issue Rev. A | 40d | 2025-11-10 A | 2026-08-28 | 164d | 2026-07-06 | 2026-08-28 | -94d | 0d | 2026-08-28 |
| ZE.CSA.9168 |  | ST Access Platform Drawings - Issue Rev. A | 40d | 2025-11-10 A | 2026-08-28 | 164d | 2026-07-06 | 2026-08-28 | -114d | 0d | 2026-08-28 |

| ID | WBS | Activity | Duration | Start | Finish | Remaining | Planned start | Planned finish | Total float | Free float | Expected finish |
| --- | --- | --- | --- | --- | --- | --- | --- | --- | --- | --- | --- |
|  | 4 | **Electrical Equipment Steel** |  | 2025-11-03 | 2026-10-08 |  |  |  |  |  |  |
| ZE.CSA.9675 |  | PEECC Access Platform Drawings - Issue Rev. A | 40d | 2025-11-03 A | 2026-09-02 | 167d | 2026-07-09 | 2026-09-02 | -97d | 0d | 2026-09-02 |
| ZE.CSA.9678 |  | CT Battery Compartment Access Platform Drawings - Issue Rev. A | 40d | 2025-11-03 A | 2026-08-28 | 164d | 2026-07-06 | 2026-08-28 | -94d | 0d | 2026-08-28 |
| ZE.CSA.9498 |  | GSU Containment Rock & Access Platform Drawings - Issue Rev. A | 40d | 2025-11-10 A | 2026-08-28 | 164d | 2026-07-06 | 2026-08-28 | -94d | 0d | 2026-08-28 |
| ZE.CSA.9528 |  | UAT Containment Rock & Access Platform Drawings - Issue Rev. A | 40d | 2026-07-07 | 2026-08-31 |  |  |  | -95d | 0d |  |
| ZE.CSA.9558 |  | CT Isolation Transformer Access Platform Drawings - Issue Rev. A | 40d | 2026-07-07 | 2026-08-31 |  |  |  | -95d | 0d |  |
| ZE.CSA.9588 |  | Excitation Transformer Access Platform Drawings - Issue Rev. A | 40d | 2026-07-07 | 2026-08-31 |  |  |  | -95d | 0d |  |
| ZE.CSA.9669 |  | Electrical \ Diesel Fire Water Pumps Access Platform Drawings - Issue Rev. A | 40d | 2026-07-07 | 2026-08-31 |  |  |  | -95d | 0d |  |
| ZE.CSA.9681 |  | LCI \ Excitation Cubicle Access Platform Drawings - Issue Rev. A | 40d | 2026-07-07 | 2026-08-31 |  |  |  | -95d | 0d |  |
| ZE.CSA.9648 |  | Emergency Diesel Generator Access Platform Drawings - Issue Rev. A | 40d | 2026-07-09 | 2026-09-02 |  |  |  | -97d | 0d |  |
| ZE.CSA.9672 |  | Main PDC Support Steel & Access Platform Drawings - Issue Rev. A | 40d | 2026-07-14 | 2026-09-08 |  |  |  | -100d | 0d |  |
| ZE.CSA.9684 |  | ACC - PDC Support Steel & Access Platform Drawings - Issue Rev. A | 40d | 2026-07-21 | 2026-09-15 |  |  |  | -105d | 0d |  |
| ZE.CSA.9618 |  | Generator Circuit Breaker Support Steel & Access Platform Drawings - Issue Rev. A | 40d | 2026-08-13 | 2026-10-08 |  |  |  | -122d | 0d |  |
|  | 9 | **Miscellaneous Steel** |  | 2026-07-07 | 2026-09-04 |  |  |  |  |  |  |
| ZE.CSA.9378 |  | ACC Safety Relief & Vacuum Breaker Access Platform Drawings - Issue Rev. A | 40d | 2026-07-07 | 2026-08-31 |  |  |  | -95d | 0d |  |
| ZE.CSA.9348 |  | Ammonia Storage Access Platform Drawings - Issue Rev. A | 40d | 2026-07-13 | 2026-09-04 |  |  |  | -99d | 0d |  |
|  | 8 | **Pipe Rack Steel** |  | 2025-11-03 | 2026-10-01 |  |  |  |  |  |  |
| ZE.CSA.3830 |  | Utility Pipe Rack - Steel Drawings - Issue Rev. A | 80d | 2025-11-03 A | 2026-10-01 | 151d | 2026-03-26 | 2026-07-21 | -117d | 0d | 2026-07-21 |
| ZE.CSA.3420 |  | Boiler Feed Pipe Rack - Steel Drawings - Issue Rev. A | 80d | 2025-11-10 A | 2026-07-28 | 141d | 2026-04-02 | 2026-07-28 | -71d | 0d | 2026-07-28 |
|  | 1 | **Pipe Support Steel** |  | 2026-08-06 | 2026-10-01 |  |  |  |  |  |  |
| ZE.CSA.9468 |  | ACC Pipe Support Steel Drawings - Issue Rev. A | 40d | 2026-08-06 | 2026-10-01 |  |  |  | -117d | 0d |  |
|  | 3 | **Sumps and Pits Steel** |  | 2026-07-07 | 2026-09-24 |  |  |  |  |  |  |
| ZE.CSA.9699 |  | Common Blowdown Drains Sump Access Platform Drawings - Issue Rev. A | 40d | 2026-07-07 | 2026-08-31 |  |  |  | -95d | 0d |  |
| ZE.CSA.9696 |  | Clean Turbine Drains Tank Pit Access Platform Drawings - Issue Rev. A | 40d | 2026-07-16 | 2026-09-10 |  |  |  | -102d | 0d |  |
| ZE.CSA.9702 |  | ACC Drain Pot Pump Pit Access Platform Drawings - Issue Rev. A | 40d | 2026-07-16 | 2026-09-10 |  |  |  | -102d | 0d |  |
| ZE.CSA.9705 |  | Waste Water Collection & Treatment Access Platform Drawings - Issue Rev. A | 40d | 2026-07-30 | 2026-09-24 |  |  |  | -112d | 0d |  |

| WBS | Activity | Start | Finish |
| --- | --- | --- | --- |
| 2 | **Mechanical** | 2026-02-04 | 2027-05-19 |
| 2 | **Heat \ Mass \ Water Balance** |  |  |
| 4 | **PFDs \ P&IDs** |  |  |
| 1 | **General** |  |  |
| 2 | **AST - Ammonia Storage & Transfer** |  |  |
| 3 | **BBS - Boiler Blowdown** |  |  |
| 4 | **BFW - Boiler Feedwater** |  |  |
| 16 | **CAI - Instrument Air** |  |  |
| 5 | **CCF - Steam Cycle & Evap Cooler Chemical Feed** |  |  |
| 7 | **CCW - Closed Cycle Cooling Water** |  |  |
| 28 | **CGS - Compressed Gas** |  |  |
| 9 | **CND - Condenser** |  |  |
| 8 | **CNE - Condenser Air Extraction** |  |  |
| 10 | **CNS - Condensate** |  |  |
| 11 | **CSA - Cycle Sampling & Analysis** |  |  |
| 12 | **CTG - Combustion Turbine \ Generator** |  |  |
| 13 | **DMN - Demineralized Water** |  |  |
| 14 | **FGS - Fuel Gas Regulating & Conditioning** |  |  |
| 15 | **FWS - Firewater** |  |  |
| 18 | **SAB - Auxiliary Boiler** |  |  |
| 19 | **SAX - Auxiliary Steam** |  |  |
| 29 | **SHP - High Pressure Steam** |  |  |
| 30 | **SLP - Low Pressure Steam** |  |  |
| 31 | **SRC - Steam Reheat (Cold)** |  |  |
| 6 | **SRH - Steam Reheat (Hot)** |  |  |
| 21 | **STG - Steam Turbine \ Generator** |  |  |
| 17 | **WSP - Potable Water** |  |  |
| 22 | **WSS - Service Water** |  |  |
| 23 | **WWC - Waste Water Collection** |  |  |
| 24 | **WWT - Waste Water Treatment** |  |  |
| 3 | **Lists** |  |  |
| 2 | **AST - Ammonia Storage & Transfer** |  |  |
| 4 | **BFW - Boiler Feedwater** |  |  |
| 16 | **CAI - Instrument Air** |  |  |
| 5 | **CCF - Steam Cycle & Evaporative Cooler Chemical Feed** |  |  |
| 7 | **CCW - Closed Cycle Cooling Water** |  |  |
| 28 | **CGS - Compressed Gas** |  |  |
| 9 | **CND - Condenser** |  |  |
| 10 | **CNS - Condensate** |  |  |
| 11 | **CSA - Cycle Sampling & Analysis** |  |  |
| 12 | **CTG - Combustion Turbine \ Generator** |  |  |
| 13 | **DMN - Demineralized Water** |  |  |
| 14 | **FGS - Fuel Gas Regulating & Conditioning** |  |  |
| 15 | **FWS - Firewater** |  |  |
| 18 | **SAB - Auxiliary Boiler** |  |  |
| 19 | **SAX - Auxiliary Steam** |  |  |
| 29 | **SHP - High Pressure Steam** |  |  |
| 30 | **SLP - Low Pressure Steam** |  |  |
| 31 | **SRC - Steam Reheat (Cold)** |  |  |
| 6 | **SRH - Steam Reheat (Hot)** |  |  |
| 21 | **STG - Steam Turbine \ Generator** |  |  |
| 17 | **WSP - Potable Water** |  |  |
| 22 | **WSS - Service Water** |  |  |
| 23 | **WWC - Waste Water Collection** |  |  |
| 24 | **WWT - Waste Water Treatment** |  |  |
| 3 | **BBS - Boiler Blowdown** |  |  |
| 9 | **Specifications** |  |  |
| 19 | **General** |  |  |
| 1 | **ACC - Steam Surface Condenser and Vacuum Equipment (Air Cooled)** |  |  |
| 4 | **Air Cooled Chillers (HRSG Blowdown)** |  |  |
| 7 | **Air Cooled Heat Exchanger (Finfan Coolers)** |  |  |
| 8 | **Ammonia Unloading \ Storage \ Transfer System** |  |  |
| 12 | **Compressed Air System** |  |  |
| 13 | **Cycle Chemical Feed System (AVT)** |  |  |
| 14 | **Cycle Water Sampling Analysis System** |  |  |
| 5 | **Fire Suppression Sprinkler System** |  |  |
| 1 | **Fire Suppression Sprinkler System Design Basis** |  |  |
| 11 | **Fuel Gas Conditioning System** |  |  |
| 28 | **Fuel Gas Indirect Fired Bath Heater** |  |  |
| 2 | **Intermediate Pressure Process (Aux) Boilers - Incl. Stack\Tanks\Feed Pumps\Regulation** |  |  |

| ID | WBS | Activity | Duration | Start | Finish | Total float | Free float |
| --- | --- | --- | --- | --- | --- | --- | --- |
|  | 23 | **Packaged Utility Lift Station** |  |  |  |  |  |
|  | 26 | **Pumps - Boiler Feed** |  |  |  |  |  |
|  | 25 | **Pumps - Closed Cycle Cooling Water** |  |  |  |  |  |
|  | 24 | **Pumps - Condensate** |  |  |  |  |  |
|  | 22 | **Pumps - Fire** |  |  |  |  |  |
|  | 27 | **Pumps - Horizontal Centrifugal** |  |  |  |  |  |
|  | 6 | **Pumps - Rotary Lobe Sump** |  |  |  |  |  |
|  | 21 | **Pumps - Sump** |  |  |  |  |  |
|  | 16 | **Sample Panel** |  |  |  |  |  |
|  | 10 | **Tanks - Field Erected (Demin \ Service Water \ Firewater)** |  |  |  |  |  |
|  | 18 | **Tanks - Shop Fabricated Steel** |  |  |  |  |  |
|  | 15 | **Water Treatment Oil & Water Separator (Below Grade)** |  |  |  |  |  |
|  | 3 | **Valves** |  |  |  |  |  |
|  | 6 | **Valves - Ball (Critical)** |  |  |  |  |  |
|  | 7 | **Valves - Ball (General)** |  |  |  |  |  |
|  | 4 | **Valves - Gate \ Globe \ Check (Critical)** |  |  |  |  |  |
|  | 5 | **Valves - Gate \ Globe \ Check (General)** |  |  |  |  |  |
|  | 1 | **Valves - Butterfly** |  |  |  |  |  |
|  | 2 | **Valves - Control** |  |  |  |  |  |
|  | 3 | **Valves - Safety Relief** |  |  |  |  |  |
|  | 17 | **Mechanical MTOs (For Early Material Purchase)** |  |  |  |  |  |
|  | 10 | **3D Modeling & Stress** |  |  |  |  |  |
|  | 1 | **General Modeling** |  |  |  |  |  |
|  | 2 | **Pipe Rack Modeling** |  |  |  |  |  |
|  | 1 | **Arrangements \ Layouts** |  |  |  |  |  |
|  | 12 | **Underground Piping** |  |  |  |  |  |
|  | 1 | **CWA-01 - HRSG Area** |  |  |  |  |  |
|  | 3 | **CWA-02 - Turbine Area** |  |  |  |  |  |
|  | 2 | **AST - Ammonia Storage & Transfer** |  |  |  |  |  |
|  | 28 | **CAS - Service Air** |  |  |  |  |  |
|  | 16 | **CAI - Instrument Air** |  |  |  |  |  |
|  | 25 | **GCD - Carbon Dioxide Storage** |  |  |  |  |  |
|  | 26 | **GHS - Hydrogen Storage** |  |  |  |  |  |
|  | 27 | **GNS - Nitrogen Storage** |  |  |  |  |  |
|  | 24 | **WWS - Sewage Disposal System** |  |  |  |  |  |
|  | 7 | **CCW - Closed Cycle Cooling Water** |  |  |  |  |  |
|  | 12 | **CTG - Combustion Turbine \ Generator** |  |  |  |  |  |
|  | 13 | **DMN - Demineralized Water** |  |  |  |  |  |
|  | 14 | **FGS - Fuel Gas Regulating & Conditioning** |  |  |  |  |  |
|  | 15 | **FWS - Firewater** |  |  |  |  |  |
|  | 17 | **WSP - Potable Water** |  |  |  |  |  |
|  | 22 | **WSS - Service Water** |  |  |  |  |  |
|  | 23 | **WWC - Waste Water Collection** |  |  |  |  |  |
|  | 5 | **Pipe - Large Bore Cold** |  | 2026-03-24 | 2027-05-19 |  |  |
|  | 7 | **CCW - Closed Cycle Cooling Water** |  | 2026-04-27 | 2026-07-22 |  |  |
| ZE.MECH.7010 |  | CCW - Closed Cycle Cooling Water - Large Bore Cold - Piping Isos - 3D Modeling \ Routing | 50d | 2026-04-27 | 2026-07-08 | 236d | 0d |
| ZE.MECH.9395 |  | CCW - Closed Cycle Cooling Water - Large Bore Cold - Piping Isos - Issue Rev. 0 | 5d | 2026-07-16 | 2026-07-22 | 236d | 0d |

| ID | WBS | Activity | Duration | Start | Finish | Total float | Free float |
| --- | --- | --- | --- | --- | --- | --- | --- |
|  | 9 | **CND - Condenser** |  | 2026-10-02 | 2027-01-14 |  |  |
| ZE.MECH.6390 |  | CND - Condenser - Large Bore Cold - Piping Isos - 3D Modeling \ Routing | 50d | 2026-10-02 | 2026-12-17 | 56d | 0d |
| ZE.MECH.9397 |  | CND - Condenser - Large Bore Cold - Piping Isos - Issue Rev. 0 | 5d | 2027-01-08 | 2027-01-14 | 56d | 0d |
|  | 1 | **CNE - Condenser Air Extraction** |  | 2026-10-02 | 2027-01-14 |  |  |
| ZE.MECH.6410 |  | CNE - Condenser Air Extraction - Large Bore Cold - Piping Isos - 3D Modeling \ Routing | 50d | 2026-10-02 | 2026-12-17 | 56d | 0d |
| ZE.MECH.9399 |  | CNE - Condenser Air Extraction - Large Bore Cold - Piping Isos - Issue Rev. 0 | 5d | 2027-01-08 | 2027-01-14 | 56d | 0d |
|  | 3 | **BBS - Boiler Blowdown** |  |  |  |  |  |
|  | 10 | **CNS - Condensate** |  | 2026-10-16 | 2027-01-29 |  |  |
| ZE.MECH.6380 |  | CNS - Condensate - Large Bore Cold - Piping Isos - 3D Modeling \ Routing | 50d | 2026-10-16 | 2027-01-14 | 56d | 0d |
| ZE.MECH.9401 |  | CNS - Condensate - Large Bore Cold - Piping Isos - Issue Rev. 0 | 5d | 2027-01-25 | 2027-01-29 | 56d | 0d |
|  | 12 | **CTG - Combustion Turbine \ Generator** |  | 2026-10-30 | 2027-02-12 |  |  |
| ZE.MECH.6370 |  | CTG - Combustion Turbine \ Generator - Large Bore Cold - Piping Isos - 3D Modeling \ Routing | 50d | 2026-10-30 | 2027-01-29 | 56d | 0d |
| ZE.MECH.9403 |  | CTG - Combustion Turbine \ Generator - Large Bore Cold - Piping Isos - Issue Rev. 0 | 5d | 2027-02-08 | 2027-02-12 | 56d | 0d |
|  | 13 | **DMN - Demineralized Water** |  | 2026-11-13 | 2027-03-01 |  |  |
| ZE.MECH.7350 |  | DMN - Demineralized Water - Large Bore Cold - Piping Isos - 3D Modeling \ Routing | 50d | 2026-11-13 | 2027-02-12 | 56d | 0d |
| ZE.MECH.9405 |  | DMN - Demineralized Water - Large Bore Cold - Piping Isos - Issue Rev. 0 | 5d | 2027-02-23 | 2027-03-01 | 96d | 0d |
|  | 14 | **FGS - Fuel Gas Regulating & Conditioning** |  | 2027-01-08 | 2027-04-06 |  |  |
| ZE.MECH.7840 |  | FGS - Fuel Gas Regulating & Conditioning - Large Bore Cold - Piping Isos - 3D Modeling \ Routing | 50d | 2027-01-08 | 2027-03-22 | 61d | 0d |
| ZE.MECH.9407 |  | FGS - Fuel Gas Regulating & Conditioning - Large Bore Cold - Piping Isos - Issue Rev. 0 | 5d | 2027-03-31 | 2027-04-06 | 61d | 0d |
|  | 15 | **FWS - Firewater** |  | 2027-01-25 | 2027-04-20 |  |  |
| ZE.MECH.7830 |  | FWS - Firewater - Large Bore Cold - Piping Isos - 3D Modeling \ Routing | 50d | 2027-01-25 | 2027-04-06 | 61d | 0d |
| ZE.MECH.9409 |  | FWS - Firewater - Large Bore Cold - Piping Isos - Issue Rev. 0 | 5d | 2027-04-14 | 2027-04-20 | 61d | 0d |
|  | 21 | **STG - Steam Turbine \ Generator** |  | 2026-10-13 | 2027-01-26 |  |  |
| ZE.MECH.6360 |  | STG - Steam Turbine \ Generator - Large Bore Cold - Piping Isos - 3D Modeling \ Routing | 50d | 2026-10-13 | 2027-01-11 | 119d | 0d |
| ZE.MECH.9411 |  | STG - Steam Turbine \ Generator - Large Bore Cold - Piping Isos - Issue Rev. 0 | 5d | 2027-01-20 | 2027-01-26 | 119d | 0d |

| ID | WBS | Activity | Duration | Start | Finish | Total float | Free float |
| --- | --- | --- | --- | --- | --- | --- | --- |
|  | 17 | **WSP - Potable Water** |  | 2026-03-24 | 2026-06-17 |  |  |
| ZE.MECH.7820 |  | WSP - Potable Water - Large Bore Cold - Piping Isos - 3D Modeling \ Routing | 50d | 2026-03-24 | 2026-06-03 | 259d | 0d |
| ZE.MECH.9413 |  | WSP - Potable Water - Large Bore Cold - Piping Isos - Issue Rev. 0 | 5d | 2026-06-11 | 2026-06-17 | 259d | 0d |
|  | 22 | **WSS - Service Water** |  | 2026-06-09 | 2026-09-02 |  |  |
| ZE.MECH.7340 |  | WSS - Service Water - Large Bore Cold - Piping Isos - 3D Modeling \ Routing | 50d | 2026-06-09 | 2026-08-19 | 206d | 0d |
| ZE.MECH.9415 |  | WSS - Service Water - Large Bore Cold - Piping Isos - Issue Rev. 0 | 5d | 2026-08-27 | 2026-09-02 | 206d | 0d |
|  | 23 | **WWC - Waste Water Collection** |  | 2026-05-08 | 2026-08-04 |  |  |
| ZE.MECH.6790 |  | WWC - Waste Water Collection - Large Bore Cold - Piping Isos - 3D Modeling \ Routing | 50d | 2026-05-08 | 2026-07-21 | 227d | 0d |
| ZE.MECH.9417 |  | WWC - Waste Water Collection - Large Bore Cold - Piping Isos - Issue Rev. 0 | 5d | 2026-07-29 | 2026-08-04 | 227d | 0d |
|  | 24 | **WWT - Waste Water Treatment** |  | 2027-02-24 | 2027-05-19 |  |  |
| ZE.MECH.7580 |  | WWT - Waste Water Treatment - Large Bore Cold - Piping Isos - 3D Modeling \ Routing | 50d | 2027-02-24 | 2027-05-05 | 40d | 0d |
| ZE.MECH.9419 |  | WWT - Waste Water Treatment - Large Bore Cold - Piping Isos - Issue Rev. 0 | 5d | 2027-05-13 | 2027-05-19 | 40d | 0d |
|  | 6 | **Pipe - Large Bore Hot** |  | 2026-02-04 | 2026-11-05 |  |  |
|  | 4 | **BFW - Boiler Feedwater** |  | 2026-02-04 | 2026-06-22 |  |  |
| ZE.MECH.5510 |  | BFW - Boiler Feedwater - Large Bore Hot - Piping Isos - 3D Modeling \ Routing | 50d | 2026-02-04 | 2026-04-16 | 122d | 0d |
| ZE.MECH.9285 |  | BFW - Boiler Feedwater - Large Bore Hot - Piping Isos - Issue Rev. 0 | 5d | 2026-06-15 | 2026-06-22 | 122d | 0d |
|  | 9 | **CND - Condenser** |  | 2026-04-20 | 2026-08-19 |  |  |
| ZE.MECH.5500 |  | CND - Condenser - Large Bore Hot - Piping Isos - 3D Modeling \ Routing | 45d | 2026-04-20 | 2026-06-23 | -117d | 0d |
| ZE.MECH.9230 |  | CND - Condenser - Large Bore Hot - Piping Isos - Issue Rev. 0 | 5d | 2026-08-13 | 2026-08-19 | 56d | 0d |
|  | 1 | **CNE - Condenser Air Extraction** |  | 2026-04-20 | 2026-08-19 |  |  |
| ZE.MECH.5540 |  | CNE - Condenser Air Extraction - Large Bore Hot - Piping Isos - 3D Modeling \ Routing | 45d | 2026-04-20 | 2026-06-23 | -117d | 0d |
| ZE.MECH.9280 |  | CNE - Condenser Air Extraction - Large Bore Hot - Piping Isos - Issue Rev. 0 | 5d | 2026-08-13 | 2026-08-19 | 56d | 0d |
|  | 14 | **FGS - Fuel Gas Regulating & Conditioning** |  | 2026-07-09 | 2026-11-05 |  |  |
| ZE.MECH.7570 |  | FGS - Fuel Gas Regulating & Conditioning - Large Bore Hot - Piping Isos - 3D Modeling \ Routing | 45d | 2026-07-09 | 2026-09-10 | 31d | 0d |
| ZE.MECH.9290 |  | FGS - Fuel Gas Regulating & Conditioning - Large Bore Hot - Piping Isos - Issue Rev. 0 | 5d | 2026-10-30 | 2026-11-05 | 31d | 0d |

| ID | WBS | Activity | Duration | Start | Finish | Total float | Free float |
| --- | --- | --- | --- | --- | --- | --- | --- |
|  | 18 | **SAB - Auxiliary Boiler** |  | 2026-03-03 | 2026-07-17 |  |  |
| ZE.MECH.5490 |  | SAB - Auxiliary Boiler - Large Bore Hot - Piping Isos - 3D Modeling \ Routing | 50d | 2026-03-03 | 2026-05-12 | 104d | 0d |
| ZE.MECH.9295 |  | SAB - Auxiliary Boiler - Large Bore Hot - Piping Isos - Issue Rev. 0 | 5d | 2026-07-13 | 2026-07-17 | 104d | 0d |
|  | 3 | **BBS - Boiler Blowdown** |  |  |  |  |  |
|  | 19 | **SAX - Auxiliary Steam** |  | 2026-03-10 | 2026-07-24 |  |  |
| ZE.MECH.5480 |  | SAX - Auxiliary Steam - Large Bore Hot - Piping Isos - 3D Modeling \ Routing | 50d | 2026-03-10 | 2026-05-19 | 99d | 0d |
| ZE.MECH.9300 |  | SAX - Auxiliary Steam - Large Bore Hot - Piping Isos - Issue Rev. 0 | 5d | 2026-07-20 | 2026-07-24 | 99d | 0d |
|  | 29 | **SHP - High Pressure Steam** |  | 2026-03-10 | 2026-07-24 |  |  |
| ZE.MECH.5470 |  | SHP - High Pressure Steam - Large Bore Hot - Piping Isos - 3D Modeling \ Routing | 50d | 2026-03-10 | 2026-05-19 | 99d | 0d |
| ZE.MECH.9305 |  | SHP - High Pressure Steam - Large Bore Hot - Piping Isos - Issue Rev. 0 | 5d | 2026-07-20 | 2026-07-24 | 99d | 0d |
|  | 30 | **SLP - Low Pressure Steam** |  | 2026-03-24 | 2026-08-07 |  |  |
| ZE.MECH.5460 |  | SLP - Low Pressure Steam - Large Bore Hot - Piping Isos - 3D Modeling \ Routing | 50d | 2026-03-24 | 2026-06-03 | 89d | 0d |
| ZE.MECH.9310 |  | SLP - Low Pressure Steam - Large Bore Hot - Piping Isos - Issue Rev. 0 | 5d | 2026-08-03 | 2026-08-07 | 89d | 0d |
|  | 31 | **SRC - Steam Reheat (Cold)** |  | 2026-03-24 | 2026-08-07 |  |  |
| ZE.MECH.5450 |  | SRC - Steam Reheat (Cold) - Large Bore Hot - Piping Isos - 3D Modeling \ Routing | 50d | 2026-03-24 | 2026-06-03 | 89d | 0d |
| ZE.MECH.9315 |  | SRC - Steam Reheat (Cold) - Large Bore Hot - Piping Isos - Issue Rev. 0 | 5d | 2026-08-03 | 2026-08-07 | 89d | 0d |
|  | 6 | **SRH - Steam Reheat (Hot)** |  | 2026-03-10 | 2026-07-24 |  |  |
| ZE.MECH.5440 |  | SRH - Steam Reheat (Hot) - Large Bore Hot - Piping Isos - 3D Modeling \ Routing | 50d | 2026-03-10 | 2026-05-19 | 99d | 0d |
| ZE.MECH.9320 |  | SRH - Steam Reheat (Hot) - Large Bore Hot - Piping Isos - Issue Rev. 0 | 5d | 2026-07-20 | 2026-07-24 | 99d | 0d |
|  | 21 | **STG - Steam Turbine \ Generator** |  | 2026-04-08 | 2026-08-21 |  |  |
| ZE.MECH.5430 |  | STG - Steam Turbine \ Generator - Large Bore Hot - Piping Isos - 3D Modeling \ Routing | 50d | 2026-04-08 | 2026-06-17 | 84d | 0d |
| ZE.MECH.9325 |  | STG - Steam Turbine \ Generator - Large Bore Hot - Piping Isos - Issue Rev. 0 | 5d | 2026-08-17 | 2026-08-21 | 84d | 0d |
|  | 7 | **Pipe - Small Bore Cold** |  | 2026-05-28 | 2027-05-19 |  |  |
|  | 2 | **AST - Ammonia Storage & Transfer** |  | 2026-05-28 | 2026-08-07 |  |  |
| ZE.MECH.7800 |  | AST - Ammonia Storage & Transfer - Small Bore Cold - Piping Isos - 3D Modeling \ Routing | 40d | 2026-05-28 | 2026-07-24 | 174d | 0d |
| ZE.MECH.9421 |  | AST - Ammonia Storage & Transfer - Small Bore Cold - Piping Isos - Issue Rev. 0 | 5d | 2026-08-03 | 2026-08-07 | 174d | 0d |

| ID | WBS | Activity | Duration | Start | Finish | Total float | Free float |
| --- | --- | --- | --- | --- | --- | --- | --- |
|  | 16 | **CAI - Instrument Air** |  | 2026-06-11 | 2026-08-21 |  |  |
| ZE.MECH.7790 |  | CAI - Instrument Air - Small Bore Cold - Piping Isos - 3D Modeling \ Routing | 40d | 2026-06-11 | 2026-08-07 | 174d | 0d |
| ZE.MECH.9423 |  | CAI - Instrument Air - Small Bore Cold - Piping Isos - Issue Rev. 0 | 5d | 2026-08-17 | 2026-08-21 | 214d | 0d |
|  | 5 | **CCF - Steam Cycle & Evaporative Cooler Chemical Feed** |  | 2026-09-14 | 2026-11-20 |  |  |
| ZE.MECH.7770 |  | CCF - Steam Cycle & Evaporative Cooler Chemical Feed - Small Bore Cold - Piping Isos - 3D Modeling \ Routing | 40d | 2026-09-14 | 2026-11-06 | 110d | 0d |
| ZE.MECH.9425 |  | CCF - Steam Cycle & Evaporative Cooler Chemical Feed - Small Bore Cold - Piping Isos - Issue Rev. 0 | 5d | 2026-11-16 | 2026-11-20 | 150d | 0d |
|  | 7 | **CCW - Closed Cycle Cooling Water** |  | 2026-09-14 | 2026-11-20 |  |  |
| ZE.MECH.7760 |  | CCW - Closed Cycle Cooling Water - Small Bore Cold - Piping Isos - 3D Modeling \ Routing | 40d | 2026-09-14 | 2026-11-06 | 110d | 0d |
| ZE.MECH.9427 |  | CCW - Closed Cycle Cooling Water - Small Bore Cold - Piping Isos - Issue Rev. 0 | 5d | 2026-11-16 | 2026-11-20 | 150d | 0d |
|  | 28 | **CGS - Compressed Gas** |  | 2026-06-11 | 2026-08-21 |  |  |
| ZE.MECH.7780 |  | CGS - Compressed Gas - Small Bore Cold - Piping Isos - 3D Modeling \ Routing | 40d | 2026-06-11 | 2026-08-07 | 174d | 0d |
| ZE.MECH.9429 |  | CGS - Compressed Gas - Small Bore Cold - Piping Isos - Issue Rev. 0 | 5d | 2026-08-17 | 2026-08-21 | 214d | 0d |
|  | 10 | **CNS - Condensate** |  | 2026-09-14 | 2026-11-20 |  |  |
| ZE.MECH.9620 |  | CNS - Condensate - Small Bore Cold - Piping Isos - 3D Modeling \ Routing | 40d | 2026-09-14 | 2026-11-06 | 110d | 0d |
| ZE.MECH.7750 |  | CNS - Condensate - Small Bore Cold - Piping Isos - Issue Rev. 0 | 5d | 2026-11-16 | 2026-11-20 | 150d | 0d |
|  | 11 | **CSA - Cycle Sampling & Analysis** |  | 2026-11-16 | 2027-02-16 |  |  |
| ZE.MECH.9640 |  | CSA - Cycle Sampling & Analysis - Small Bore Cold - Piping Isos - 3D Modeling \ Routing | 40d | 2026-11-16 | 2027-02-01 | 105d | 0d |
| ZE.MECH.7890 |  | CSA - Cycle Sampling & Analysis - Small Bore Cold - Piping Isos - Issue Rev. 0 | 5d | 2027-02-09 | 2027-02-16 | 105d | 0d |
|  | 12 | **CTG - Combustion Turbine \ Generator** |  | 2027-02-01 | 2027-04-13 |  |  |
| ZE.MECH.9660 |  | CTG - Combustion Turbine \ Generator - Small Bore Cold - Piping Isos - 3D Modeling \ Routing | 40d | 2027-02-01 | 2027-03-30 | 66d | 0d |
| ZE.MECH.7880 |  | CTG - Combustion Turbine \ Generator - Small Bore Cold - Piping Isos - Issue Rev. 0 | 5d | 2027-04-07 | 2027-04-13 | 66d | 0d |
|  | 13 | **DMN - Demineralized Water** |  | 2027-02-16 | 2027-04-27 |  |  |
| ZE.MECH.9680 |  | DMN - Demineralized Water - Small Bore Cold - Piping Isos - 3D Modeling \ Routing | 40d | 2027-02-16 | 2027-04-13 | 56d | 0d |
| ZE.MECH.7870 |  | DMN - Demineralized Water - Small Bore Cold - Piping Isos - Issue Rev. 0 | 5d | 2027-04-21 | 2027-04-27 | 56d | 0d |

| ID | WBS | Activity | Duration | Start | Finish | Total float | Free float |
| --- | --- | --- | --- | --- | --- | --- | --- |
|  | 14 | **FGS - Fuel Gas Regulating & Conditioning** |  | 2027-02-16 | 2027-04-27 |  |  |
| ZE.MECH.9700 |  | FGS - Fuel Gas Regulating & Conditioning - Small Bore Cold - Piping Isos - 3D Modeling \ Routing | 40d | 2027-02-16 | 2027-04-13 | 56d | 0d |
| ZE.MECH.7860 |  | FGS - Fuel Gas Regulating & Conditioning - Small Bore Cold - Piping Isos - Issue Rev. 0 | 5d | 2027-04-21 | 2027-04-27 | 56d | 0d |
|  | 18 | **SAB - Auxiliary Boiler** |  | 2026-07-20 | 2026-09-28 |  |  |
| ZE.MECH.9720 |  | SAB - Auxiliary Boiler - Small Bore Cold - Piping Isos - 3D Modeling \ Routing | 40d | 2026-07-20 | 2026-09-14 | 189d | 0d |
| ZE.MECH.6470 |  | SAB - Auxiliary Boiler - Small Bore Cold - Piping Isos - Issue Rev. 0 | 5d | 2026-09-22 | 2026-09-28 | 189d | 0d |
|  | 21 | **STG - Steam Turbine \ Generator** |  | 2026-10-27 | 2027-01-26 |  |  |
| ZE.MECH.9740 |  | STG - Steam Turbine \ Generator - Small Bore Cold - Piping Isos - 3D Modeling \ Routing | 40d | 2026-10-27 | 2027-01-11 | 119d | 0d |
| ZE.MECH.6460 |  | STG - Steam Turbine \ Generator - Small Bore Cold - Piping Isos - Issue Rev. 0 | 5d | 2027-01-20 | 2027-01-26 | 119d | 0d |
|  | 17 | **WSP - Potable Water** |  | 2026-10-27 | 2027-01-26 |  |  |
| ZE.MECH.9760 |  | WSP - Potable Water - Small Bore Cold - Piping Isos - 3D Modeling \ Routing | 40d | 2026-10-27 | 2027-01-11 | 119d | 0d |
| ZE.MECH.6450 |  | WSP - Potable Water - Small Bore Cold - Piping Isos - Issue Rev. 0 | 5d | 2027-01-20 | 2027-01-26 | 119d | 0d |
|  | 22 | **WSS - Service Water** |  | 2026-10-27 | 2027-01-26 |  |  |
| ZE.MECH.9780 |  | WSS - Service Water - Small Bore Cold - Piping Isos - 3D Modeling \ Routing | 40d | 2026-10-27 | 2027-01-11 | 119d | 0d |
| ZE.MECH.7310 |  | WSS - Service Water - Small Bore Cold - Piping Isos - Issue Rev. 0 | 5d | 2027-01-20 | 2027-01-26 | 119d | 0d |
|  | 23 | **WWC - Waste Water Collection** |  | 2026-10-27 | 2027-01-26 |  |  |
| ZE.MECH.9800 |  | WWC - Waste Water Collection - Small Bore Cold - Piping Isos - 3D Modeling \ Routing | 40d | 2026-10-27 | 2027-01-11 | 119d | 0d |
| ZE.MECH.7300 |  | WWC - Waste Water Collection - Small Bore Cold - Piping Isos - Issue Rev. 0 | 5d | 2027-01-20 | 2027-01-26 | 119d | 0d |
|  | 24 | **WWT - Waste Water Treatment** |  | 2027-03-10 | 2027-05-19 |  |  |
| ZE.MECH.9820 |  | WWT - Waste Water Treatment - Small Bore Cold - Piping Isos - 3D Modeling \ Routing | 40d | 2027-03-10 | 2027-05-05 | 40d | 0d |
| ZE.MECH.7560 |  | WWT - Waste Water Treatment - Small Bore Cold - Piping Isos - Issue Rev. 0 | 5d | 2027-05-13 | 2027-05-19 | 40d | 0d |
|  | 8 | **Pipe - Small Bore Hot** |  | 2026-05-08 | 2027-03-02 |  |  |
|  | 4 | **BFW - Boiler Feedwater** |  | 2026-05-08 | 2026-09-23 |  |  |
| ZE.MECH.5900 |  | BFW - Boiler Feedwater - Small Bore Hot - Piping Isos - 3D Modeling \ Routing | 50d | 2026-05-08 | 2026-07-21 | 122d | 0d |
| ZE.MECH.9335 |  | BFW - Boiler Feedwater - Small Bore Hot - Piping Isos - Issue Rev. 0 | 5d | 2026-09-17 | 2026-09-23 | 192d | 0d |

| ID | WBS | Activity | Duration | Start | Finish | Total float | Free float |
| --- | --- | --- | --- | --- | --- | --- | --- |
|  | 9 | **CND - Condenser** |  | 2026-07-16 | 2026-11-12 |  |  |
| ZE.MECH.5830 |  | CND - Condenser - Small Bore Hot - Piping Isos - 3D Modeling \ Routing | 45d | 2026-07-16 | 2026-09-17 | 56d | 0d |
| ZE.MECH.9340 |  | CND - Condenser - Small Bore Hot - Piping Isos - Issue Rev. 0 | 5d | 2026-11-06 | 2026-11-12 | 56d | 0d |
|  | 1 | **CNE - Condenser Air Extraction** |  | 2026-07-16 | 2026-11-12 |  |  |
| ZE.MECH.5850 |  | CNE - Condenser Air Extraction - Small Bore Hot - Piping Isos - 3D Modeling \ Routing | 45d | 2026-07-16 | 2026-09-17 | 56d | 0d |
| ZE.MECH.9345 |  | CNE - Condenser Air Extraction - Small Bore Hot - Piping Isos - Issue Rev. 0 | 5d | 2026-11-06 | 2026-11-12 | 56d | 0d |
|  | 11 | **CSA - Cycle Sampling & Analysis** |  | 2026-10-12 | 2027-03-02 |  |  |
| ZE.MECH.7070 |  | CSA - Cycle Sampling & Analysis - Small Bore Hot - Piping Isos - 3D Modeling \ Routing | 45d | 2026-10-12 | 2026-12-18 | 25d | 0d |
| ZE.MECH.9350 |  | CSA - Cycle Sampling & Analysis - Small Bore Hot - Piping Isos - Issue Rev. 0 | 5d | 2027-02-24 | 2027-03-02 | 95d | 0d |
|  | 14 | **FGS - Fuel Gas Regulating & Conditioning** |  | 2026-10-02 | 2027-02-22 |  |  |
| ZE.MECH.7690 |  | FGS - Fuel Gas Regulating & Conditioning - Small Bore Hot - Piping Isos - 3D Modeling \ Routing | 45d | 2026-10-02 | 2026-12-10 | 31d | 0d |
| ZE.MECH.9355 |  | FGS - Fuel Gas Regulating & Conditioning - Small Bore Hot - Piping Isos - Issue Rev. 0 | 5d | 2027-02-16 | 2027-02-22 | 61d | 0d |
|  | 3 | **BBS - Boiler Blowdown** |  |  |  |  |  |
|  | 18 | **SAB - Auxiliary Boiler** |  | 2026-06-04 | 2026-10-19 |  |  |
| ZE.MECH.5890 |  | SAB - Auxiliary Boiler - Small Bore Hot - Piping Isos - 3D Modeling \ Routing | 50d | 2026-06-04 | 2026-08-14 | 104d | 0d |
| ZE.MECH.9360 |  | SAB - Auxiliary Boiler - Small Bore Hot - Piping Isos - Issue Rev. 0 | 5d | 2026-10-13 | 2026-10-19 | 174d | 0d |
|  | 19 | **SAX - Auxiliary Steam** |  | 2026-06-11 | 2026-10-26 |  |  |
| ZE.MECH.5820 |  | SAX - Auxiliary Steam - Small Bore Hot - Piping Isos - 3D Modeling \ Routing | 50d | 2026-06-11 | 2026-08-21 | 99d | 0d |
| ZE.MECH.9365 |  | SAX - Auxiliary Steam - Small Bore Hot - Piping Isos - Issue Rev. 0 | 5d | 2026-10-20 | 2026-10-26 | 169d | 0d |
|  | 29 | **SHP - High Pressure Steam** |  | 2026-06-11 | 2026-10-26 |  |  |
| ZE.MECH.5810 |  | SHP - High Pressure Steam - Small Bore Hot - Piping Isos - 3D Modeling \ Routing | 50d | 2026-06-11 | 2026-08-21 | 99d | 0d |
| ZE.MECH.9370 |  | SHP - High Pressure Steam - Small Bore Hot - Piping Isos - Issue Rev. 0 | 5d | 2026-10-20 | 2026-10-26 | 169d | 0d |
|  | 30 | **SLP - Low Pressure Steam** |  | 2026-06-26 | 2026-11-09 |  |  |
| ZE.MECH.5800 |  | SLP - Low Pressure Steam - Small Bore Hot - Piping Isos - 3D Modeling \ Routing | 50d | 2026-06-26 | 2026-09-04 | 89d | 0d |
| ZE.MECH.9375 |  | SLP - Low Pressure Steam - Small Bore Hot - Piping Isos - Issue Rev. 0 | 5d | 2026-11-03 | 2026-11-09 | 159d | 0d |

| ID | WBS | Activity | Duration | Start | Finish | Total float | Free float |
| --- | --- | --- | --- | --- | --- | --- | --- |
|  | 31 | **SRC - Steam Reheat (Cold)** |  | 2026-06-26 | 2026-11-09 |  |  |
| ZE.MECH.5790 |  | SRC - Steam Reheat (Cold) - Small Bore Hot - Piping Isos - 3D Modeling \ Routing | 50d | 2026-06-26 | 2026-09-04 | 89d | 0d |
| ZE.MECH.9380 |  | SRC - Steam Reheat (Cold) - Small Bore Hot - Piping Isos - Issue Rev. 0 | 5d | 2026-11-03 | 2026-11-09 | 159d | 0d |
|  | 6 | **SRH - Steam Reheat (Hot)** |  | 2026-06-11 | 2026-10-26 |  |  |
| ZE.MECH.5780 |  | SRH - Steam Reheat (Hot) - Small Bore Hot - Piping Isos - 3D Modeling \ Routing | 50d | 2026-06-11 | 2026-08-21 | 99d | 0d |
| ZE.MECH.9385 |  | SRH - Steam Reheat (Hot) - Small Bore Hot - Piping Isos - Issue Rev. 0 | 5d | 2026-10-20 | 2026-10-26 | 169d | 0d |
|  | 21 | **STG - Steam Turbine \ Generator** |  | 2026-07-13 | 2026-11-30 |  |  |
| ZE.MECH.5770 |  | STG - Steam Turbine \ Generator - Small Bore Hot - Piping Isos - 3D Modeling \ Routing | 50d | 2026-07-13 | 2026-09-21 | 84d | 0d |
| ZE.MECH.9390 |  | STG - Steam Turbine \ Generator - Small Bore Hot - Piping Isos - Issue Rev. 0 | 5d | 2026-11-17 | 2026-11-30 | 119d | 0d |
|  | 13 | **Pipe Supports - Large Bore Cold** |  |  |  |  |  |
|  | 14 | **Pipe Supports - Large Bore Hot** |  |  |  |  |  |
|  | 4 | **BFW - Boiler Feedwater** |  |  |  |  |  |
|  | 1 | **CND - Condenser** |  |  |  |  |  |
|  | 2 | **CNE - Condenser Air Extraction** |  |  |  |  |  |
|  | 5 | **FGS - Fuel Gas Regulating & Conditioning** |  |  |  |  |  |
|  | 18 | **SAB - Auxiliary Boiler** |  |  |  |  |  |
|  | 19 | **SAX - Auxiliary Steam** |  |  |  |  |  |
|  | 29 | **SHP - High Pressure Steam** |  |  |  |  |  |
|  | 30 | **SLP - Low Pressure Steam** |  |  |  |  |  |
|  | 31 | **SRC - Steam Reheat (Cold)** |  |  |  |  |  |
|  | 6 | **SRH - Steam Reheat (Hot)** |  |  |  |  |  |
|  | 21 | **STG - Steam Turbine \ Generator** |  |  |  |  |  |
|  | 3 | **BBS - Boiler Blowdown** |  |  |  |  |  |
|  | 16 | **Pipe Supports - Small Bore Cold** |  |  |  |  |  |
|  | 15 | **Pipe Supports - Small Bore Hot** |  |  |  |  |  |
|  | 4 | **BFW - Boiler Feedwater** |  |  |  |  |  |
|  | 1 | **CND - Condenser** |  |  |  |  |  |
|  | 2 | **CNE - Condenser Air Extraction** |  |  |  |  |  |
|  | 7 | **CSA - Cycle Sampling & Analysis** |  |  |  |  |  |
|  | 5 | **FGS - Fuel Gas Regulating & Conditioning** |  |  |  |  |  |
|  | 18 | **SAB - Auxiliary Boiler** |  |  |  |  |  |
|  | 19 | **SAX - Auxiliary Steam** |  |  |  |  |  |
|  | 29 | **SHP - High Pressure Steam** |  |  |  |  |  |
|  | 3 | **BBS - Boiler Blowdown** |  |  |  |  |  |
|  | 30 | **SLP - Low Pressure Steam** |  |  |  |  |  |
|  | 31 | **SRC - Steam Reheat (Cold)** |  |  |  |  |  |
|  | 6 | **SRH - Steam Reheat (Hot)** |  |  |  |  |  |
|  | 21 | **STG - Steam Turbine \ Generator** |  |  |  |  |  |
|  | 11 | **System Description & Manuals** |  |  |  |  |  |
|  | 3 | **Electrical** |  |  |  |  |  |
|  | 16 | **Calculations & Studies** |  |  |  |  |  |
|  | 1 | **Rev. A Issuances** |  |  |  |  |  |
|  | 2 | **Client Reviews** |  |  |  |  |  |
|  | 3 | **Rev. 0 Issuances** |  |  |  |  |  |
|  | 7 | **Power Distribution (One \ Three Lines)** |  |  |  |  |  |
|  | 10 | **Specifications** |  |  |  |  |  |
|  | 11 | **600Vac Bus Duct (Being Worked with 1500V DC Bus Duct Excitation)** |  |  |  |  |  |
|  | 2 | **1500V DC Bus Excitation (Being Worked with 600 VAC Bus Duct)** |  |  |  |  |  |
|  | 6 | **6.9kV Non-Seg Bus** |  |  |  |  |  |
|  | 18 | **23kV Iso-Phase Bus** |  |  |  |  |  |
|  | 4 | **ACC - PDC w\ MCC's (All PDCs Being Worked Together - Bundle to Purchase)** |  |  |  |  |  |
|  | 14 | **Cathodic Protection** |  |  |  |  |  |
|  | 20 | **Communications & Security Systems** |  |  |  |  |  |
|  | 8 | **DC \ UPS** |  |  |  |  |  |
|  | 24 | **Electrical Supporting Specifications** |  |  |  |  |  |
|  | 23 | **Electrical Installation** |  |  |  |  |  |
|  | 22 | **Fire Detection - Electrical** |  |  |  |  |  |
|  | 16 | **Heat Trace** |  |  |  |  |  |
|  | 21 | **HRSG - PDC w\ MCC's (All PDCs Being Worked Together - Bundle to Purchase)** |  |  |  |  |  |
|  | 13 | **Generator Circuit Breaker** |  |  |  |  |  |
|  | 19 | **Lightning Protection** |  |  |  |  |  |
|  | 9 | **LV (480V) Auxiliary Pad Mount Transformers** |  |  |  |  |  |
|  | 1 | **LV (480V) MCC's & Switchgear (All PDCs Being Worked Together - Bundle to Purchase)** |  |  |  |  |  |
|  | 5 | **LV PDC w\ MCC (All PDCs Being Worked Together - Bundle to Purchase)** |  |  |  |  |  |
|  | 7 | **MV (6.9kV) Pad Mount Transformers** |  |  |  |  |  |
|  | 3 | **MV PDC w\ 6.9kV Switchgear & MCC (All PDCs Being Worked Together - Bundle to Purchase)** |  |  |  |  |  |
|  | 15 | **Relay Protection & Metering** |  |  |  |  |  |
|  | 25 | **RTU** |  |  |  |  |  |
|  | 12 | **Standby Diesel Generator (1250kW)** |  |  |  |  |  |
|  | 17 | **Switchyard Engineering Option** |  |  |  |  |  |

| WBS | Activity |
| --- | --- |
| 10 | **Wire & Cable** |
| 6 | **Lists** |
| 4 | **Electrical MTOs (For Early Material Purchase)** |
| 1 | **CWA-01 - HRSG Area** |
| 2 | **CWA-02 - Turbine Area** |
| 3 | **CWA-05 - Utility Rack Area** |
| 4 | **CWA-06 - ACC Area** |
| 5 | **CWA-07 - Emergency Diesel Gen. Area** |
| 6 | **CWA-08 - LV Switchgear PDC Area** |
| 7 | **CWA-09 - Air Inlet Filter Area** |
| 8 | **CWA-10 - Fin Fan Cooler** |
| 9 | **CWA-11 - Boiler Feed Pump Blgd Area** |
| 10 | **CWA-12 - Control Room \ Admin \ Warehouse** |
| 11 | **CWA-13 - GSU** |
| 12 | **CWA-14 - Aux Boiler Bldg Area** |
| 13 | **CWA-17 - Plant Gas Yard Area** |
| 14 | **CWA-19 - Ammonia Storage Tank Area** |
| 15 | **CWA-21 - Service \ Fire Protection \ Demin Water Area** |
| 16 | **CWA-22 - Hydrogen Storage Area** |
| 11 | **3D Modeling** |
| 2 | **Arrangements \ Layouts** |
| 1 | **CWA-01 - HRSG Area** |
| 2 | **CWA-02 - Turbine Area** |
| 3 | **CWA-05 - Utility Rack Area** |
| 4 | **CWA-06 - ACC Area** |
| 5 | **CWA-07 - Emergency Diesel Gen. Area** |
| 6 | **CWA-08 - LV Switchgear PDC Area** |
| 7 | **CWA-09 - Air Inlet Filter Area** |
| 8 | **CWA-10 - Fin Fan Cooler** |
| 9 | **CWA-11 - Boiler Feed Pump Blgd Area** |
| 10 | **CWA-12 - Control Room \ Admin \ Warehouse** |
| 11 | **CWA-13 - GSU** |
| 12 | **CWA-14 - Aux Boiler Bldg Area** |
| 13 | **CWA-17 - Plant Gas Yard Area** |
| 14 | **CWA-19 - Ammonia Storage Tank Area** |
| 15 | **CWA-21 - Service \ Fire Protection \ Demin Water Area** |
| 16 | **CWA-22 - Hydrogen Storage Area** |
| 1 | **Underground Electrical** |
| 1 | **CWA-01 - HRSG Area** |
| 10 | **CWA-12 - Control Room \ Admin \ Warehouse** |
| 11 | **CWA-13 - GSU** |
| 12 | **CWA-14 - Aux Boiler Bldg Area** |
| 13 | **CWA-17 - Plant Gas Yard Area** |
| 14 | **CWA-19 - Ammonia Storage Tank Area** |
| 15 | **CWA-21 - Service \ Fire Protection \ Demin Water Area** |
| 2 | **CWA-02 - Turbine Area** |
| 3 | **CWA-05 - Utility Rack Area** |
| 4 | **CWA-06 - ACC Area** |
| 5 | **CWA-07 - Emergency Diesel Gen. Area** |
| 6 | **CWA-08 - LV Switchgear PDC Area** |
| 7 | **CWA-09 - Air Inlet Filter Area** |
| 8 | **CWA-10 - Fin Fan Cooler** |
| 9 | **CWA-11 - Boiler Feed Pump Bldg Area** |
| 16 | **CWA-22 - Hydrogen Storage Area** |
| 3 | **Cable Tray** |
| 1 | **CWA-01 - HRSG Area** |
| 2 | **CWA-02 - Turbine Area** |
| 3 | **CWA-05 - Utility Rack Area** |
| 4 | **CWA-06 - ACC Area** |
| 6 | **CWA-08 - LV Switchgear PDC Area** |
| 7 | **CWA-09 - Air Inlet Filter Area** |
| 8 | **CWA-10 - Fin Fan Cooler** |
| 9 | **CWA-11 - Boiler Feed Pump Bldg Area** |
| 10 | **CWA-12 - Control Room \ Admin \ Warehouse** |
| 11 | **CWA-13 - GSU** |
| 12 | **CWA-14 - Aux Boiler Bldg Area** |
| 5 | **CWA-07 - Emergency Diesel Gen. Area** |
| 13 | **CWA-17 - Plant Gas Yard Area** |
| 14 | **CWA-19 - Ammonia Storage Tank Area** |
| 15 | **CWA-21 - Service \ Fire Protection \ Demin Water Area** |

| WBS | Activity |
| --- | --- |
| 16 | **CWA-22 - Hydrogen Storage Area** |
| 5 | **Lighting** |
| 1 | **CWA-01 - HRSG Area** |
| 2 | **CWA-02 - Turbine Area** |
| 3 | **CWA-05 - Utility Rack Area** |
| 4 | **CWA-06 - ACC Area** |
| 5 | **CWA-07 - Emergency Diesel Gen. Area** |
| 6 | **CWA-08 - LV Switchgear PDC Area** |
| 7 | **CWA-09 - Air Inlet Filter Area** |
| 8 | **CWA-10 - Fin Fan Cooler** |
| 9 | **CWA-11 - Boiler Feed Pump Bldg Area** |
| 10 | **CWA-12 - Control Room \ Admin \ Warehouse** |
| 11 | **CWA-13 - GSU** |
| 12 | **CWA-14 - Aux Boiler Bldg Area** |
| 13 | **CWA-17 - Plant Gas Yard Area** |
| 14 | **CWA-19 - Ammonia Storage Tank Area** |
| 15 | **CWA-21 - Service \ Fire Protection \ Demin Water Area** |
| 16 | **CWA-22 - Hydrogen Storage Area** |
| 8 | **Relay Settings** |
| 9 | **Wiring & Cable Routing** |
| 1 | **AST - Ammonia Storage & Transfer System** |
| 2 | **BBS - Boiler Blowdown System** |
| 10 | **CCS - CO Catalyst System** |
| 11 | **CCW - Closed Cycle Cooling Water System** |
| 12 | **CEM - Continuous Emissions Monitoring System (CEMS)** |
| 13 | **CMT - Cycle Makeup Treatment** |
| 14 | **CND - Condensor** |
| 15 | **CNE - Condensor Air Extraction System** |
| 16 | **CNS - Condensate System** |
| 17 | **CSA - Cycle (Water\Steam) Sampling & Analysis System** |
| 18 | **CTE - CT Inlet Evap Cooler System** |
| 19 | **CTG - Combustion Turbine \ Generator** |
| 20 | **CTW - CT Water Wash System** |
| 21 | **DBU - Duct Burner Unit** |
| 22 | **DMN - Demineralized Water System** |
| 23 | **EDC - DC Power System** |
| 24 | **EDG - Emergency Diesel Generator System** |
| 25 | **EEP - Essential Electrical System** |
| 27 | **ELA - Low Voltage AC Power System (480V)** |
| 29 | **ELS - Emergency Lighting System** |
| 3 | **BFW - Boiler Feed Water System** |
| 30 | **EMB - Medium Voltage AC Power System (6.9kV)** |
| 31 | **EMC - Medium Voltage AC Power System (8kV - 34kV)** |
| 32 | **FDS - Fire Detection System** |
| 33 | **FGS - Fuel Gas Supply System** |
| 34 | **FPA - Plant Fire Protection** |
| 35 | **FWS - Fire Water System** |
| 36 | **GCB - Generator Circuit Breaker** |
| 37 | **GSU - Generator Step Up Transformer** |
| 38 | **GVA - Generator & Excitation** |
| 39 | **HRS - Heat Recovery Steam Generator** |
| 4 | **BLA - Admin \ Control Building** |
| 40 | **IBS - Isolated Phase Bus Duct** |
| 41 | **PLS - Plant Lighting System** |
| 42 | **PRS - Protective Relay System** |
| 43 | **SAB - Auxiliary Boiler System** |
| 44 | **SAX - Auxiliary Steam System** |
| 45 | **SCR - Selective Catalytic Reduction System** |
| 46 | **SHP - High Pressure Steam System** |
| 47 | **SIP - Intermediate Pressure Steam System** |
| 48 | **SLP - Low Pressure Steam System** |
| 49 | **SRC - Cold Reheat Steam System** |
| 5 | **BLD - Miscellaneous Buildings & Structures** |
| 50 | **SRH - Hot Reheat Steam System** |
| 51 | **SST - Station Service Transformer** |
| 52 | **STG - Steam Turbine \ Generator** |
| 53 | **STI - Steam Turbine Instrumentation** |
| 54 | **STL - Steam Turbine Lube Oil System** |
| 55 | **STS - Steam Turbine Seals System** |
| 56 | **TCP - Temporary Construction Power System** |

| ID | WBS | Activity | Duration | Start | Finish | Remaining | Planned start | Planned finish | Total float | Free float | Expected finish |
| --- | --- | --- | --- | --- | --- | --- | --- | --- | --- | --- | --- |
|  | 57 | **UAT - Unit Aux Transformer** |  |  |  |  |  |  |  |  |  |
|  | 58 | **WSS - Service Water System** |  |  |  |  |  |  |  |  |  |
|  | 6 | **BLP - Power Distribution Center** |  |  |  |  |  |  |  |  |  |
|  | 7 | **BLT - CT \ ST Building** |  |  |  |  |  |  |  |  |  |
|  | 8 | **CAI - Instrument Air** |  |  |  |  |  |  |  |  |  |
|  | 9 | **CCF - Steam Cycle Chemical Feed** |  |  |  |  |  |  |  |  |  |
|  | 26 | **EHA - High Voltage AC Power System ( > 34kV)** |  |  |  |  |  |  |  |  |  |
|  | 28 | **ELB - Low Voltage AC Power System ( < 300V)** |  |  |  |  |  |  |  |  |  |
|  | 59 | **WWC - Wastewater Collection System** |  |  |  |  |  |  |  |  |  |
|  | 12 | **System Description & Manuals** |  |  |  |  |  |  |  |  |  |
|  | 4 | **Instrumentation & Controls** |  |  |  |  |  |  |  |  |  |
|  | 4 | **Lists** |  |  |  |  |  |  |  |  |  |
|  | 11 | **Data Sheets & Specfications** |  |  |  |  |  |  |  |  |  |
|  | 8 | **Data Sheets** |  |  |  |  |  |  |  |  |  |
|  | 5 | **Analyzers** |  |  |  |  |  |  |  |  |  |
|  | 1 | **Flow (Inline)** |  |  |  |  |  |  |  |  |  |
|  | 4 | **Level** |  |  |  |  |  |  |  |  |  |
|  | 6 | **Indicators & Switches** |  |  |  |  |  |  |  |  |  |
|  | 7 | **Miscellaneous** |  |  |  |  |  |  |  |  |  |
|  | 3 | **Pressure** |  |  |  |  |  |  |  |  |  |
|  | 2 | **Temperature** |  |  |  |  |  |  |  |  |  |
|  | 1 | **Flow (Inline)** |  |  |  |  |  |  |  |  |  |
|  | 2 | **Temperature** |  |  |  |  |  |  |  |  |  |
|  | 3 | **Pressure** |  |  |  |  |  |  |  |  |  |
|  | 4 | **Level** |  |  |  |  |  |  |  |  |  |
|  | 5 | **Analyzers** |  |  |  |  |  |  |  |  |  |
|  | 6 | **Indicators & Switches** |  |  |  |  |  |  |  |  |  |
|  | 7 | **Specifications** |  |  |  |  |  |  |  |  |  |
|  | 1 | **General Specifications** |  |  |  |  |  |  |  |  |  |
|  | 2 | **DCS (BOP) Specification** |  |  |  |  |  |  |  |  |  |
|  | 4 | **Instrument Bulks** |  |  |  |  |  |  |  |  |  |
|  | 3 | **Instrument Enclosures** |  |  |  |  |  |  |  |  |  |
|  | 13 | **3D Modeling** |  |  |  |  |  |  |  |  |  |
|  | 10 | **Arrangements \ Layouts** |  |  |  |  |  |  |  |  |  |
|  | 7 | **Specifications** |  |  |  |  |  |  |  |  |  |
|  | 1 | **General Specifications** |  |  |  |  |  |  |  |  |  |
|  | 2 | **DCS (BOP) Specification** |  |  |  |  |  |  |  |  |  |
|  | 3 | **Instrument Enclosures** |  |  |  |  |  |  |  |  |  |
|  | 4 | **Instrument Bulks** |  |  |  |  |  |  |  |  |  |
|  | 12 | **Studies** |  |  |  |  |  |  |  |  |  |
|  | 9 | **System Description & Manuals** |  |  |  |  |  |  |  |  |  |
|  | 5 | **Control Narratives** |  |  |  |  |  |  |  |  |  |
|  | 1 | **DCS Screens & Graphics** |  |  |  |  |  |  |  |  |  |
|  | 2 | **Factory Witness Test** |  |  |  |  |  |  |  |  |  |
|  | 8 | **Installation Details** |  |  |  |  |  |  |  |  |  |
|  | 3 | **I\O Database** |  |  |  |  |  |  |  |  |  |
|  | 6 | **Loop Diagrams \ Wiring** |  |  |  |  |  |  |  |  |  |
|  | 5 | **ECNs (Engineering Change Notices)** |  | 2025-11-03 | 2026-09-17 |  |  |  |  |  |  |
|  | 1 | **ECN-006 (Turbine Building Design)** |  | 2025-11-03 | 2026-06-29 |  |  |  |  |  |  |
|  | 4 | **ECN Development** |  |  |  |  |  |  |  |  |  |
|  | 5 | **Model Reviews** |  |  |  |  |  |  |  |  |  |
|  | 1 | **CSA** |  | 2025-11-03 | 2026-06-29 |  |  |  |  |  |  |
|  | 1 | **Architectural \ Layouts** |  |  |  |  |  |  |  |  |  |
|  | 2 | **Pile Layouts \ Foundations** |  |  |  |  |  |  |  |  |  |
|  | 1 | **Turbine Bldg - (GA Item# 27 \ 55 \ 71 \ 72 \ 82 \ 83 \ 105) - Pile Layout** |  |  |  |  |  |  |  |  |  |
|  | 2 | **Turbine Bldg - (GA Item# 27 \ 55 \ 71 \ 72 \ 82 \ 83 \ 105) - Foundations** |  |  |  |  |  |  |  |  |  |
|  | 3 | **Structural Steel** |  | 2025-11-03 | 2026-06-29 |  |  |  |  |  |  |
| ZE.CSA.9318 |  | Turbine Building Structural Steel Drawings - Issue Rev. A | 40d | 2025-11-03 A | 2026-06-29 | 120d | 2026-07-06 | 2026-08-28 | -51d | 0d | 2026-06-18 |

| ID | WBS | Activity | Duration | Start | Finish | Remaining | Planned start | Planned finish | Total float | Free float | Expected finish |
| --- | --- | --- | --- | --- | --- | --- | --- | --- | --- | --- | --- |
|  | 2 | **Mechanical** |  |  |  |  |  |  |  |  |  |
|  | 3 | **Electrical** |  |  |  |  |  |  |  |  |  |
|  | 1 | **480V MCC Specification** |  |  |  |  |  |  |  |  |  |
|  | 4 | **Arrangements \ Layouts** |  |  |  |  |  |  |  |  |  |
|  | 3 | **Installation Drawings** |  |  |  |  |  |  |  |  |  |
|  | 2 | **Load List \ Single Lines** |  |  |  |  |  |  |  |  |  |
|  | 2 | **ECN-007 (Construction Power)** |  |  |  |  |  |  |  |  |  |
|  | 4 | **ECN Development** |  |  |  |  |  |  |  |  |  |
|  | 1 | **CSA** |  |  |  |  |  |  |  |  |  |
|  | 2 | **Electrical** |  |  |  |  |  |  |  |  |  |
|  | 3 | **ECN-008 (Pile Redesign)** |  |  |  |  |  |  |  |  |  |
|  | 4 | **ECN Development** |  |  |  |  |  |  |  |  |  |
|  | 1 | **CSA** |  |  |  |  |  |  |  |  |  |
|  | 4 | **ECN-009 (Iso Phase Bus Steel)** |  | 2025-11-03 | 2026-09-17 |  |  |  |  |  |  |
|  | 4 | **ECN Development** |  |  |  |  |  |  |  |  |  |
|  | 1 | **CSA** |  | 2025-11-03 | 2026-09-17 |  |  |  |  |  |  |
| ZE.CSA.9693 |  | Iso Phase Bus Duct Support Steel Drawings - Issue Rev. A | 40d | 2025-11-03 A | 2026-09-17 | 177d | 2026-07-23 | 2026-09-17 | -107d | 0d | 2026-09-17 |
|  | 5 | **ECN-012 (Boiler Feed Pump Building)** |  |  |  |  |  |  |  |  |  |
|  | 4 | **ECN Development** |  |  |  |  |  |  |  |  |  |
|  | 6 | **ECN-XXX (Cooling Fan Module Foundation)** |  |  |  |  |  |  |  |  |  |
|  | 4 | **ECN Development** |  |  |  |  |  |  |  |  |  |
|  | 4 | **Procurement** |  |  |  |  |  |  |  |  |  |
|  | 1 | **Owner Furnished Equipment** |  |  |  |  |  |  |  |  |  |
|  | 8 | **GE Specified Equipment** |  |  |  |  |  |  |  |  |  |
|  | 5 | **BOP** |  |  |  |  |  |  |  |  |  |
|  | 1 | **Bypass Valves** |  |  |  |  |  |  |  |  |  |
|  | 4 | **CEMS** |  |  |  |  |  |  |  |  |  |
|  | 8 | **Systems** |  |  |  |  |  |  |  |  |  |
|  | 1 | **CT** |  |  |  |  |  |  |  |  |  |
|  | 7 | **DCS** |  |  |  |  |  |  |  |  |  |
|  | 6 | **Generator** |  |  |  |  |  |  |  |  |  |
|  | 3 | **HRSG** |  |  |  |  |  |  |  |  |  |
|  | 2 | **ST** |  |  |  |  |  |  |  |  |  |
|  | 2 | **ZEC Specified Equipment** |  |  |  |  |  |  |  |  |  |
|  | 8 | **Civil \ Structural \ Architectural** |  |  |  |  |  |  |  |  |  |
|  | 1 | **Geotech** |  |  |  |  |  |  |  |  |  |
|  | 8 | **Overhead Bridge Crane** |  |  |  |  |  |  |  |  |  |
|  | 4 | **Site Scope of Work** |  |  |  |  |  |  |  |  |  |
|  | 10 | **Pre-Cast Concrete Firewalls** |  |  |  |  |  |  |  |  |  |
|  | 9 | **Pre-Cast Concrete Waste Water Sumps** |  |  |  |  |  |  |  |  |  |
|  | 2 | **Pre-Engineered Buildings** |  |  |  |  |  |  |  |  |  |
|  | 1 | **Admin \ Control \ Warehouse Building** |  |  |  |  |  |  |  |  |  |
|  | 3 | **Aux Boiler Building** |  |  |  |  |  |  |  |  |  |
|  | 4 | **Boiler Feed Pump Building** |  |  |  |  |  |  |  |  |  |
|  | 2 | **Turbine Building** |  |  |  |  |  |  |  |  |  |
|  | 3 | **Mechanical** |  |  |  |  |  |  |  |  |  |
|  | 1 | **Equipment** |  |  |  |  |  |  |  |  |  |
|  | 5 | **ACC - Steam Surface Condenser and Vacuum Equipment (Air Cooled)** |  |  |  |  |  |  |  |  |  |
|  | 4 | **Air Cooled Chillers (HRSG Blowdown)** |  |  |  |  |  |  |  |  |  |
|  | 7 | **Air Cooled Heat Exchanger (Finfan Cooler)** |  |  |  |  |  |  |  |  |  |
|  | 8 | **Ammonia Unloading \ Storage \ Transfer System** |  |  |  |  |  |  |  |  |  |
|  | 12 | **Compressed Air System** |  |  |  |  |  |  |  |  |  |
|  | 13 | **Cycle Chemical Feed System (AVT)** |  |  |  |  |  |  |  |  |  |
|  | 14 | **Cycle Water Sampling Analysis System** |  |  |  |  |  |  |  |  |  |
|  | 1 | **Fire Suppression Sprinkler System** |  |  |  |  |  |  |  |  |  |
|  | 11 | **Fuel Gas Conditioning System** |  |  |  |  |  |  |  |  |  |
|  | 23 | **Fuel Gas Indirect Fired Bath Heater** |  |  |  |  |  |  |  |  |  |
|  | 6 | **Intermediate Pressure Process (Aux) Boilers - Incl. Stack\Tanks\Feed Pumps\Regulation** |  |  |  |  |  |  |  |  |  |
|  | 19 | **Packaged Utility Lift Station** |  |  |  |  |  |  |  |  |  |
|  | 26 | **Pumps - Boiler Feed** |  |  |  |  |  |  |  |  |  |
|  | 9 | **Pumps - Closed Cycle Cooling Water** |  |  |  |  |  |  |  |  |  |
|  | 24 | **Pumps - Condensate** |  |  |  |  |  |  |  |  |  |
|  | 3 | **Pumps - Fire** |  |  |  |  |  |  |  |  |  |
|  | 22 | **Pumps - Horizontal Centrifugal** |  |  |  |  |  |  |  |  |  |
|  | 2 | **Pumps - Rotary Lobe Sump** |  |  |  |  |  |  |  |  |  |
|  | 21 | **Pumps - Sump** |  |  |  |  |  |  |  |  |  |
|  | 20 | **Safety Showers & Eye Wash Stations** |  |  |  |  |  |  |  |  |  |
|  | 16 | **Sample Panel** |  |  |  |  |  |  |  |  |  |
|  | 25 | **Suction Strainers - Boiler Feed \ Condensate Pumps** |  |  |  |  |  |  |  |  |  |
|  | 10 | **Tanks - Field Erected (Demin \ Service Water \ Firewater)** |  |  |  |  |  |  |  |  |  |

| WBS | Activity |
| --- | --- |
| 18 | **Tanks - Shop Fabricated Steel** |
| 17 | **Vent Silencers** |
| 15 | **Water Treatment Oil & Water Separator (Below Grade)** |
| 2 | **Pipe Supports** |
| 5 | **ACC - Steam Surface Condenser and Vacuum Equipment (Air Cooled)** |
| 4 | **Air Cooled Chillers (HRSG Blowdown)** |
| 8 | **Ammonia Unloading \ Storage \ Transfer System** |
| 12 | **Compressed Air System** |
| 13 | **Cycle Chemical Feed System (AVT)** |
| 14 | **Cycle Water Sampling Analysis System** |
| 11 | **Fuel Gas Conditioning System** |
| 23 | **Fuel Gas Indirect Fired Bath Heater** |
| 6 | **Intermediate Pressure Process (Aux) Boilers - Incl. Stack\Tanks\Feed Pumps\Regulation** |
| 19 | **Packaged Utility Lift Station** |
| 26 | **Pumps - Boiler Feed** |
| 9 | **Pumps - Closed Cycle Cooling Water** |
| 24 | **Pumps - Condensate** |
| 7 | **Valves** |
| 6 | **Valves - Ball (Critical)** |
| 7 | **Valves - Ball (General)** |
| 4 | **Valves - Gate \ Globe \ Check (Critical)** |
| 2 | **Valves - Gate \ Globe \ Check (General)** |
| 8 | **Valves - Butterfly** |
| 3 | **Valves - Control** |
| 5 | **Valves - Safety Relief** |
| 3 | **Pumps - Fire** |
| 22 | **Pumps - Horizontal Centrifugal** |
| 21 | **Pumps - Sump** |
| 20 | **Safety Showers & Eye Wash Stations** |
| 16 | **Sample Panel** |
| 10 | **Tanks - Field Erected (Demin \ Service Water \ Firewater)** |
| 18 | **Tanks - Shop Fabricated Steel** |
| 17 | **Vent Silencers** |
| 15 | **Water Treatment Oil & Water Separator (Below Grade)** |
| 1 | **Electrical** |
| 11 | **600Vac Bus Duct (Being Worked with 1500V DC Bus Duct Excitation)** |
| 2 | **1500V DC Bus Excitation (Being Worked with 600 VAC Bus Duct)** |
| 6 | **6.9kV Non-Seg Bus** |
| 18 | **23kV Iso-Phase Bus** |
| 4 | **ACC PDC w\ MCC's (All PDCs Being Worked Together - Bundle to Purchase)** |
| 14 | **Cathodic Protection** |
| 20 | **Communications & Security Systems** |
| 8 | **DC \ UPS** |
| 13 | **Generator Circuit Breaker** |
| 16 | **Heat Trace** |
| 21 | **HRSG PDC w\ MCC's (All PDCs Being Worked Together - Bundle to Purchase)** |
| 19 | **Lightning Protection** |
| 9 | **LV (480V) Auxiliary Pad Mount Transformers** |
| 5 | **LV PDC w\ MCC (All PDCs Being Worked Together - Bundle to Purchase)** |
| 7 | **MV (6.9kV) Pad Mount Transformers** |
| 3 | **MV PDC w\ 6.9kV Switchgear & MCC (All PDCs Being Worked Together - Bundle to Purchase)** |
| 15 | **Relay Protection & Metering** |
| 23 | **RTU** |
| 12 | **Standby Diesel Generator (1250kW)** |
| 17 | **Switchyard Engineering Option** |
| 10 | **Wire & Cable** |
| 22 | **Fire Detection - Electrical** |
| 1 | **LV (480V) MCC's & Switchgear (All PDCs Being Worked Together - Bundle to Purchase)** |
| 4 | **Instrumentation** |
| 11 | **Data Sheets** |
| 5 | **Analyzers** |
| 1 | **Flow Meters (Inline)** |
| 6 | **Indicators & Switches** |
| 4 | **Level Gauges** |
| 7 | **Miscellaneous Instruments** |
| 3 | **Pressure Gauges** |
| 2 | **Temperature Gauges** |
| 7 | **Specifications** |
| 2 | **DCS (BOP) Specification** |
| 1 | **Field Instruments** |

| WBS | Activity |
| --- | --- |
| 3 | **Instrument Enclosures** |
| 7 | **Valves** |
| 6 | **Valves - Ball (Critical)** |
| 7 | **Valves - Ball (General)** |
| 4 | **Valves - Gate \ Globe \ Check (Critical)** |
| 2 | **Valves - Gate \ Globe \ Check (General)** |
| 8 | **Valves - Butterfly** |
| 3 | **Valves - Control** |
| 5 | **Valves - Safety Relief** |
| 8 | **GE Specified Equipment** |
| 5 | **BOP** |
| 1 | **Bypass Valves** |
| 4 | **CEMS** |
| 8 | **Systems** |
| 1 | **CT** |
| 7 | **DCS** |
| 6 | **Generator** |
| 3 | **HRSG** |
| 2 | **ST** |
| 5 | **LOE Activities (Meetings \ Coordination \ Management \ Support)** |
| 3 | **CSA** |
| 4 | **Mechanical** |
| 5 | **Electrical** |
| 6 | **Instrumentation** |
| 7 | **Project Management \ Project Controls \ Project Support** |
| 1 | **Procurement** |
| 8 | **ESS** |
| 9 | **Deleted Activities** |
| 4 | **Interface Milestones** |
| 8 | **Atmospheric ST Drains Tank and Pumps - (GA Item# 70) - Foundations** |
| 5 | **HRSG - CEMS - (GA Item# 25) - Foundations** |
| 10 | **Stator Cooling Water Skid \ Air Processing Unit - (GA Item# 81) - Foundations** |
| 2 | **CSA** |
| 8 | **Atmospheric ST Drains Tank and Pumps - (GA Item# 70) - Foundations** |
| 2 | **Control \ Admin \ Warehouse Bldg - (GA Item# 11\ 17) - Pile Layout** |
| 5 | **HRSG - CEMS - (GA Item# 25) - Foundations** |
| 3 | **LP Economizer Recirc Pumps - (GA Item# 24) - Foundations** |
| 1 | **Service \ Fire Protection Water Tank - (GA Item# 8) - Pile Layout** |
| 6 | **Service \ Fire Protection Water Tank - (GA Item# 8) - Foundations** |
| 10 | **Stator Cooling Water Skid \ Air Processing Unit - (GA Item# 81) - Foundations** |
| 2 | **Engineering** |
| 6 | **CSA** |
| 10 | **Fencing & Security** |
| 5 | **Foundations** |
| 50 | **Atmospheric ST Drains Tank and Pumps - (GA Item# 70)** |
| 2 | **Control \ Admin \ Warehouse Bldg - (GA Item# 11\ 17) - Pile Layout** |
| 1 | **HRSG CEMS - (GA Item# 25) - Foundations** |
| 3 | **LP Economizer Recirc Pumps - (GA Item# 24) - Foundations** |
| 21 | **Service \ Fire Protection Water Tank - (GA Item# 8)** |
| 1 | **Service \ Fire Protection Water Tank - (GA Item# 8) - Pile Layout** |
| 2 | **Service \ Fire Protection Water Tank - (GA Item# 8) - Foundations** |
| 57 | **Stator Cooling Water Skid \ Air Processing Unit - (GA Item# 81)** |
| 3 | **Grading \ Drainage** |
| 6 | **Specifications** |
| 2 | **Turbine Building (PEMB Package)** |
| 4 | **Stormwater** |
| 5 | **Mechanical** |
| 1 | **P&IDs** |
| 3 | **BBS - Boiler Blowdown** |
| 2 | **Lists** |
| 3 | **BBS - Boiler Blowdown** |
| 3 | **Piping** |
| 3 | **BBS - Boiler Blowdown (LBC)** |
| 1 | **BBS - Boiler Blowdown (LBH)** |
| 2 | **BBS - Boiler Blowdown (SBH)** |
| 4 | **Pipe Supports** |
| 3 | **BBS - Boiler Blowdown (LBH)** |
| 1 | **BBS - Boiler Blowdown (SBH)** |
| 5 | **System Description & Manuals** |
| 50 | **Atmospheric ST Drains Tank and Pumps - (GA Item# 70)** |

| WBS | Activity |
| --- | --- |
| 3 | **Grading \ Drainage** |
| 57 | **Stator Cooling Water Skid \ Air Processing Unit - (GA Item# 81)** |
| 4 | **Stormwater** |
| 2 | **Turbine Building (PEMB Package)** |
| 1 | **Electrical** |
| 2 | **Specifications** |
| 1 | **LV (480V) MCC's & Switchgear (All PDCs Being Worked Together - Bundle to Purchase)** |
| 3 | **Procurement** |
| 3 | **Owner Furnished Equipment** |
| 1 | **GE Specified Equipment** |
| 4 | **Zachry Specified Equipment** |
| 22 | **Fire Detection - Electrical** |
| 2 | **Turbine Building** |
| 1 | **CSA** |
| 2 | **Turbine Building** |
| 3 | **Electrical** |
| 22 | **Fire Detection - Electrical** |
| 13 | **Generator Circuit Breaker** |
| 1 | **LV (480V) MCC's & Switchgear (All PDCs Being Worked Together - Bundle to Purchase)** |

# WOLF SUMMIT - KINDLE INTEGRATED SCHEDULE

Schedule from Primavera P6, 2025-03-18 to 2028-08-18, data date 2025-11-17, A marks actual dates.

## Calendars

- 10hr 7day No Holidays: Mon-Sun 8:00-18:00.
- 7 Day Workweek-2: Mon-Sun 07:00-17:00. Exceptions (off unless hours are given): 2025-05-31, 2025-06-14, 2025-06-28, 2025-07-04, 2025-07-12, 2025-07-26, 2025-08-09.

## Schedule

| ID | WBS | Activity | Type | Duration | Start | Finish | Predecessors | Remaining | Planned start | Planned finish | Total float | Free float | Constraint | Expected finish |
| --- | --- | --- | --- | --- | --- | --- | --- | --- | --- | --- | --- | --- | --- | --- |
|  | U1 | **Owner** |  |  | 2025-03-18 | 2028-07-20 |  |  |  |  |  |  |  |  |
|  | OWMS | **Owner Obligations** |  |  | 2028-01-19 | 2028-01-19 |  |  |  |  |  |  |  |  |
| L2-MILO-106 |  | Mechanical Completion | milestone | 0d | 2028-01-19 | 2028-01-19 | WSC-CON-MIL1090 (other project) FF |  |  |  | 441d |  |  |  |
|  | PRMS | **Project Major Milestones** |  |  |  |  |  |  |  |  |  |  |  |  |
|  | CMMS | **Contractor Major Milestones** |  |  | 2026-07-08 | 2028-07-20 |  |  |  |  |  |  |  |  |
|  | 1 | **Baker** |  |  |  |  |  |  |  |  |  |  |  |  |
|  | 2 | **WSC** |  |  | 2026-07-08 | 2028-07-20 |  |  |  |  |  |  |  |  |
| PCL-HRSG-MEC-1040 |  | Set First HRSG Module (JV Milestone Interface) | milestone | 0d | 2026-07-08 | 2026-07-08 | WSC-CON-MIL1030 (other project) SS |  |  |  | 1001.5d | 771.5d |  |  |
| PCL-CTG-MEC-1040 |  | Begin Erection Combustion Turbine Air Intake (JV Milestone Interface) | milestone | 0d | 2027-03-14 | 2027-03-14 | WSC-CT-MEC-1080 (other project) |  |  |  | 752.2d | 522.2d |  |  |
| PCL-GEN-STR-1000 |  | Structural Steel Works Complete (JV Milestone Interface) | milestone | 0d | 2027-10-26 | 2027-10-26 | WSC-BOP-STL-1010 (other project) FF, WSC-BOP-STL-1030 (other project) FF, WSC-BOP-STL-1020 (other project) FF, WSC-BOP-STL-1000 (other project) FF, WSC-BOP-STL-1040 (other project) FF |  |  |  | 526d | 296d |  |  |
| PCL-HRSG-PIP-1080 |  | Complete Hydro - HRSG (JV Milestone Interface) | milestone | 0d | 2027-11-05 | 2027-11-05 | WSC-CON-MIL1060 (other project) FF |  |  |  | 516.1d | 286.1d |  |  |
| PCL-GEN-E&I-1030 |  | WSC Mechanical Completion (JV Milestone Interface) | milestone | 0d | 2028-01-19 | 2028-01-19 | WSC-CON-MIL1090 (other project) FF |  |  |  | 113.9d | 0d | finish on or before 2028-05-12 |  |
| PCL-GEN-PIP-1010 |  | Pipe Works Complete (JV Milestone Interface) | milestone | 0d | 2028-05-05 | 2028-05-05 | WSC-BOP-PIP-1270 (other project) FF, WSC-BOP-PIP-1150 (other project) FF, WSC-BOP-PIP-1210 (other project) FF, WSC-BOP-PIP-1010 (other project) FF, WSC-BOP-PIP-1260 (other project) FF, WSC-BOP-PIP-1140 (other project) FF, WSC-BOP-PIP-1170 (other project) FF, WSC-BOP-PIP-1200 (other project) FF, WSC-BOP-PIP-1230 (other project) FF, WSC-BOP-PIP-1290 (other project) FF, WSC-BOP-PIP-1000 (other project) FF, WSC-BOP-PIP-1030 (other project) FF, WSC-BOP-PIP-1280 (other project) FF, WSC-BOP-PIP-1160 (other project) FF, WSC-BOP-PIP-1220 (other project) FF, WSC-BOP-PIP-1020 (other project) FF, WSC-BOP-PIP-1320 (other project) FF, WSC-BOP-PIP-1180 (other project) FF, WSC-BOP-PIP-1240 (other project) FF, WSC-BOP-PIP-1300 (other project) FF, WSC-BOP-PIP-1040 (other project) FF, WSC-BOP-PIP-1050 (other project) FF, WSC-BOP-PIP-1070 (other project) FF, WSC-BOP-PIP-1120 (other project) FF, WSC-BOP-PIP-1060 (other project) FF, WSC-BOP-PIP-1090 (other project) FF, WSC-BOP-PIP-1130 (other project) FF, WSC-BOP-PIP-1080 (other project) FF, WSC-BOP-PIP-1100 (other project) FF, WSC-BOP-PIP-1110 (other project) FF, WSC-BOP-PIP-1190 (other project) FF, WSC-BOP-PIP-1250 (other project) FF, WSC-BOP-PIP-1310 (other project) FF |  |  |  | -85.95d | 104d | finish on or before 2028-02-09 |  |
| PCL-GEN-MEC-1000 |  | Mechanical Works Complete (JV Milestone Interface) | milestone | 0d | 2028-05-11 | 2028-05-11 | WSC-ST-MEC-1000 (other project) FF, WSC-ST-MEC-1030 (other project) FF, WSC-ST-MEC-1010 (other project) FF, WSC-ST-MEC-1020 (other project) FF, WSC-ST-MEC-1040 (other project) FF, WSC-ST-MEC-1190 (other project) FF, WSC-ST-MEC-1200 (other project) FF, WSC-ST-MEC-1070 (other project) FF, WSC-ST-MEC-1060 (other project) FF, WSC-ST-MEC-1090 (other project) FF, WSC-ST-MEC-1050 (other project) FF, WSC-ST-MEC-1080 (other project) FF, WSC-ST-MEC-1120 (other project) FF, WSC-ST-MEC-1110 (other project) FF, WSC-ST-MEC-1140 (other project) FF, WSC-ST-MEC-1100 (other project) FF, WSC-ST-MEC-1130 (other project) FF, WSC-ST-MEC-1160 (other project) FF, WSC-ST-MEC-1180 (other project) FF, WSC-ST-MEC-1150 (other project) FF, WSC-ST-MEC-1170 (other project) FF, WSC-ST-MEC-1210 (other project) FF, WSC-ST-MEC-1220 (other project) FF, WSC-ST-MEC-1240 (other project) FF, WSC-ST-MEC-1230 (other project) FF, WSC-HRSG-MEC-1440 (other project) FF, WSC-HRSG-MEC-1220 (other project) FF, WSC-HRSG-MEC-1230 (other project) FF, WSC-HRSG-MEC-1240 (other project) FF, WSC-HRSG-MEC-1250 (other project) FF, WSC-HRSG-MEC-1170 (other project) FF, WSC-HRSG-MEC-1260 (other project) FF, WSC-HRSG-MEC-1270 (other project) FF, WSC-HRSG-MEC-1280 (other project) FF, WSC-HRSG-MEC-1180 (other project) FF, WSC-HRSG-MEC-1290 (other project) FF, WSC-HRSG-MEC-1160 (other project) FF, WSC-HRSG-MEC-1390 (other project) FF, WSC-HRSG-MEC-1300 (other project) FF, WSC-HRSG-MEC-1310 (other project) FF, WSC-HRSG-MEC-1400 (other project) FF, WSC-HRSG-MEC-1200 (other project) FF, WSC-HRSG-MEC-1320 (other project) FF, WSC-HRSG-MEC-1330 (other project) FF, WSC-HRSG-MEC-1340 (other project) FF, WSC-HRSG-MEC-1190 (other project) FF, WSC-HRSG-MEC-1350 (other project) FF, WSC-HRSG-MEC-1410 (other project) FF, WSC-HRSG-MEC-1360 (other project) FF, WSC-HRSG-MEC-1000 (other project) FF, WSC-HRSG-MEC-1370 (other project) FF, WSC-HRSG-MEC-1010 (other project) FF, WSC-HRSG-MEC-1380 (other project) FF, WSC-HRSG-MEC-1040 (other project) FF, WSC-HRSG-MEC-1050 (other project) FF, WSC-HRSG-MEC-1150 (other project) FF, WSC-HRSG-MEC-1020 (other project) FF, WSC-HRSG-MEC-1420 (other project) FF, WSC-HRSG-MEC-1060 (other project) FF, WSC-HRSG-MEC-1030 (other project) FF, WSC-HRSG-MEC-1070 (other project) FF, WSC-HRSG-MEC-1100 (other project) FF, WSC-HRSG-MEC-1090 (other project) FF, WSC-HRSG-MEC-1110 (other project) FF, WSC-HRSG-MEC-1210 (other project) FF, WSC-HRSG-MEC-1120 (other project) FF, WSC-HRSG-MEC-1130 (other project) FF, WSC-HRSG-MEC-1080 (other project) FF, WSC-HRSG-MEC-1140 (other project) FF, WSC-HRSG-MEC-1430 (other project) FF |  |  |  | -43.95d | 98d | finish on or before 2028-03-28 |  |
| PCL-GEN-SUB-1020 |  | Insulation Works Complete (JV Milestone Interface) | milestone | 0d | 2028-05-11 | 2028-05-11 | WSC-HRSG-MEC-1310 (other project) FF, WSC-HRSG-SUB-1010 (other project) FF, WSC-HRSG-MEC-1150 (other project) FF, WSC-CT-MEC-1140 (other project) FF, WSC-ST-SUB-1010 (other project) FF, WSC-HRSG-SUB-1000 (other project) FF, WSC-HRSG-SUB-1020 (other project) FF, WSC-CT-SUB-1000 (other project) FF, WSC-CON-MIL1110 (other project) FF, WSC-ST-MEC-1230 (other project) FF |  |  |  | 328d | 98d |  |  |
| PCL-GEN-E&I-1010 |  | Loop checks Electrical | milestone | 0d | 2028-05-18 | 2028-05-18 | WSC-BOP-E&I-1330 (other project) FF, WSC-BOP-E&I-1780 (other project) FF, WSC-BOP-E&I-1480 (other project) FF, WSC-BOP-E&I-1160 (other project) FF, WSC-BOP-E&I-1630 (other project) FF, WSC-BOP-E&I-1930 (other project) FF |  |  |  | 321d | 91d |  |  |
| PCL-GEN-E&I-1020 |  | Electrical & Instrumentation Works Complete (JV Milestone Interface) | milestone | 0d | 2028-05-18 | 2028-05-18 | WSC-BOP-E&I-1840 (other project) FF, WSC-BOP-E&I-1600 (other project) FF, WSC-BOP-E&I-1330 (other project) FF, WSC-BOP-E&I-1580 (other project) FF, WSC-BOP-E&I-1540 (other project) FF, WSC-BOP-E&I-1670 (other project) FF, WSC-BOP-E&I-1700 (other project) FF, WSC-BOP-E&I-1750 (other project) FF, WSC-BOP-E&I-1240 (other project) FF, WSC-BOP-E&I-1730 (other project) FF, WSC-BOP-E&I-1860 (other project) FF, WSC-BOP-E&I-1690 (other project) FF, WSC-BOP-E&I-1910 (other project) FF, WSC-BOP-E&I-1160 (other project) FF, WSC-BOP-E&I-1560 (other project) FF, WSC-BOP-E&I-1610 (other project) FF, WSC-BOP-E&I-1710 (other project) FF, WSC-BOP-E&I-1480 (other project) FF, WSC-BOP-E&I-1780 (other project) FF, WSC-BOP-E&I-1760 (other project) FF, WSC-BOP-E&I-1930 (other project) FF, WSC-BOP-E&I-1630 (other project) FF, WSC-BOP-E&I-2070 (other project) FF |  |  |  | 321d | 91d |  |  |
| MST1120 |  | Prime General Contractor Demobilization (JV Milestone Interface) | milestone | 0d | 2028-07-20 | 2028-07-20 | WSC-CON-MIL1120 (other project) FF |  |  |  | 258d |  |  |  |
|  | PIE | **Owner Supplied Power Island Equipment and Engineering** |  |  | 2025-03-18 | 2027-05-05 |  |  |  |  |  |  |  |  |
|  | ENG | **GE Drawings Schedule** |  |  |  |  |  |  |  |  |  |  |  |  |
|  | MS | **Contract Milestones** |  |  |  |  |  |  |  |  |  |  |  |  |
|  | 1 | **Gas Turbine Drawings Schedule and Descriptions** |  |  |  |  |  |  |  |  |  |  |  |  |
|  | 2 | **Generator Drawing Schedule and Descriptions** |  |  |  |  |  |  |  |  |  |  |  |  |
|  | 3 | **Steam Turbine Drawing Schedule and Descriptions** |  |  |  |  |  |  |  |  |  |  |  |  |
|  | 4 | **Heat Recovery Steam Generator (HRSG) Drawing Schedule and Descriptions** |  |  |  |  |  |  |  |  |  |  |  |  |
|  | 5 | **HRSG Deign Input** |  |  |  |  |  |  |  |  |  |  |  |  |
|  | 6 | **DCS Drawing Schedule and Descriptions** |  |  |  |  |  |  |  |  |  |  |  |  |
|  | 7 | **BOP - Bypass Valves Drawing Schedule and Descriptions** |  |  |  |  |  |  |  |  |  |  |  |  |
|  | 8 | **BOP - CEMS Drawing Schedule and Descriptions** |  |  |  |  |  |  |  |  |  |  |  |  |
|  | 9 | **BOP - Systems Drawing Schedule and Descriptions** |  |  |  |  |  |  |  |  |  |  |  |  |
|  | GEMAJ | **GE MAJOR Equipment and Deliveries** |  |  | 2025-03-18 | 2027-05-05 |  |  |  |  |  |  |  |  |
| GE-MAJ-02 |  | (GE) GT / ST Foundation Plates (Guaranteed Delivery Date 01-18-2026) |  | 257d | 2025-03-18 A | 2026-01-18 |  | 63d | 2025-05-07 | 2026-01-18 | 210d | 0d |  | 2026-01-18 |
| GE-MAJ-03 |  | (GE) Generator Foundation Plates (Guaranteed Delivery Date 02-01-2026) |  | 271d | 2025-03-18 A | 2026-02-01 |  | 77d | 2025-05-07 | 2026-02-01 | 513.9d | 0d |  | 2026-02-01 |
| GE-MAJ-04 |  | (GE) HRSG 1 Structural Steel/Casing (Guaranteed Date 05-24-26) |  | 382.8d | 2025-03-18 A | 2026-05-24 |  | 188.8d | 2025-05-07 | 2026-05-24 | -158.9d | 0d |  | 2026-05-24 |
| GE-MAJ-05 |  | (GE) HRSG 1 Modules (Guaranteed Date 07-26-26); GE looking at MAY |  | 446d | 2025-03-18 A | 2026-07-26 |  | 252d | 2025-05-07 | 2026-07-26 | -152.1d | 0d |  | 2026-07-26 |
| GE-MAJ-06 |  | (GE) HRSG 1 Drums (Guaranteed Date 11-22-26) |  | 565d | 2025-03-18 A | 2026-11-22 |  | 371d | 2025-05-07 | 2026-11-22 | -171.1d | 0d |  | 2026-11-22 |
| GE-MAJ-07 |  | (GE) HP Steam Turbine Module Assembled (Guaranteed Delivery Date 05-05-2027) |  | 729d | 2025-03-18 A | 2027-05-04 |  | 534d | 2025-05-07 | 2027-05-05 | -153.1d | 0d |  | 2027-05-04 |
| GE-MAJ-08 |  | (GE) Electric Generator Stator (Guaranteed Date 04-06-27) |  | 698d | 2025-03-18 A | 2027-04-04 |  | 504d | 2025-05-07 | 2027-04-04 | -158.1d | 0d |  | 2027-04-04 |
| GE-MAJ-09 |  | (GE) Steam Turbine Bearing Pedestals / Standards (Guaranteed Date 02-24-27) |  | 659d | 2025-03-18 A | 2027-02-24 |  | 465d | 2025-05-07 | 2027-02-24 | -51d | 0d |  | 2027-02-24 |
| GE-MAJ-10 |  | (GE) CTG Turbine (Guranteed Date 03-06-27) |  | 669d | 2025-03-18 A | 2027-03-06 |  | 475d | 2025-05-07 | 2027-03-06 | -180.9d | 0d |  | 2027-03-06 |
| GE-MAJ-11 |  | (GE) Electric Generator Rotor (Guaranteed Date 04-01-27) |  | 694.4d | 2025-03-18 A | 2027-04-01 |  | 500.4d | 2025-05-07 | 2027-04-01 | -149.5d | 0d |  | 2027-04-01 |
| GE-MAJ-12 |  | (GE) IP / LP Steam Turbine Rotor (Guaranteed Date 05-05-27) |  | 729d | 2025-03-18 A | 2027-05-05 |  | 535d | 2025-05-07 | 2027-05-05 | -121d | 0d |  | 2027-05-05 |
| GE-MAJ-13 |  | (GE) LP Steam Turbine Inner & Outer Casings (Guaranteed Date 03-24-27) |  | 686.8d | 2025-03-18 A | 2027-03-24 |  | 492.8d | 2025-05-07 | 2027-03-24 | -155.9d | 0d |  | 2027-03-24 |
| GE-MAJ-14 |  | (GE) IP Steam Turbine Inner & Outer Casings (Guaranteed Date 03-24-27) |  | 686.8d | 2025-03-18 A | 2027-03-24 |  | 492.8d | 2025-05-07 | 2027-03-24 | -78.8d | 0d |  | 2027-03-24 |

| ID | WBS | Activity | Duration | Start | Finish | Remaining | Planned start | Planned finish | Total float | Free float | Expected finish | Calendar |
| --- | --- | --- | --- | --- | --- | --- | --- | --- | --- | --- | --- | --- |
|  | GEMIN | **GE MINOR Equipment and Deliveries** |  | 2025-03-18 | 2027-02-07 |  |  |  |  |  |  |  |
| GE-MIN-16 |  | (GE) CEMS (Guaranteed Date 08-16-26) | 466.8d | 2025-03-18 A | 2026-08-16 | 272.8d | 2025-05-07 | 2026-08-16 | -72.8d | 0d | 2026-08-16 |  |
| GE-MIN-17 |  | (GE) Steam Bypass Valves (Guaranteed Date 11-29-26) | 571.8d | 2025-03-18 A | 2026-11-29 | 377.8d | 2025-05-07 | 2026-11-29 | 60.2d | 0d | 2026-11-29 |  |
| GE-MIN-22 |  | (GE) HRSG 1 LB Piping (Guaranteed Date 11-22-26) | 565d | 2025-03-18 A | 2026-11-22 | 371d | 2025-05-07 | 2026-11-22 | -34.1d | 0d | 2026-11-22 |  |
| GE-MIN-23 |  | (GE) HRSG 1 SB Piping (Guaranteed Delivery Date 2-7-27) | 642d | 2025-03-18 A | 2027-02-07 | 448d | 2025-05-07 | 2027-02-07 | 8.9d | 0d | 2027-02-07 |  |
| GE-MIN-24 |  | (GE) HRSG Inlet Duct (Guaranteed Date 08-09-26 | 460d | 2025-03-18 A | 2026-08-09 | 266d | 2025-05-07 | 2026-08-09 | -59d | 0d | 2026-08-09 |  |
| GE-MIN-25 |  | (GE) HRSG 1 Stack and Breeching (Guaranteed Delivery Date 05-24-26) | 383d | 2025-03-18 A | 2026-05-24 | 189d | 2025-05-07 | 2026-05-24 | 32d | 0d | 2026-05-24 |  |
| GE-MIN-28 |  | (GE) HRSG Penthouse Materials (10-25-26) | 537d | 2025-03-18 A | 2026-10-25 | 343d | 2025-05-07 | 2026-10-25 | -143d | 0d | 2026-10-25 |  |
|  | OPER | **Owner Supplied Permits** |  |  |  |  |  |  |  |  |  |  |
|  | BOPE | **Owner Supplied BOP Equipment** |  | 2025-07-08 | 2027-12-24 |  |  |  |  |  |  |  |
|  | 1 | **MAJOR MECHANICAL** |  | 2026-02-17 | 2027-04-08 |  |  |  |  |  |  |  |
|  | AUXB | **5011 - Auxiliary Boiler Package (Including Stack, Tanks, Feed Pumps, Regulation)** |  | 2026-02-17 | 2026-12-23 |  |  |  |  |  |  |  |
| MST1860 |  | Auxiliary Boiler - Procure/Deliver | 310d | 2026-02-17 | 2026-12-23 |  |  |  | 29.1d | 0d |  | 7 Day Workweek-2 |
|  | CCWHX | **5390 - CCW Heat Exchangers (Fin Fan Coolers)** |  | 2026-03-26 | 2027-03-24 |  |  |  |  |  |  |  |
| MST1830 |  | CCW Heat Exchangers - Procure/Deliver | 364d | 2026-03-26 | 2027-03-24 |  |  |  | -163d | 0d |  | 7 Day Workweek-2 |
|  | FG3 | **5040 - Fuel Gas Indirect Bath Heater** |  | 2026-07-24 | 2027-04-08 |  |  |  |  |  |  |  |
| MST3510 |  | Fuel Gas Heater - Procure/Deliver | 259d | 2026-07-24 | 2027-04-08 |  |  |  | -143d | 0d |  | 7 Day Workweek-2 |
|  | FG1 | **5041 - Fuel Gas reg valves / isolation valves (regulating station) - Aux Boiler and Duct Burner** |  | 2026-07-24 | 2027-04-08 |  |  |  |  |  |  |  |
| MST3460 |  | Fuel Gas Valves Aux Boiler and TB - Procure/Deliver | 259d | 2026-07-24 | 2027-04-08 |  |  |  | -143d | 0d |  | 7 Day Workweek-2 |
|  | FG2 | **5041 - Fuel Gas reg valves / isolation valves (regulating station) - Main** |  | 2026-07-24 | 2027-04-08 |  |  |  |  |  |  |  |
| MST3470 |  | Fuel Gas Valves Main - Procure/Deliver | 259d | 2026-07-24 | 2027-04-08 |  |  |  | -143d | 0d |  | 7 Day Workweek-2 |
|  | FG31 | **5041 - Fuel Gas Knockout Drum** |  | 2026-07-24 | 2027-04-08 |  |  |  |  |  |  |  |
| MST4260 |  | Fuel Gas Heater - Procure/Deliver | 259d | 2026-07-24 | 2027-04-08 |  |  |  | -143d | 0d |  | 7 Day Workweek-2 |
|  | FG32 | **5040 - Fuel Gas Drains Tank** |  | 2026-07-24 | 2027-04-08 |  |  |  |  |  |  |  |
| MST4270 |  | Fuel Gas Heater - Procure/Deliver | 259d | 2026-07-24 | 2027-04-08 |  |  |  | -143d | 0d |  | 7 Day Workweek-2 |

| ID | WBS | Activity | Duration | Start | Finish | Total float | Free float | Calendar |
| --- | --- | --- | --- | --- | --- | --- | --- | --- |
|  | ACC | **5050 - Air Cooled Condenser (ACC)** |  | 2026-12-20 | 2027-02-17 |  |  |  |
| DEL-5026 |  | Air Cooled Condenser (ACC) - First Delivery of 8 Cells of Materials | 60d | 2026-12-20 | 2027-02-17 | -216.9d | 0d | 7 Day Workweek-2 |
|  | C | **Commercial Submittals** |  |  |  |  |  |  |
|  | T | **Technical Submittals** |  |  |  |  |  |  |
|  | M | **Mechanical Submittals** |  |  |  |  |  |  |
|  | S | **Structural Submittals** |  |  |  |  |  |  |
|  | A | **Archictectural Submittals** |  |  |  |  |  |  |
|  | IC | **I&C Submittals** |  |  |  |  |  |  |
|  | E | **Electrical Submittals** |  |  |  |  |  |  |
|  | SJ | **SJAE** |  |  |  |  |  |  |
|  | VP | **Liquid Ring Vacuum Pumps** |  |  |  |  |  |  |
|  | CR | **Condensate ReceiverTank** |  |  |  |  |  |  |
|  | 2 | **MINOR MECHANICAL** |  | 2026-01-16 | 2027-07-24 |  |  |  |
|  | SHOWER | **5150 - Safety Showers and Eyewash Stations ( w/ heaters )** |  | 2027-01-16 | 2027-07-19 |  |  |  |
| MST3530 |  | Safety Showers and Eyewash Stations - Procure/Deliver | 185d | 2027-01-16 | 2027-07-19 | 116d | 0d | 7 Day Workweek-2 |
|  | BFWP | **5162 - Boiler Feed Water Pumps HP (BFW)** |  | 2026-01-16 | 2027-01-02 |  |  |  |
| MST1890 |  | Boiler Feed Water Pumps - Procure/Deliver | 352d | 2026-01-16 | 2027-01-02 | 33.1d | 6d | 7 Day Workweek-2 |
|  | BFWPST | **5162 - Suction Strainers - Boiler Feed Water Pumps** |  | 2026-08-29 | 2026-12-17 |  |  |  |
| MST3540 |  | Boiler Feed Water Pumps Suction Strainers - Procure/Deliver | 111d | 2026-08-29 | 2026-12-17 | 49.1d | 0d | 7 Day Workweek-2 |
|  | CONDP | **5163 - Condensate Pumps (100% Base Load)** |  | 2026-01-22 | 2027-01-10 |  |  |  |
| MST2670 |  | Condensate Pumps - Procure/Deliver | 354d | 2026-01-22 | 2027-01-10 | 278d | 7d | 7 Day Workweek-2 |
|  | CONDPST | **5163 - Suction Strainers - Condensate Pumps** |  | 2026-09-05 | 2027-07-24 |  |  |  |
| MST3550 |  | Condensate Pumps Suction Strainers - Procure/Deliver | 323d | 2026-09-05 | 2027-07-24 | 97d | 1d | 7 Day Workweek-2 |
|  | CCWP | **5168 - Closed Cooling Water Pumps w/ Motors - (2X100%)** |  | 2026-06-02 | 2027-03-03 |  |  |  |
| MST2460 |  | Closed Coolng Water Pumps - Procure/Deliver | 275d | 2026-06-02 | 2027-03-03 | -156d | 0d | 7 Day Workweek-2 |

| ID | WBS | Activity | Duration | Start | Finish | Total float | Free float | Calendar |
| --- | --- | --- | --- | --- | --- | --- | --- | --- |
|  | CONDDR | **5168 - Pumps, Condenate Drains Forwarding - Skid (2X100%)** |  | 2026-04-15 | 2027-01-14 |  |  |  |
| MST3570 |  | Condensate Drains Forwarding Pumps - Procure/Deliver | 275d | 2026-04-15 | 2027-01-14 | -174d | 0d | 7 Day Workweek-2 |
|  | SWP | **5168 - Pumps , Service Water Forwarding - Skid (2x100%)** |  | 2026-06-02 | 2027-03-03 |  |  |  |
| MST2010 |  | Service Water Forwarding Pumps - Procure/Deliver | 275d | 2026-06-02 | 2027-03-03 | -30d | 0d | 7 Day Workweek-2 |
|  | DWP | **5168 - Pumps, Demin Water Forwarding - Skid (2x100%)** |  | 2026-06-02 | 2027-03-03 |  |  |  |
| MST2100 |  | Demineralized Water Forwarding Pump - Procure/Deliver | 275d | 2026-06-02 | 2027-03-03 | -44d | 0d | 7 Day Workweek-2 |
|  | WWP | **5168 - Pumps, Wastewater** |  | 2026-06-02 | 2027-03-03 |  |  |  |
| MST3590 |  | Waster Water Pumps - Procure/Deliver | 275d | 2026-06-02 | 2027-03-03 | -44d | 0d | 7 Day Workweek-2 |
|  | SUMP | **5168 - Pumps, sumps Miscellaneous** |  | 2026-05-30 | 2027-02-28 |  |  |  |
| MST3600 |  | Sump Pumps Misc - Procure/Deliver | 275d | 2026-05-30 | 2027-02-28 | -104d | 0d | 7 Day Workweek-2 |
|  | SUMPHRSG | **5168 - Pumps, sumps HRSG Blowdown** |  | 2026-05-30 | 2027-02-28 |  |  |  |
| MST3630 |  | Sump Pump HRSG Blowdown - Procure/Deliver | 275d | 2026-05-30 | 2027-02-28 | -160d | 0d | 7 Day Workweek-2 |
|  | SUMPOIL | **5168 - Pumps, sumps Turbine Bldg - Oily Water** |  | 2026-05-30 | 2027-02-28 |  |  |  |
| MST3610 |  | Sump Pump TB Oily Water - Procure/Deliver | 275d | 2026-05-30 | 2027-02-28 | -146d | 0d | 7 Day Workweek-2 |
|  | SUMPWW | **5168 - Pumps, sumps Facility Wastewater** |  | 2026-05-30 | 2027-02-28 |  |  |  |
| MST3620 |  | Sump Pump Facility Wastewater - Procure/Deliver | 275d | 2026-05-30 | 2027-02-28 | -146d | 0d | 7 Day Workweek-2 |
|  | AMMFW | **5022 - Ammonia Unloading \ Storage \ Transfer System** |  | 2026-04-18 | 2027-01-17 |  |  |  |
| MST3580 |  | Ammonia Forwarding Pumps - Procure/Deliver | 275d | 2026-04-18 | 2027-01-17 | -13d | 0d | 7 Day Workweek-2 |
|  | VALVE1 | **4116 - Valves - Gate, Globe, Ball, Butterfly & Check** |  |  |  |  |  |  |
|  | VALVE2 | **4121 - Valves, Control** |  |  |  |  |  |  |
|  | ADMIN111 | **4125 - Valve, Safety Relief** |  |  |  |  |  |  |
|  | FWP | **5171 - Fire Water Pump House** |  | 2026-03-11 | 2026-10-06 |  |  |  |
| MST1980 |  | Fire Water Pump House - Procure/Deliver | 210d | 2026-03-11 | 2026-10-06 | 94d | 0d | 7 Day Workweek-2 |
|  | SAMP | **5182 - Steam & Water Sampling System** |  | 2026-08-21 | 2027-03-30 |  |  |  |
| MST2040 |  | Steam and Water Sampling System - Procure/Deliver | 222d | 2026-08-21 | 2027-03-30 | -118d | 0d | 7 Day Workweek-2 |

| ID | WBS | Activity | Type | Duration | Start | Finish | Remaining | Planned start | Planned finish | Total float | Free float | Constraint | Expected finish | Calendar |
| --- | --- | --- | --- | --- | --- | --- | --- | --- | --- | --- | --- | --- | --- | --- |
|  | CHEMCYCLE | **5184 - Chemical Feed System - Cycle** |  |  | 2026-08-21 | 2027-03-30 |  |  |  |  |  |  |  |  |
| MST3660 |  | Chemical Feed Cycle - Procure/Deliver |  | 222d | 2026-08-21 | 2027-03-30 |  |  |  | -200.9d | 0d |  |  | 7 Day Workweek-2 |
|  | CHEMTANK | **5395 - Tote - Chem Feed Systems (Main & Aux Boiler Systems)** |  |  |  |  |  |  |  |  |  |  |  |  |
|  | COMP | **5185 - Air Compressors (2X100%) 5185 - w dryers, filters, receivers** |  |  | 2026-03-20 | 2026-12-17 |  |  |  |  |  |  |  |  |
| MST2220 |  | Air Compressors, Receivers & Dryers - Procure/Deliver |  | 273d | 2026-03-20 | 2026-12-17 |  |  |  | -31d | 4d |  |  | 7 Day Workweek-2 |
|  | SUPPORTS | **4130 - Engineered Pipe Supports** |  |  | 2026-07-18 | 2027-02-27 |  |  |  |  |  |  |  |  |
| MST3680 |  | Engineered Pipe Supports - Procure/Deliver |  | 225d | 2026-07-18 | 2027-02-27 |  |  |  | -26d | 1d |  |  | 7 Day Workweek-2 |
|  | 1 | **(New WBS)** |  |  |  |  |  |  |  |  |  |  |  |  |
|  | SILENCERS | **5391 - Vent Silencers** |  |  | 2026-08-18 | 2027-03-30 |  |  |  |  |  |  |  |  |
| MST4050 |  | Vent Silencers - Procure/Deliver |  | 225d | 2026-08-18 | 2027-03-30 |  |  |  | -148d | 0d |  |  | 7 Day Workweek-2 |
|  | 3 | **ELECTRICAL** |  |  | 2025-07-08 | 2027-12-24 |  |  |  |  |  |  |  |  |
|  | GSU | **5201 - Main Step-up Transformers (GSU)** |  |  | 2027-11-01 | 2027-11-01 |  |  |  |  |  |  |  |  |
| MST1300 |  | GSU - Delivery | milestone | 0d | 2027-11-01 | 2027-11-01 |  |  |  | -282.9d | 0d |  |  | 7 Day Workweek-2 |
|  | UAT | **5202 - Auxiliary Transformers (SST) UAT** |  |  | 2025-07-08 | 2027-10-31 |  |  |  |  |  |  |  |  |
| MST1470 |  | UAT - Procure/Deliver |  | 778d | 2025-07-08 A | 2027-10-31 | 714d | 2025-07-08 | 2027-08-27 | -268.9d | 0d | start on or after 2025-07-08 | 2027-10-31 | 7 Day Workweek-2 |
|  | ISOP | **5206 - 23kV Iso-Phase Bus** |  |  | 2026-04-23 | 2027-12-24 |  |  |  |  |  |  |  |  |
| MST2160 |  | 23kV Iso-Phase Bus - Procure/Deliver |  | 611d | 2026-04-23 | 2027-12-24 |  |  |  | 223d | 3d |  |  | 7 Day Workweek-2 |
|  | BUS1 | **5208 - 600 LVDC Bus excitation** |  |  | 2026-08-21 | 2027-10-04 |  |  |  |  |  |  |  |  |
| MST3720 |  | 18kV Open Aluminum Bus - Procure/Deliver |  | 410d | 2026-08-21 | 2027-10-04 |  |  |  | 290d | 0d |  |  | 7 Day Workweek-2 |
|  | RELAY | **5211 - Relay Protection & Metering** |  |  |  |  |  |  |  |  |  |  |  |  |
|  | RTU | **5211 - RTU** |  |  | 2026-11-24 | 2027-05-07 |  |  |  |  |  |  |  |  |
| MST3750 |  | RTU - Procure/Deliver |  | 165d | 2026-11-24 | 2027-05-07 |  |  |  | -179d | 2d |  |  | 7 Day Workweek-2 |
|  | BUS3 | **5208 - 6.9kV Non-Seg Bus** |  |  | 2026-07-03 | 2027-11-10 |  |  |  |  |  |  |  |  |
| MST3760 |  | 6.9kV Non-Seg Bus - Procure/Deliver |  | 496d | 2026-07-03 | 2027-11-10 |  |  |  | -261.9d | 0d |  |  | 7 Day Workweek-2 |

| ID | WBS | Activity | Duration | Start | Finish | Complete | Remaining | Planned start | Planned finish | Total float | Free float | Expected finish | Calendar |
| --- | --- | --- | --- | --- | --- | --- | --- | --- | --- | --- | --- | --- | --- |
|  | HVB | **5222 - High Voltage Plant Switch Yard Breakers** |  | 2025-08-01 | 2026-06-15 |  |  |  |  |  |  |  |  |
| MST3710 |  | HV Disconnect Breakers - Procure/Deliver | 275d | 2025-08-01 A | 2026-06-15 |  | 211d | 2025-09-14 | 2026-06-15 | 81d | 0d | 2026-06-15 | 7 Day Workweek-2 |
|  | HVS | **5221 - High Voltage Plant Switch Yard Disconnects** |  | 2025-07-22 | 2026-09-30 |  |  |  |  |  |  |  |  |
| PO-954-05 |  | HV Disconnect Switches & Breakers - Procure/Deliver | 364d | 2025-07-22 A | 2026-09-30 |  | 318d | 2025-07-22 | 2026-07-22 | -26d | 0d | 2026-09-30 | 7 Day Workweek-2 |
|  | MVXMFR | **5218 - Stand Alone MV (6.9kV) Pad Mount Transformers** |  | 2026-05-23 | 2027-04-01 |  |  |  |  |  |  |  |  |
| MST3770 |  | MV Pad Mount Transformers - Procure/Deliver | 314d | 2026-05-23 | 2027-04-01 |  |  |  |  | -188.9d | 0d |  | 7 Day Workweek-2 |
|  | LV Gear | **5215 - LV PDC with MCC** |  | 2026-04-09 | 2027-01-06 |  |  |  |  |  |  |  |  |
| MST2850 |  | LV PDC with MCC - Procure/Deliver | 273d | 2026-04-09 | 2027-01-06 |  |  |  |  | -51d | 15.1d |  | 7 Day Workweek-2 |
|  | LVMCC | **5212 - Stand Alone LV - 480V MCC's & Switchgear** |  | 2025-09-15 | 2025-09-15 |  |  |  |  |  |  |  |  |
| MST3790 |  | LV MCC and Switch Gear - Procure/Deliver (N/A Per ZE ZERE) | 0d | 2025-09-15 A | 2025-09-15 A | 100% |  |  |  |  |  |  | 7 Day Workweek-2 |
|  | ACCPDC | **5216 - ACC PDC with MCCs** |  | 2026-04-09 | 2027-04-17 |  |  |  |  |  |  |  |  |
| MST3800 |  | ACC PDC with MCC - Procure/Deliver | 374d | 2026-04-09 | 2027-04-17 |  |  |  |  | -243.9d | 1d |  | 7 Day Workweek-2 |
|  | BOPPDC | **5216 - BOP PDC with MCCs** |  | 2026-04-30 | 2027-02-23 |  |  |  |  |  |  |  |  |
| MST3810 |  | BOP PDC with MCC - Procure/Deliver | 300d | 2026-04-30 | 2027-02-23 |  |  |  |  | -99d | 12d |  | 7 Day Workweek-2 |
|  | MV Gear | **5216 - MV PDC With 6.9 kV Switchgear and MCC** |  | 2026-04-09 | 2027-05-22 |  |  |  |  |  |  |  |  |
| MST1580 |  | MV PDC Switchgear and MCC - Procure/Deliver | 409d | 2026-04-09 | 2027-05-22 |  |  |  |  | -187d | 1d |  | 7 Day Workweek-2 |
|  | DCUPS | **5230 - DC Power & UPS System w/ Batteries** |  | 2026-04-09 | 2027-05-27 |  |  |  |  |  |  |  |  |
| MST3820 |  | DC Power and UPS System - Procure/Deliver | 414d | 2026-04-09 | 2027-05-27 |  |  |  |  | 155d | 0d |  | 7 Day Workweek-2 |
|  | INST | **4501 - Field Instruments** |  | 2026-07-28 | 2027-11-20 |  |  |  |  |  |  |  |  |
| MST3830 |  | Field Instruments - Procure/Deliver | 481d | 2026-07-28 | 2027-11-20 |  |  |  |  | -171d | 1d |  | 7 Day Workweek-2 |
|  | INST1 | **4521 - Instrument Enclosures** |  |  |  |  |  |  |  |  |  |  |  |
|  | EDG | **5240 - Standby Diesel Generator (1,250kW)** |  | 2026-04-07 | 2027-01-28 |  |  |  |  |  |  |  |  |
| MST1710 |  | Standby Diesel Generator - Procure/Deliver | 297d | 2026-04-07 | 2027-01-28 |  |  |  |  | -73d | 7d |  | 7 Day Workweek-2 |
|  | COMM | **4365 - Communications and Security Systems** |  | 2027-03-12 | 2027-08-08 |  |  |  |  |  |  |  |  |
| MST3930 |  | Communications and Security - Procure/Deliver | 150d | 2027-03-12 | 2027-08-08 |  |  |  |  | 96d | 0d |  | 7 Day Workweek-2 |

| ID | WBS | Activity | Duration | Start | Finish | Total float | Free float | Calendar |
| --- | --- | --- | --- | --- | --- | --- | --- | --- |
|  | 4 | **MISC EQUIPMENT AND TANKS** |  | 2026-03-31 | 2027-01-18 |  |  |  |
|  | OWS | **5375 - Oil & Water Separator** |  | 2026-03-31 | 2026-09-28 |  |  |  |
| MST2610 |  | Oil/Water Separator - Procure/Deliver | 182d | 2026-03-31 | 2026-09-28 | -7d | 0d | 7 Day Workweek-2 |
|  | BDHX | **5390 - Air Cooled Chillers (HRSG Blowdown)** |  |  |  |  |  |  |
|  | AMMTANK | **5395 - Tanks, Shop Fab, Metal (Ammonia Storage Tank) - 20,000gal** |  | 2026-07-01 | 2027-01-18 |  |  |  |
| MST2250 |  | Ammonia Storage Tank - Procure/Deliver | 202d | 2026-07-01 | 2027-01-18 | -13d | 0d | 7 Day Workweek-2 |
|  | VACT | **5395 - Tanks, Shop Fab, Metal (Vacum Drains Tank)** |  | 2026-06-26 | 2026-12-22 |  |  |  |
| MST2490 |  | Vacuum Drains Tank - Procure/Deliver | 180d | 2026-06-26 | 2026-12-22 | 30.1d | 0d | 7 Day Workweek-2 |
|  | CTTANK | **5395 - Tanks, Shop Fab, Metal (CT False Start Drains Tanks)** |  | 2026-06-26 | 2026-12-22 |  |  |  |
| MST3860 |  | CT False Start Drains Tanks- Procure/Deliver | 180d | 2026-06-26 | 2026-12-22 | 30.1d | 0d | 7 Day Workweek-2 |
|  | CCWTANK | **5395 - Tanks, Shop Fab, Metal (CCW Expansion Tank)** |  | 2026-06-26 | 2026-12-22 |  |  |  |
| MST3880 |  | CCW Expansion Tank - Procure/Deliver | 180d | 2026-06-26 | 2026-12-22 | -85d | 0d | 7 Day Workweek-2 |
|  | STTANK | **5395 - Tanks, Shop Fab, Metal (ST Atmospheric Drains Tank)** |  | 2026-06-26 | 2026-12-22 |  |  |  |
| MST3870 |  | ST Atmospheric Drains Tank - Procure/Deliver | 180d | 2026-06-26 | 2026-12-22 | 297d | 0d | 7 Day Workweek-2 |
|  | CITTANK | **5395 - Leak detection separator tank** |  | 2026-06-26 | 2026-12-22 |  |  |  |
| MST3950 |  | Corrosion Inhibitor Tank - Procure/Deliver | 180d | 2026-06-26 | 2026-12-22 | 283d | 0d | 7 Day Workweek-2 |
|  | CONDTANK | **5395 - Tanks, Shop Fab, Metal (Condensate Drains / Receiver Tank)** |  | 2026-06-26 | 2026-12-22 |  |  |  |
| MST2730 |  | Condensate Drains and Receiver Tank - Procure/Deliver | 180d | 2026-06-26 | 2026-12-22 | -36d | 0d | 7 Day Workweek-2 |
|  | OSE | **Owner Supplied Engineering** |  |  |  |  |  |  |
|  | ENG | **Engineering** |  |  |  |  |  |  |
|  | CSA | **CSA** |  |  |  |  |  |  |
|  | 11 | **3D Modeling** |  |  |  |  |  |  |
|  | 1 | **Arrangements \ Layouts** |  |  |  |  |  |  |
|  | 2 | **Foundations** |  |  |  |  |  |  |
|  | 1 | **ACC Foundations** |  |  |  |  |  |  |
|  | 7 | **ACC - (GA Item# 4)** |  |  |  |  |  |  |
|  | 1 | **ACC - (GA Item# 4) - Pile Layout** |  |  |  |  |  |  |
|  | 2 | **ACC - (GA Item# 4) - Foundations** |  |  |  |  |  |  |
|  | 18 | **ACC PDC - (GA Item# 21)** |  |  |  |  |  |  |
|  | 2 | **ACC PDC - (GA Item# 21) - Foundations** |  |  |  |  |  |  |
|  | 19 | **ACC Vacuum Pump Skids - (GA Item# 23)** |  |  |  |  |  |  |
|  | 2 | **ACC Vacuum Pump Skids - (GA Item# 23) - Foundations** |  |  |  |  |  |  |
|  | 38 | **Condensate Collection Tank \ Deaerator - (GA Item# 43)** |  |  |  |  |  |  |
|  | 2 | **Condensate Colletion Tank \ Deaerator - (GA Item# 43) - Foundations** |  |  |  |  |  |  |
|  | 53 | **ACC Turbine Exhaust Duct - (GA Item# 75)** |  |  |  |  |  |  |
|  | 1 | **ACC Turbine Exhaust Duct - (GA Item# 75) - Pile Layout** |  |  |  |  |  |  |
|  | 2 | **ACC Turbine Exhaust Duct - (GA Item# 75) - Foundations** |  |  |  |  |  |  |
|  | 54 | **ACC Drain Pot \ Pumps \ Pit - (GA Item# 76)** |  |  |  |  |  |  |
|  | 2 | **ACC Drain Pot \ Pumps \ Pit - (GA Item# 76) - Foundations** |  |  |  |  |  |  |
|  | 55 | **ACC Cleaning Pump - (GA Item# 77)** |  |  |  |  |  |  |
|  | 2 | **ACC Cleaning Pump - (GA Item# 77) - Foundations** |  |  |  |  |  |  |
|  | 59 | **Cycle Chemical Feed Totes & Pumps - (GA Item# 85)** |  |  |  |  |  |  |
|  | 2 | **Cycle Chemical Feed Totes & Pumps - (GA Item# 85) - Foundations** |  |  |  |  |  |  |
|  | 11 | **ACC Holding Steam Jet Air Ejectors - (GA Item# 94)** |  |  |  |  |  |  |
|  | 2 | **ACC Holding Steam Jet Air Ejectors - (GA Item# 94) - Foundations** |  |  |  |  |  |  |
|  | 12 | **ACC Cleaning Water Pumps - (GA Item# 95)** |  |  |  |  |  |  |
|  | 2 | **ACC Cleaning Water Pumps - (GA Item# 95) - Foundations** |  |  |  |  |  |  |
|  | 11 | **Pipe Rack Foundations** |  |  |  |  |  |  |
|  | 8 | **Utility Rack - (GA Item# 56)** |  |  |  |  |  |  |
|  | 1 | **Utility Rack - (GA Item# 56) - Pile Layout** |  |  |  |  |  |  |
|  | 2 | **Utility Rack - (GA Item# 56) - Foundations** |  |  |  |  |  |  |
|  | 46 | **Boiler Feed Pipe Rack - (GA Item# 67)** |  |  |  |  |  |  |
|  | 1 | **Boiler Feed Pipe Rack - (GA Item# 67) - Pile Layout** |  |  |  |  |  |  |
|  | 2 | **Boiler Feed Pipe Rack - (GA Item# 67) - Foundations** |  |  |  |  |  |  |
|  | 16 | **CT \ ST and Turbine Bldg Foundations** |  |  |  |  |  |  |
|  | 1 | **CT \ ST - (GA Item# 1 \ 2 \ 5 \ 91)** |  |  |  |  |  |  |
|  | 1 | **CT \ ST - (GA Item# 1 \ 2 \ 5 \ 91) - Pile Layout** |  |  |  |  |  |  |
|  | 2 | **CT \ ST - (GA Item# 1 \ 2 \ 5 \ 91) - Foundations** |  |  |  |  |  |  |
|  | 15 | **Turbine Bldg - (GA Item# 27 \ 55 \ 71 \ 72 \ 82 \ 83 \ 105)** |  |  |  |  |  |  |
|  | 1 | **Turbine Bldg - (GA Item# 27 \ 55 \ 71 \ 72 \ 82 \ 83 \ 105) - Pile Layout** |  |  |  |  |  |  |
|  | 2 | **Turbine Bldg - (GA Item# 27 \ 55 \ 71 \ 72 \ 82 \ 83 \ 105) - Foundations** |  |  |  |  |  |  |
|  | 40 | **CT Performance Heater - (GA Item# 47)** |  |  |  |  |  |  |
|  | 2 | **CT Performance Heater - (GA Item# 47) - Foundations** |  |  |  |  |  |  |
|  | 45 | **Air Inlet Filter - (GA Item# 62)** |  |  |  |  |  |  |
|  | 1 | **Air Inlet Filter - (GA Item# 62) - Pile Layout** |  |  |  |  |  |  |
|  | 2 | **Air Inlet Filter - (GA Item# 62) - Foundations** |  |  |  |  |  |  |
|  | 50 | **Atmospheric ST Drains Tank and Pumps - (GA Item# 70)** |  |  |  |  |  |  |
|  | 2 | **Atmospheric ST Drains Tank and Pumps - (GA Item# 70) - Foundations** |  |  |  |  |  |  |
|  | 51 | **Vacuum Drains Tank and Pit - (GA Item# 73)** |  |  |  |  |  |  |
|  | 2 | **Vacuum Drains Tank and Pit - (GA Item# 73) - Foundations** |  |  |  |  |  |  |

| WBS | Activity |
| --- | --- |
| 52 | **ST Bypass Valve Access Platform - (GA Item# 74)** |
| 1 | **ST Bypass Valve Access Platform - (GA Item# 74) - Pile Layout** |
| 2 | **ST Bypass Valve Access Platform - (GA Item# 74) - Foundations** |
| 56 | **Air Processing Unit - (GA Item# 78)** |
| 2 | **Air Receiver Tank - (GA Item# 78) - Foundations** |
| 57 | **Stator Cooling Water Skid \ Air Processing Unit - (GA Item# 81)** |
| 2 | **Stator Cooling Water Skid \ Air Processing Unit - (GA Item# 81) - Foundations** |
| 2 | **Water Wash Skid (GA Item# 42)** |
| 1 | **Water Wash Skid (GA Item# 42) - Foundations** |
| 65 | **HRSG Foundations** |
| 3 | **HRSG - Main - (GA Item# 3 \ 108)** |
| 1 | **HRSG - Main - (GA Item# 3 \ 108) - Pile Layout** |
| 2 | **HRSG - Main - (GA Item# 3 \ 108) - Foundations** |
| 16 | **HRSG - Auxiliary** |
| 2 | **LP Economizer Recirc Pumps - (GA Item# 24) - Foundations** |
| 1 | **HRSG CEMS - (GA Item# 25) - Foundations** |
| 3 | **HRSG Blowdown Tank - (GA Item# 26) - Foundations** |
| 44 | **Fuel Gas Absolute Separator - (GA Item# 57)** |
| 2 | **Fuel Gas Absolute Separator - (GA Item# 57) - Foundations** |
| 26 | **Fuel Gas Electric Heater - (GA Item# 18)** |
| 2 | **Fuel Gas Electric Heater - (GA Item# 18) - Foundations** |
| 17 | **HRSG - South - (GA Item# 48 \ 49 \ 108)** |
| 1 | **HRSG - South - (GA Item# 48 \ 49 \ 108) - Pile Layout** |
| 2 | **HRSG - South - (GA Item# 48 \ 49 \ 108) - Foundations** |
| 39 | **HRSG Blowdown Drain Sump - (GA Item# 46)** |
| 2 | **HRSG Blowdown Drain Sump - (GA Item# 46) - Foundations** |
| 7 | **Tank Foundations** |
| 24 | **Ammonia Storage Tank - (GA Item# 13 \ 88 \ 93)** |
| 1 | **Ammonia Storage Tank - (GA Item# 13 \ 88 \ 93) - Pile Layout** |
| 2 | **Ammonia Storage Tank - (GA Item# 13 \ 88 \ 93) - Foundations** |
| 20 | **Demin Water Tank - (GA Item# 7)** |
| 1 | **Demin Water Tank - (GA Item# 7) - Pile Layout** |
| 2 | **Demin Water Tank - (GA Item# 7) - Foundations** |
| 21 | **Service \ Fire Protection Water Tank - (GA Item# 8)** |
| 1 | **Service \ Fire Protection Water Tank - (GA Item# 8) - Pile Layout** |
| 2 | **Service \ Fire Protection Water Tank - (GA Item# 8) - Foundations** |
| 22 | **Waste Water Tank - (GA Item# 9)** |
| 1 | **Waste Water Tank - (GA Item# 9) - Pile Layout** |
| 2 | **Waste Water Tank - (GA Item# 9) - Foundations** |
| 2 | **Pump Foundations** |
| 58 | **Waste Water Forwarding Pumps - (GA Item# 84)** |
| 2 | **Waste Water Forwarding Pumps - (GA Item# 84) - Foundations** |
| 60 | **Service Water Pumps - (GA Item# 96)** |
| 2 | **Service Water Pumps - (GA Item# 96) - Foundations** |
| 33 | **Demin Water Supply Pumps - (GA Item# 35)** |
| 2 | **Demin Water Supply Pumps - (GA Item# 35) - Foundations** |
| 32 | **Closed Cycle Cooling Water Pumps - (GA Item# 34)** |
| 2 | **Closed Cycle Cooling Water Pumps - (GA Item# 34) - Foundations** |
| 6 | **BOP Foundations** |
| 5 | **Finfan Cooler - (GA Item# 20)** |
| 2 | **Finfan Cooler - (GA Item# 20) - Foundations** |
| 25 | **Emergency Diesel Generator - (GA Item# 14)** |
| 1 | **Emergency Diesel Generator - (GA Item# 14) - Pile Layout** |
| 2 | **Emergency Diesel Generator - (GA Item# 14) - Foundations** |
| 48 | **Evap Cooler Water Skid - (GA Item# 68)** |
| 2 | **Evap Cooler Water Skid - (GA Item# 68) - Foundations** |
| 28 | **Oil Water Separator - (GA Item# 30)** |
| 2 | **Oil Water Separator - (GA Item# 30) - Foundations** |
| 31 | **CT Water Mist Skid - (GA Item# 33)** |
| 2 | **CT Water Mist Skid - (GA Item# 33) - Foundations** |
| 41 | **Demin Water Treatment Trailer Parking Pad - (GA Item# 52)** |
| 2 | **Demin Water Treatment Trailer Parking Pad - (GA Item# 52) - Foundations** |
| 43 | **Hydrogen Bulk Storage - (GA Item# 54)** |
| 2 | **Hydrogen Bulk Storage - (GA Item# 54) - Foundations** |
| 8 | **Electrical Equipment Foundations** |
| 13 | **Main PDC - (GA Item# 28)** |
| 2 | **Main PDC - (GA Item# 28) - Foundations** |
| 29 | **CT Battery Compartment - (GA Item# 31)** |
| 2 | **CT Battery Compartment - (GA Item# 31) - Foundations** |
| 30 | **PEECC - (GA Item# 32)** |

| WBS | Activity |
| --- | --- |
| 2 | **PEECC - (GA Item# 32) - Foundations** |
| 34 | **LCI and Exciter Compartment - (GA Item# 38)** |
| 2 | **LCI and Exciter Compartment - (GA Item# 38) - Foundations** |
| 35 | **CT Excitation Transformer - (GA Item# 39)** |
| 2 | **CT Excitation Transformer - (GA Item# 39) - Foundations** |
| 36 | **CT Isolation Transformer - (GA Item# 40)** |
| 2 | **CT Isolation Transformer - (GA Item# 40) - Foundations** |
| 47 | **6.9kV Station Service Transformers - (GA Item# 63)** |
| 2 | **6.9kV Station Service Transformers - (GA Item# 63) - Foundations** |
| 37 | **Generator Circuit Breaker - (GA Item# 41)** |
| 2 | **Generator Circuit Breaker - (GA Item# 41) - Foundations** |
| 6 | **Isolated Phase Bus Duct - (GA Item# 89)** |
| 2 | **Isolated Phase Bus Duct - (GA Item# 89) - Foundations** |
| 49 | **AC Link Reactor - (GA Item# 69)** |
| 2 | **AC Link Reactor - (GA Item# 69) - Foundations** |
| 9 | **DC Link Reactor - (GA Item# 90)** |
| 2 | **DC Link Reactor - (GA Item# 90) - Foundations** |
| 4 | **Generator Step-Up Transformer - (GA Item# 15)** |
| 1 | **Generator Step-Up Transformer - (GA Item# 15) - Pile Layout** |
| 2 | **Generator Step-Up Transformer - (GA Item# 15) - Foundations** |
| 27 | **Unit Aux Transformer - (GA Item# 19)** |
| 1 | **Unit Aux Transformer - (GA Item# 19) - Pile Layout** |
| 2 | **Unit Aux Transformer - (GA Item# 19) - Foundations** |
| 4 | **Building and Enclosure Foundations** |
| 14 | **Aux Boiler Bldg - (GA Item# 10 \ 29 \ 65 \ 87 \ 97 \ 98 \ 99)** |
| 1 | **Aux Boiler Bldg - (GA Item# 10 \ 29 \ 65 \ 87 \ 97 \ 98 \ 99) - Pile Layout** |
| 2 | **Aux Boiler Bldg - (GA Item# 10 \ 29 \ 65 \ 87 \ 97 \ 98 \ 99) - Foundations** |
| 2 | **Boiler Feed Pump Bldg - (GA Item# 22 \ 44 \ 45 \ 50)** |
| 1 | **Boiler Feed Pump Bldg - (GA Item# 22 \ 44 \ 45 \ 50) - Pile Layout** |
| 2 | **Boiler Feed Pump Bldg - (GA Item# 22 \ 44 \ 45 \ 50) - Foundations** |
| 10 | **Control \ Admin \ Warehouse Bldg - (GA Item# 11 \ 17)** |
| 1 | **Control \ Admin \ Warehouse Bldg - (GA Item# 11\ 17) - Pile Layout** |
| 2 | **Control \ Admin \ Warehouse Bldg - (GA Item# 11 \ 17) - Foundations** |
| 61 | **Fire Protection Valve House - (GA Item# 104)** |
| 2 | **Fire Protection Valve House - (GA Item# 104) - Foundations** |
| 23 | **Fire Pump Enclosure - (GA Item# 12)** |
| 1 | **Fire Pump Enclosure - (GA Item# 12) - Pile Layout** |
| 2 | **Fire Pump Enclosure - (GA Item# 12) - Foundations** |
| 3 | **Gas Yard Foundations** |
| 42 | **Gas Metering Station - (GA Item# 53)** |
| 1 | **Gas Metering Station - (GA Item# 53) - Pile Layout** |
| 2 | **Gas Metering Station - (GA Item# 53) - Foundations** |
| 62 | **Fuel Gas Dew Point Heater - (GA Item# 100)** |
| 1 | **Fuel Gas Dew Point Heater - (GA Item# 100) - Pile Layout** |
| 2 | **Fuel Gas Dew Point Heater - (GA Item# 100) - Foundations** |
| 63 | **Fuel Gas Conditioning Skid - (GA Item# 101)** |
| 1 | **Fuel Gas Conditioning Skid - (GA Item# 101) - Pile Layout** |
| 2 | **Fuel Gas Conditioning Skid - (GA Item# 101) - Foundations** |
| 64 | **Fuel Gas Drains Tank - (GA Item# 102)** |
| 1 | **Fuel Gas Drains Tank - (GA Item# 102) - Pile Layout** |
| 2 | **Fuel Gas Drains Tank - (GA Item# 102) - Foundations** |
| 9 | **Roads \ Paving \ Parking** |
| 5 | **Sitework \ Grading & Drainage \ Stormwater** |
| 10 | **Fencing & Security** |
| 1 | **Grading \ Drainage** |
| 2 | **Stormwater** |
| 7 | **Specifications** |
| 7 | **Task 002 \ 004 - Early Work** |
| 6 | **CSA General Specifications** |
| 5 | **Geotech** |
| 1 | **Fabricated Structural Steel** |
| 3 | **Piles** |
| 2 | **Pre-Engineered Buildings** |
| 5 | **General Specification** |
| 1 | **Admin \ Control \ Warehouse Building** |
| 3 | **Aux Boiler Building** |
| 4 | **Boiler Feed Pump Building** |
| 2 | **Turbine Building** |
| 4 | **Site Scope of Work** |
| 6 | **Structural Steel** |

| WBS | Activity |
| --- | --- |
| 10 | **CT \ ST & Turbine Building Steel** |
| 4 | **Electrical Equipment Steel** |
| 8 | **Pipe Rack Steel** |
| 1 | **Pipe Support Steel** |
| 3 | **Sumps and Pits Steel** |
| 9 | **Miscellaneous Steel** |
| PIPE | **MECHANICAL** |
| 2 | **Heat \ Mass \ Water Balance** |
| 4 | **PFDs \ P&IDs** |
| 1 | **General** |
| 2 | **AST - Ammonia Storage & Transfer** |
| 3 | **BBS - Boiler Blowdown** |
| 4 | **BFW - Boiler Feedwater** |
| 16 | **CAI - Instrument Air** |
| 5 | **CCF - Steam Cycle & Evap Cooler Chemical Feed** |
| 7 | **CCW - Closed Cycle Cooling Water** |
| 28 | **CGS - Compressed Gas** |
| 9 | **CND - Condenser** |
| 8 | **CNE - Condenser Air Extraction** |
| 10 | **CNS - Condensate** |
| 11 | **CSA - Cycle Sampling & Analysis** |
| 12 | **CTG - Combustion Turbine \ Generator** |
| 13 | **DMN - Demineralized Water** |
| 14 | **FGS - Fuel Gas Regulating and Conditioning** |
| 15 | **FWS - Firewater** |
| 18 | **SAB - Auxiliary Boiler** |
| 19 | **SAX - Auxiliary Steam** |
| 29 | **SHP - High Pressure Steam** |
| 30 | **SLP - Low Pressure Steam** |
| 31 | **SRC - Steam Reheat (Cold)** |
| 6 | **SRH - Steam Reheat (Hot)** |
| 21 | **STG - Steam Turbine \ Generator** |
| 17 | **WSP - Potable Water** |
| 22 | **WSS - Service Water** |
| 23 | **WWC - Waste Water Collection** |
| 24 | **WWT - Waste Water Treatment** |
| 9 | **Specifications** |
| 19 | **General** |
| 1 | **ACC - Steam Surface Condenser and Vacuum Equipment (Air Cooled)** |
| 4 | **Air Cooled Chillers (HRSG Blowdown)** |
| 7 | **Air Cooled Heat Exchanger (Finfan Coolers)** |
| 8 | **Ammonia Unloading \ Storage \ Transfer System** |
| 12 | **Compressed Air System** |
| 13 | **Cycle Chemical Feed System (AVT)** |
| 14 | **Cycle Water Sampling Analysis System** |
| 11 | **Fuel Gas Conditioning System** |
| 28 | **Fuel Gas Indirect Fired Bath Heater** |
| 2 | **Intermediate Pressure Process Boilers - Incl. Stack\Tanks\Feed Pumps\Regulation** |
| 23 | **Packaged Utility Lift Station** |
| 26 | **Pumps - Boiler Feed** |
| 25 | **Pumps - Closed Cycle Cooling Water** |
| 24 | **Pumps - Condensate** |
| 22 | **Pumps - Fire** |
| 27 | **Pumps - Horizontal Centrifugal** |
| 6 | **Pumps - Rotary Lobe Sump** |
| 21 | **Pumps - Sump** |
| 16 | **Sample Panel** |
| 18 | **Tanks - Shop Fabricated Steel** |
| 10 | **Tanks - Field Erected (Demin \ Service Water \ Firewater)** |
| 15 | **Water Treatment Oil & Water Separator (Below Grade)** |
| 3 | **Valves** |
| 6 | **Valves - Ball (Critical)** |
| 7 | **Valves - Ball (General)** |
| 4 | **Valves - Gate \ Globe \ Check (Critical)** |
| 5 | **Valves - Gate \ Globe \ Check (General)** |
| 1 | **Valves - Butterfly** |
| 2 | **Valves - Control** |
| 3 | **Valves - Safety Relief** |
| 1 | **Arrangements \ Layouts** |
| 12 | **Underground Piping** |

| WBS | Activity |
| --- | --- |
| 2 | **AST - Ammonia Storage & Transfer** |
| 16 | **CAI - Instrument Air** |
| 28 | **CAS - Service Air** |
| 7 | **CCW - Closed Cycle Cooling Water** |
| 12 | **CTG - Combustion Turbine \ Generator** |
| 13 | **DMN - Demineralized Water** |
| 14 | **FGS - Fuel Gas Regulating and Conditioning** |
| 15 | **FWS - Firewater** |
| 25 | **GCD - Carbon Dioxide Storage** |
| 26 | **GHS - Hydrogen Storage** |
| 27 | **GNS - Nitrogen Storage** |
| 17 | **WSP - Potable Water** |
| 22 | **WSS - Service Water** |
| 23 | **WWC - Waste Water Collection** |
| 24 | **WWS - Sewage Disposal System** |
| 10 | **3D Modeling & Stress** |
| 1 | **General Modeling** |
| 2 | **Pipe Rack Modeling** |
| 6 | **Pipe - Large Bore Hot** |
| 3 | **BBS - Boiler Blowdown** |
| 1 | **CNE - Condenser Air Extraction** |
| 9 | **CND - Condenser** |
| 14 | **FGS - Fuel Gas Regulating and Conditioning** |
| 4 | **BFW - Boiler Feedwater** |
| 18 | **SAB - Auxiliary Boiler** |
| 19 | **SAX - Auxiliary Steam** |
| 29 | **SHP - High Pressure Steam** |
| 30 | **SLP - Low Pressure Steam** |
| 31 | **SRC - Steam Reheat (Cold)** |
| 6 | **SRH - Steam Reheat (Hot)** |
| 21 | **STG - Steam Turbine \ Generator** |
| 8 | **Pipe - Small Bore Hot** |
| 3 | **BBS - Boiler Blowdown** |
| 4 | **BFW - Boiler Feedwater** |
| 9 | **CND - Condenser** |
| 1 | **CNE - Condenser Air Extraction** |
| 11 | **CSA - Cycle Sampling & Analysis** |
| 14 | **FGS - Fuel Gas Regulating and Conditioning** |
| 18 | **SAB - Auxiliary Boiler** |
| 19 | **SAX - Auxiliary Steam** |
| 29 | **SHP - High Pressure Steam** |
| 30 | **SLP - Low Pressure Steam** |
| 31 | **SRC - Steam Reheat (Cold)** |
| 6 | **SRH - Steam Reheat (Hot)** |
| 21 | **STG - Steam Turbine \ Generator** |
| 5 | **Pipe - Large Bore Cold** |
| 3 | **BBS - Boiler Blowdown** |
| 7 | **CCW - Closed Cycle Cooling Water** |
| 9 | **CND - Condenser** |
| 1 | **CNE - Condenser Air Extraction** |
| 10 | **CNS - Condensate** |
| 12 | **CTG - Combustion Turbine \ Generator** |
| 13 | **DMN - Demineralized Water** |
| 14 | **FGS - Fuel Gas Regulating and Conditioning** |
| 15 | **FWS - Firewater** |
| 21 | **STG - Steam Turbine \ Generator** |
| 17 | **WSP - Potable Water** |
| 22 | **WSS - Service Water** |
| 23 | **WWC - Waste Water Collection** |
| 24 | **WWT - Waste Water Treatment** |
| 7 | **Pipe - Small Bore Cold** |
| 2 | **AST - Ammonia Storage & Transfer** |
| 16 | **CAI - Instrument Air** |
| 5 | **CCF - Steam Cycle & Evaporative Cooler Chemical Feed** |
| 7 | **CCW - Closed Cycle Cooling Water** |
| 28 | **CGS - Compressed Gas** |
| 10 | **CNS - Condensate** |
| 11 | **CSA - Cycle Sampling & Analysis** |
| 12 | **CTG - Combustion Turbine \ Generator** |
| 13 | **DMN - Demineralized Water** |

| WBS | Activity |
| --- | --- |
| 14 | **FGS - Fuel Gas Regulating and Conditioning** |
| 18 | **SAB - Auxiliary Boiler** |
| 21 | **STG - Steam Turbine \ Generator** |
| 17 | **WSP - Potable Water** |
| 22 | **WSS - Service Water** |
| 23 | **WWC - Waste Water Collection** |
| 24 | **WWT - Waste Water Treatment** |
| 14 | **Pipe Supports - Large Bore Hot** |
| 3 | **BBS - Boiler Blowdown** |
| 1 | **CND - Condenser** |
| 4 | **BFW - Boiler Feedwater** |
| 2 | **CNE - Condenser Air Extraction** |
| 5 | **FGS - Fuel Gas Regulating and Conditioning** |
| 18 | **SAB - Auxiliary Boiler** |
| 19 | **SAX - Auxiliary Steam** |
| 29 | **SHP - High Pressure Steam** |
| 30 | **SLP - Low Pressure Steam** |
| 31 | **SRC - Steam Reheat (Cold)** |
| 6 | **SRH - Steam Reheat (Hot)** |
| 15 | **Pipe Supports - Small Bore Hot** |
| 3 | **BBS - Boiler Blowdown** |
| 4 | **BFW - Boiler Feedwater** |
| 1 | **CND - Condenser** |
| 2 | **CNE - Condenser Air Extraction** |
| 7 | **CSA - Cycle Sampling & Analysis** |
| 5 | **FGS - Fuel Gas Regulating and Conditioning** |
| 18 | **SAB - Auxiliary Boiler** |
| 19 | **SAX - Auxiliary Steam** |
| 29 | **SHP - High Pressure Steam** |
| 30 | **SLP - Low Pressure Steam** |
| 31 | **SRC - Steam Reheat (Cold)** |
| 6 | **SRH - Steam Reheat (Hot)** |
| 13 | **Pipe Supports - Large Bore Cold** |
| 16 | **Pipe Supports - Small Bore Cold** |
| 3 | **Lists** |
| 2 | **AST - Ammonia Storage & Transfer** |
| 3 | **BBS - Boiler Blowdown** |
| 4 | **BFW - Boiler Feedwater** |
| 16 | **CAI - Instrument Air** |
| 5 | **CCF - Steam Cycle & Evaporative Cooler Chemical Feed** |
| 7 | **CCW - Closed Cycle Cooling Water** |
| 28 | **CGS - Compressed Gas** |
| 9 | **CND - Condenser** |
| 10 | **CNS - Condensate** |
| 11 | **CSA - Cycle Sampling & Analysis** |
| 12 | **CTG - Combustion Turbine \ Generator** |
| 13 | **DMN - Demineralized Water** |
| 14 | **FGS - Fuel Gas Regulating and Conditioning** |
| 15 | **FWS - Firewater** |
| 18 | **SAB - Auxiliary Boiler** |
| 19 | **SAX - Auxiliary Steam** |
| 29 | **SHP - High Pressure Steam** |
| 30 | **SLP - Low Pressure Steam** |
| 31 | **SRC - Steam Reheat (Cold)** |
| 6 | **SRH - Steam Reheat (Hot)** |
| 21 | **STG - Steam Turbine \ Generator** |
| 17 | **WSP - Potable Water** |
| 22 | **WSS - Service Water** |
| 23 | **WWC - Waste Water Collection** |
| 24 | **WWT - Waste Water Treatment** |
| 11 | **System Description & Manuals** |
| ELEC | **Electrical** |
| 7 | **Power Distribution (One \ Three Lines)** |
| 16 | **Calculations & Studies** |
| 1 | **Rev. A Issuances** |
| 2 | **Client Reviews** |
| 3 | **Rev. 0 Issuances** |
| 10 | **Specifications** |
| 24 | **Electrical Supporting Specifications** |
| 23 | **Electrical Installation** |

| WBS | Activity |
| --- | --- |
| 12 | **Standby Diesel Generator (1250kW)** |
| 13 | **Generator Circuit Breaker** |
| 7 | **MV (6.9kV) Pad Mount Transformers** |
| 3 | **MV PDC w\ 6.9kV Switchgear & MCC** |
| 18 | **23kV Iso-Phase Bus** |
| 6 | **6.9kV Non-Seg Bus** |
| 4 | **ACC PDC w\ MCC's** |
| 11 | **600Vac Bus Duct** |
| 5 | **LV PDC w\ MCC** |
| 1 | **LV (480V) MCC's & Switchgear** |
| 9 | **LV (480V) Auxiliary Pad Mount Transformers** |
| 2 | **1500V DC Bus Excitation** |
| 8 | **DC \ UPS** |
| 15 | **Relay Protection & Metering** |
| 20 | **Communications & Security Systems** |
| 17 | **Switchyard Engineering Option** |
| 25 | **RTU** |
| 14 | **Cathodic Protection** |
| 19 | **Lightning Protection** |
| 16 | **Heat Trace** |
| 22 | **Fire Detection - Electrical** |
| 10 | **Wire & Cable** |
| 11 | **3D Modeling** |
| 1 | **Underground Electrical** |
| 1 | **CWA-01 - HRSG Area** |
| 10 | **CWA-12 - Control Room \ Admin \ Warehouse** |
| 11 | **CWA-13 - GSU** |
| 12 | **CWA-14 - Aux Boiler Bldg Area** |
| 13 | **CWA-17 - Plant Gas Yard Area** |
| 14 | **CWA-19 - Ammonia Storage Tank Area** |
| 15 | **CWA-21 - Service \ Fire Protection \ Demin Water Area** |
| 2 | **CWA-02 - Turbine Area** |
| 3 | **CWA-05 - Utility Rack Area** |
| 4 | **CWA-06 - ACC Area** |
| 5 | **CWA-07 - Emergency Diesel Gen. Area** |
| 6 | **CWA-08 - LV Switchgear PDC Area** |
| 7 | **CWA-09 - Air Inlet Filter Area** |
| 8 | **CWA-10 - Fin Fan Cooler** |
| 9 | **CWA-11 - Boiler Feed Pump Blgd Area** |
| 16 | **CWA-22 - Hydrogen Storage Area** |
| 2 | **Arrangements \ Layouts** |
| 1 | **CWA-01 - HRSG Area** |
| 2 | **CWA-02 - Turbine Area** |
| 3 | **CWA-05 - Utility Rack Area** |
| 4 | **CWA-06 - ACC Area** |
| 5 | **CWA-07 - Emergency Diesel Gen. Area** |
| 6 | **CWA-08 - LV Switchgear PDC Area** |
| 7 | **CWA-09 - Air Inlet Filter Area** |
| 8 | **CWA-10 - Fin Fan Cooler** |
| 9 | **CWA-11 - Boiler Feed Pump Blgd Area** |
| 10 | **CWA-12 - Control Room \ Admin \ Warehouse** |
| 11 | **CWA-13 - GSU** |
| 12 | **CWA-14 - Aux Boiler Bldg Area** |
| 13 | **CWA-17 - Plant Gas Yard Area** |
| 14 | **CWA-19 - Ammonia Storage Tank Area** |
| 15 | **CWA-21 - Service \ Fire Protection \ Demin Water Area** |
| 16 | **CWA-22 - Hydrogen Storage Area** |
| 4 | **Grounding \ Lightning Protection** |
| 1 | **CWA-01 - HRSG Area** |
| 2 | **CWA-02 - Turbine Area** |
| 3 | **CWA-05 - Utility Rack Area** |
| 4 | **CWA-06 - ACC Area** |
| 5 | **CWA-07 - Emergency Diesel Gen. Area** |
| 6 | **CWA-08 - LV Switchgear PDC Area** |
| 7 | **CWA-09 - Air Inlet Filter Area** |
| 8 | **CWA-10 - Fin Fan Cooler** |
| 9 | **CWA-11 - Boiler Feed Pump Blgd Area** |
| 10 | **CWA-12 - Control Room \ Admin \ Warehouse** |
| 11 | **CWA-13 - GSU** |
| 12 | **CWA-14 - Aux Boiler Bldg Area** |

| WBS | Activity |
| --- | --- |
| 13 | **CWA-17 - Plant Gas Yard Area** |
| 14 | **CWA-19 - Ammonia Storage Tank Area** |
| 15 | **CWA-21 - Service \ Fire Protection \ Demin Water Area** |
| 16 | **CWA-22 - Hydrogen Storage Area** |
| 5 | **Lighting** |
| 1 | **CWA-01 - HRSG Area** |
| 2 | **CWA-02 - Turbine Area** |
| 3 | **CWA-05 - Utility Rack Area** |
| 4 | **CWA-06 - ACC Area** |
| 5 | **CWA-07 - Emergency Diesel Gen. Area** |
| 6 | **CWA-08 - LV Switchgear PDC Area** |
| 7 | **CWA-09 - Air Inlet Filter Area** |
| 8 | **CWA-10 - Fin Fan Cooler** |
| 9 | **CWA-11 - Boiler Feed Pump Blgd Area** |
| 10 | **CWA-12 - Control Room \ Admin \ Warehouse** |
| 11 | **CWA-13 - GSU** |
| 12 | **CWA-14 - Aux Boiler Bldg Area** |
| 13 | **CWA-17 - Plant Gas Yard Area** |
| 14 | **CWA-19 - Ammonia Storage Tank Area** |
| 15 | **CWA-21 - Service \ Fire Protection \ Demin Water Area** |
| 16 | **CWA-22 - Hydrogen Storage Area** |
| 3 | **Cable Tray** |
| 1 | **CWA-01 - HRSG Area** |
| 2 | **CWA-02 - Turbine Area** |
| 3 | **CWA-05 - Utility Rack Area** |
| 4 | **CWA-06 - ACC Area** |
| 5 | **CWA-07 - Emergency Diesel Gen. Area** |
| 6 | **CWA-08 - LV Switchgear PDC Area** |
| 7 | **CWA-09 - Air Inlet Filter Area** |
| 8 | **CWA-10 - Fin Fan Cooler** |
| 9 | **CWA-11 - Boiler Feed Pump Blgd Area** |
| 10 | **CWA-12 - Control Room \ Admin \ Warehouse** |
| 11 | **CWA-13 - GSU** |
| 12 | **CWA-14 - Aux Boiler Bldg Area** |
| 13 | **CWA-17 - Plant Gas Yard Area** |
| 14 | **CWA-19 - Ammonia Storage Tank Area** |
| 15 | **CWA-21 - Service \ Fire Protection \ Demin Water Area** |
| 16 | **CWA-22 - Hydrogen Storage Area** |
| 8 | **Relay Settings** |
| 9 | **Wiring & Cable Routing** |
| 1 | **AST - Ammonia Storage & Transfer System** |
| 2 | **BBS - Boiler Blowdown System** |
| 10 | **CCS - CO Catalyst System** |
| 11 | **CCW - Closed Cycle Cooling Water System** |
| 12 | **CEM - Continuous Emissions Monitoring System (CEMS)** |
| 13 | **CMT - Cycle Makeup Treatment** |
| 14 | **CND - Condensor** |
| 15 | **CNE - Condensor Air Extraction System** |
| 16 | **CNS - Condensate System** |
| 17 | **CSA - Cycle (Water\Steam) Sampling & Analysis System** |
| 18 | **CTE - CT Inlet Evap Cooler System** |
| 19 | **CTG - Combustion Turbine \ Generator** |
| 20 | **CTW - CT Water Wash System** |
| 21 | **DBU - Duct Burner Unit** |
| 22 | **DMN - Demineralized Water System** |
| 23 | **EDC - DC Power System** |
| 24 | **EDG - Emergency Diesel Generator System** |
| 25 | **EEP - Essential Electrical System** |
| 26 | **EHA - High Voltage AC Power System ( > 34kV)** |
| 27 | **ELA - Low Voltage AC Power System (480V)** |
| 28 | **ELB - Low Voltage AC Power System ( < 300V)** |
| 29 | **ELS - Emergency Lighting System** |
| 3 | **BFW - Boiler Feed Water System** |
| 30 | **EMB - Medium Voltage AC Power System (6.9kV)** |
| 31 | **EMC - Medium Voltage AC Power System (8kV - 34kV)** |
| 32 | **FDS - Fire Detection System** |
| 33 | **FGS - Fuel Gas Supply System** |
| 34 | **FPA - Plant Fire Protection** |
| 35 | **FWS - Fire Water System** |
| 36 | **GCB - Generator Circuit Breaker** |

| ID | WBS | Activity | Duration | Start | Finish | Total float | Free float |
| --- | --- | --- | --- | --- | --- | --- | --- |
|  | 37 | **GSU - Generator Step Up Transformer** |  |  |  |  |  |
|  | 38 | **GVA - Generator & Excitation** |  |  |  |  |  |
|  | 39 | **HRS - Heat Recovery Steam Generator** |  |  |  |  |  |
|  | 4 | **BLA - Admin \ Control Building** |  |  |  |  |  |
|  | 40 | **IBS - Isolated Phase Bus Duct** |  |  |  |  |  |
|  | 41 | **PLS - Plant Lighting System** |  |  |  |  |  |
|  | 42 | **PRS - Protective Relay System** |  |  |  |  |  |
|  | 43 | **SAB - Auxiliary Boiler System** |  |  |  |  |  |
|  | 44 | **SAX - Auxiliary Steam System** |  |  |  |  |  |
|  | 45 | **SCR - Selective Catalytic Reduction System** |  |  |  |  |  |
|  | 46 | **SHP - High Pressure Steam System** |  |  |  |  |  |
|  | 47 | **SIP - Intermediate Pressure Steam System** |  |  |  |  |  |
|  | 48 | **SLP - Low Pressure Steam System** |  |  |  |  |  |
|  | 49 | **SRC - Cold Reheat Steam System** |  |  |  |  |  |
|  | 5 | **BLD - Miscellaneous Buildings & Structures** |  |  |  |  |  |
|  | 50 | **SRH - Hot Reheat Steam System** |  |  |  |  |  |
|  | 51 | **SST - Station Service Transformer** |  |  |  |  |  |
|  | 52 | **STG - Steam Turbine \ Generator** |  |  |  |  |  |
|  | 53 | **STI - Steam Turbine Instrumentation** |  |  |  |  |  |
|  | 54 | **STL - Steam Turbine Lube Oil System** |  |  |  |  |  |
|  | 55 | **STS - Steam Turbine Seals System** |  |  |  |  |  |
|  | 56 | **TCP - Temporary Construction Power System** |  |  |  |  |  |
|  | 57 | **UAT - Unit Aux Transformer** |  |  |  |  |  |
|  | 58 | **WSS - Service Water System** |  |  |  |  |  |
|  | 6 | **BLP - Power Distribution Center** |  |  |  |  |  |
|  | 7 | **BLT - CT \ ST Building** |  |  |  |  |  |
|  | 8 | **CAI - Instrument Air** |  |  |  |  |  |
|  | 9 | **CCF - Steam Cycle Chemical Feed** |  |  |  |  |  |
|  | 59 | **WWC - Wastewater Collection System** |  |  |  |  |  |
|  | 12 | **System Description & Manuals** |  |  |  |  |  |
|  | 6 | **Lists** |  |  |  |  |  |
|  | 4 | **Instrumentation & Controls** |  |  |  |  |  |
|  | 11 | **Data Sheets** |  |  |  |  |  |
|  | 1 | **Flow (Inline)** |  |  |  |  |  |
|  | 2 | **Temperature** |  |  |  |  |  |
|  | 3 | **Pressure** |  |  |  |  |  |
|  | 4 | **Level** |  |  |  |  |  |
|  | 5 | **Analyzers** |  |  |  |  |  |
|  | 6 | **Indicators & Switches** |  |  |  |  |  |
|  | 7 | **Miscellaneous** |  |  |  |  |  |
|  | 13 | **3D Modeling** |  |  |  |  |  |
|  | 10 | **Arrangements \ Layouts** |  |  |  |  |  |
|  | 5 | **Control Narratives** |  |  |  |  |  |
|  | 1 | **DCS Screens & Graphics** |  |  |  |  |  |
|  | 2 | **Factory Witness Test** |  |  |  |  |  |
|  | 8 | **Installation Details** |  |  |  |  |  |
|  | 3 | **I\O Database** |  |  |  |  |  |
|  | 4 | **Lists** |  |  |  |  |  |
|  | 6 | **Loop Diagrams \ Wiring** |  |  |  |  |  |
|  | 7 | **Specifications** |  |  |  |  |  |
|  | 1 | **General Specifications** |  |  |  |  |  |
|  | 2 | **DCS (BOP) Specification** |  |  |  |  |  |
|  | 3 | **Instrument Enclosures** |  |  |  |  |  |
|  | 4 | **Instrument Bulks** |  |  |  |  |  |
|  | 12 | **Studies** |  |  |  |  |  |
|  | 9 | **System Description & Manuals** |  |  |  |  |  |
|  | OSP | **Owner Supplied Procurement** |  | 2026-05-23 | 2026-10-30 |  |  |
|  | PROC | **Procurement** |  | 2026-05-23 | 2026-10-30 |  |  |
|  | CSA | **CSA** |  |  |  |  |  |
|  | MECH | **Mechanical** |  |  |  |  |  |
|  | PIPE | **Piping** |  | 2026-05-23 | 2026-10-30 |  |  |
| L2-PIPE.P02 |  | Award, Fab, Fabricate & Deliver High Energy Pipe to Site | 160d | 2026-05-23 | 2026-10-30 | -141d | 0d |

| ID | WBS | Activity | Type | Duration | Start | Finish | Predecessors | Total float | Free float |
| --- | --- | --- | --- | --- | --- | --- | --- | --- | --- |
|  | ELEC | **Electrical** |  |  |  |  |  |  |  |
|  | Contractor | **Construction** |  |  | 2026-05-26 | 2028-05-11 |  |  |  |
|  | CSA | **Civil Structural Architectural** |  |  |  |  |  |  |  |
|  | 1 | **Site Work** |  |  |  |  |  |  |  |
|  | 2 | **Pilings** |  |  |  |  |  |  |  |
|  | 5 | **UG Piping and Ductbank** |  |  |  |  |  |  |  |
|  | 3 | **Foundations** |  |  |  |  |  |  |  |
|  | 4 | **Buildings** |  |  |  |  |  |  |  |
|  | OLD | **OLD WBS** |  |  |  |  |  |  |  |
|  | ELEC | **GSU Supplier** |  |  |  |  |  |  |  |
|  | 1 | **WSC** |  |  | 2026-05-26 | 2028-05-11 |  |  |  |
|  | PIPE | **Piping** |  |  |  |  |  |  |  |
|  | ELEC | **Electrical** |  |  |  |  |  |  |  |
|  | 1 | **Construction** |  |  | 2026-05-26 | 2028-05-11 |  |  |  |
|  | 2 | **Heat Recovery Steam Generator** |  |  | 2026-05-26 | 2028-03-30 |  |  |  |
| PCL-HRSG-MEC-1000 |  | HRSG - Complete HRSG Mech Stl & Casing (Summary) | level of effort | 40.9d | 2026-05-26 | 2026-07-06 | WSC-HRSG-STL-1020 (other project) SS | 773.5d | 0d |
| PCL-HRSG-STR-1050 |  | HRSG - Main Steel Stucture Alignment Survey | milestone | 0d | 2026-06-02 | 2026-06-02 | WSC-HRSG-STL-1050 (other project) FF | 1037.5d |  |
| PCL-HRSG-MEC-1010 |  | HRSG - Unload & Set HRSG Modules (Summary) | level of effort | 29.4d | 2026-07-01 | 2026-07-30 | WSC-HRSG-MEC-1220 (other project) SS | -156d | 0d |
| PCL-HRSG-STR-1010 |  | HRSG - Stair Tower (Summary) | level of effort | 98.9d | 2026-07-31 | 2026-11-06 | WSC-HRSG-STL-1040 (other project) SS | -39d | 0d |
| PCL-HRSG-STR-1030 |  | HRSG - Erect Steam Drum Support Steel | milestone | 0d | 2026-09-22 | 2026-09-22 | WSC-HRSG-STL-1000 (other project) | 925d |  |
| PCL-HRSG-MEC-1020 |  | HSRG - Inlet Duct (Summary) | level of effort | 6.9d | 2026-09-30 | 2026-10-06 | WSC-HRSG-MEC-1180 (other project) SS | 402d | 0d |
| PCL-HRSG-MEC-1050 |  | HRSG - Align and Level Inlet Duct, Record Findings | milestone | 0d | 2026-10-06 | 2026-10-06 | WSC-HRSG-MEC-1160 (other project) FF | 911d |  |
| PCL-HRSG-E&I-1000 |  | HRSG - Tray Conduit and Cable (Summary) | level of effort | 469.9d | 2026-10-14 | 2028-01-26 | WSC-HRSG-E&I-1020 (other project) SS | -174d | 0d |
| PCL-HRSG-SUB-1000 |  | HRSG - Install Insulation to All Inlet Duct Construction Joints | level of effort | 6.9d | 2026-10-16 | 2026-10-22 | WSC-HRSG-MEC-1310 (other project) SS, WSC-HRSG-MEC-1310 (other project) FF | -157d | 0d |
| PCL-HRSG-STR-1020 |  | HRSG - Install Platforms, Grating, and Handrails | milestone | 0d | 2026-10-20 | 2026-10-20 | WSC-HRSG-STL-1030 (other project) | 897d |  |
| PCL-HRSG-MEC-1100 |  | HRSG - Install and Weld Breeching | level of effort | 43.9d | 2026-10-28 | 2026-12-10 | WSC-HRSG-MEC-1340 (other project) SS, WSC-HRSG-MEC-1340 (other project) FF | 309d | 0d |
| PCL-HRSG-STR-1000 |  | HRSG - | level of effort | 208.9d | 2026-11-18 | 2027-06-14 | WSC-HRSG-MEC-1430 (other project) SS | 151d | 0d |
| PCL-HRSG-MEC-1090 |  | HRSG - Stack Welding Through Stack Expansion Joint Install (Summary) | level of effort | 114.9d | 2026-11-25 | 2027-03-19 | WSC-HRSG-MEC-1360 (other project) SS | 25d | 0d |
| PCL-HRSG-MEC-1080 |  | Set HRSG Drums | milestone | 0d | 2026-12-01 | 2026-12-01 | WSC-HRSG-MEC-1190 (other project) | 855d |  |
| PCL-HRSG-STR-1040 |  | HRSG - Erect Silencer Steel | milestone | 0d | 2027-01-08 | 2027-01-08 | WSC-HRSG-STL-1010 (other project) | 817d |  |
| PCL-HRSG-PIP-1010 |  | HRSG - LP Steam Piping | level of effort | 70.9d | 2027-02-08 | 2027-04-19 | WSC-HRSG-PIP-1000 (other project) SS, WSC-HRSG-PIP-1020 (other project) FF | 8d | 0d |
| PCL-HRSG-PIP-1050 |  | HRSG - IP Steam Piping | level of effort | 0d | 2027-03-08 | 2027-03-08 | WSC-HRSG-PIP-1010 (other project) FF, WSC-HRSG-PIP-1030 (other project) | -20d | 0d |
| PCL-HRSG-PIP-1070 |  | Hydro HRSG Piping | level of effort | 279.9d | 2027-03-09 | 2027-12-13 | WSC-HRSG-PIP-1040 (other project) SS, WSC-HRSG-PIP-1050 (other project) SS | -73d | 0d |
| PCL-HRSG-PIP-1060 |  | HRSG - NH3 Piping | level of effort | 0d | 2027-03-12 | 2027-03-12 | WSC-HRSG-MEC-1050 (other project) | 754d | 0d |
| PCL-HRSG-PIP-1000 |  | HRSG - HP Steam Piping | level of effort | 84.9d | 2027-03-22 | 2027-06-14 | WSC-HRSG-PIP-1060 (other project) SS, WSC-HRSG-PIP-1060 (other project) FF | 24d | 0d |
| PCL-HRSG-SUB-1010 |  | HRSG 1 Heat Trace and Insulation | level of effort | 206.9d | 2027-04-20 | 2027-11-12 | WSC-HRSG-SUB-1020 (other project) FF, WSC-HRSG-SUB-1000 (other project) SS | -142d | 0d |
| PCL-HRSG-MEC-1110 |  | HRSG - Install Tube Restraint Stops | milestone | 0d | 2027-05-03 | 2027-05-03 | WSC-HRSG-MEC-1210 (other project) | 702d |  |
| PCL-HRSG-PIP-1030 |  | HRSG - BFW Piping | level of effort | 99.9d | 2027-06-01 | 2027-09-08 | WSC-BOP-PIP-1090 (other project) FF, WSC-BOP-PIP-1120 (other project) SS | -176d | 0d |
| PCL-GEN-CIV-1040 |  | HRSG Grout | milestone | 0d | 2027-06-07 | 2027-06-07 | WSC-HRSG-CIV-1040 (other project) | 667d |  |
| PCL-HRSG-MEC-1030 |  | Complete HRSG Seam Wid, Plattorm, & Baffles | milestone | 0d | 2027-06-14 | 2027-06-14 | WSC-HRSG-MEC-1140 (other project) | 660d |  |
| PCL-HRSG-MEC-1060 |  | HRSG - Complete all Internals Installation | milestone | 0d | 2027-06-14 | 2027-06-14 | WSC-HRSG-MEC-1150 (other project) FF, WSC-HRSG-MEC-1140 (other project) FF | 660d |  |
| PCL-HRSG-MEC-1120 |  | HRSG - Complete All Welding | milestone | 0d | 2027-06-14 | 2027-06-14 | WSC-HRSG-MEC-1140 (other project) FF | 660d |  |
| PCL-HRSG-STR-1060 |  | Erect Utility Rack Exterior | level of effort | 171.9d | 2027-06-15 | 2027-12-03 | WSC-PR-STL-1010 (other project) SS | -92d | 0d |
| PCL-HRSG-E&I-1010 |  | HRSG - Instrumentation (Summary) | level of effort | 141.9d | 2027-09-16 | 2028-02-04 | WSC-HRSG-E&I-1130 (other project) SS | -84d | 0d |
| PCL-HRSG-E&I-1020 |  | Install HRSG Terms (Summary) | level of effort | 87.9d | 2028-01-03 | 2028-03-30 | WSC-HRSG-E&I-1010 (other project) SS | -181d | 0d |

| ID | WBS | Activity | Type | Duration | Start | Finish | Predecessors | Total float | Free float |
| --- | --- | --- | --- | --- | --- | --- | --- | --- | --- |
|  | 1 | **HRSG - Civil** |  |  |  |  |  |  |  |
|  | 2 | **HRSG - Structural** |  |  |  |  |  |  |  |
|  | 3 | **HRSG - Modules** |  |  |  |  |  |  |  |
|  | 4 | **HRSG - Casing and Drums** |  |  |  |  |  |  |  |
|  | 5 | **HRSG - Stack and Outlet Duct** |  |  |  |  |  |  |  |
|  | 6 | **HRSG - Inlet Duct** |  |  |  |  |  |  |  |
|  | 7 | **HRSG - Equipment** |  |  |  |  |  |  |  |
|  | 10 | **HRSG- Electrical** |  |  |  |  |  |  |  |
|  | 8 | **HRSG - Penthouse** |  |  |  |  |  |  |  |
|  | 9 | **HRSG - Piping** |  |  |  |  |  |  |  |
|  | 1 | **Combustion Turbine** |  |  | 2026-09-14 | 2028-05-08 |  |  |  |
| PCL-CTG-MEC-1060 |  | Combustion Turbine - Install Gas Turbine (Summary) | level of effort | 0d | 2026-09-14 | 2026-09-14 | WSC-CT-MEC-1100 (other project) SS | 933.7d | 0d |
| PCL-CTG-MEC-1020 |  | Set Combustion Turbine | milestone | 0d | 2027-03-14 | 2027-03-14 | WSC-CT-MEC-1080 (other project) FF | 752.2d |  |
| PCL-CTG-MEC-1010 |  | Combustion Turbine - Exhaust (Summary) | level of effort | 127.9d | 2027-03-15 | 2027-07-20 | WSC-CT-MEC-1120 (other project) SS | -140d | 0d |
| PCL-CTG-MEC-1070 |  | Erect Balance of Combustion Turbine Eqipment | level of effort | 277.9d | 2027-03-15 | 2027-12-17 | WSC-CT-MEC-1120 (other project) SS | -120d | 0d |
| PCL-CTG-MEC-1050 |  | Combustion Turbine 1 Equipment Pipe Install | level of effort | 317.9d | 2027-04-05 | 2028-02-16 | WSC-CT-PIP-1070 (other project) SS | -138d | 0d |
| PCL-STG-PIP-1000 |  | Erect Combustion Turbine and Steam Turbine Piping | level of effort | 296.9d | 2027-04-05 | 2028-01-26 | WSC-CT-PIP-1070 (other project) SS | -181d | 0d |
| PCL-CTG-MEC-1030 |  | Combustion Turbine - Inlet (Summary) |  | 0d | 2027-06-29 | 2027-06-29 | WSC-CT-MEC-1280 (other project) SS | 51.9d | 42.9d |
| PCL-CTG-MEC-1000 |  | Combustion Turbine - Final Piping and Enclosures (Summary) | level of effort | 203.9d | 2027-07-28 | 2028-02-16 | WSC-CT-MEC-1290 (other project) SS | -138d | 0d |
| PCL-CTG-PIP-1000 |  | Combustion Turbine - Process Piping (Summary) | level of effort | 142.9d | 2027-07-28 | 2027-12-17 | WSC-CT-PIP-1010 (other project) SS | -106d | 0d |
| PCL-CTG-E&I-1000 |  | Combustion Turbine - Electrical (Summary) | level of effort | 278.9d | 2027-08-04 | 2028-05-08 | WSC-CT-E&I-1030 (other project) SS, WSC-CT-E&I-1050 (other project) SS | -178d | 0d |
| PCL-CTG-MEC-1080 |  | Combustion Turbine - Testing (Summary) | level of effort | 104.9d | 2027-11-04 | 2028-02-16 | WSC-CT-PIP-1040 (other project) SS, WSC-CT-PIP-1060 (other project) SS | -138d | 0d |
| PCL-CTG-E&I-1010 |  | Combustion Turbine 1 Instrumentation | level of effort | 60.9d | 2027-11-22 | 2028-01-21 | WSC-CT-E&I-1040 (other project) SS, WSC-CT-E&I-1040 (other project) FF | -176d | 0d |
| PCL-CTG-SUB-1000 |  | CTG1 Insulation | level of effort | 84.9d | 2028-01-20 | 2028-04-13 | WSC-CT-SUB-1000 (other project) SS, WSC-CT-SUB-1000 (other project) FF | -153d | 0d |

| ID | WBS | Activity | Type | Duration | Start | Finish | Predecessors | Total float | Free float | Constraint |
| --- | --- | --- | --- | --- | --- | --- | --- | --- | --- | --- |
|  | 11 | **Generator** |  |  |  |  |  |  |  |  |
|  | 10 | **Steam Turbine** |  |  | 2027-05-06 | 2028-04-06 |  |  |  |  |
| PCL-STG-MEC-1010 |  | Steam Turbine - HP (Summary) | level of effort | 210.9d | 2027-05-06 | 2027-12-02 | WSC-ST-MEC-1190 (other project) SS | -177d | 0d |  |
| PCL-GEN-CIV-1050 |  | ST, CT, Gen Train Assembly Grout |  | 0d | 2027-05-26 | 2027-05-26 | WSC-ST-MEC-1190 (other project) | 679d | 0d |  |
| PCL-GEN-CIV-1060 |  | Misc Equipment Grout |  | 0d | 2027-05-26 | 2027-05-26 | WSC-ST-MEC-1190 (other project) | 679d | 0d |  |
| PCL-GEN-CIV-1070 |  | Misc Grout MES & MPS Supports |  | 0d | 2027-05-26 | 2027-05-26 | WSC-ST-MEC-1190 (other project) | 679d |  |  |
| PCL-STG-STR-1000 |  | Erect ST, GT, GEN Enclosure Building |  | 0d | 2027-05-26 | 2027-05-26 | WSC-ST-MEC-1190 (other project) | 679d |  |  |
| PCL-STG-MEC-1000 |  | Steam Turbine - IP/LP (Summary) | level of effort | 217.9d | 2027-05-27 | 2027-12-30 | WSC-ST-MEC-1200 (other project) SS | -181d | 0d |  |
| PCL-STG-MEC-1020 |  | Steam Turbine - Set HP Steam Turbine | milestone | 0d | 2027-07-06 | 2027-07-06 | WSC-ST-MEC-1070 (other project) FF | 638d |  |  |
| PCL-STG-MEC-1050 |  | Steam Turbine - Set IP/LP Steam Turbine |  | 0d | 2027-07-13 | 2027-07-13 | WSC-ST-MEC-1060 (other project) FF | 631d |  |  |
| PCL-STG-PIP-1010 |  | Steam Turbine - Install Piping (Summary) | level of effort | 182.9d | 2027-07-28 | 2028-01-26 | WSC-ST-PIP-1010 (other project) SS, WSC-ST-PIP-1060 (other project) SS | -181d | 0d |  |
| PCL-CTG-SUB-1010 |  | ST1 Insulation | level of effort | 84.9d | 2027-08-10 | 2027-11-02 | WSC-ST-SUB-1010 (other project) SS, WSC-ST-SUB-1010 (other project) FF | 10d | 0d |  |
| PCL-STG-E&I-1000 |  | Steam Turbine - Instrumentation (Summary) | level of effort | 197.9d | 2027-08-25 | 2028-03-09 | WSC-ST-E&I-1020 (other project) SS, WSC-ST-E&I-1010 (other project) SS | -153d | 0d |  |
| PCL-STG-STR-1010 |  | Steam Turbine - Steel (Summary) | level of effort | 92.9d | 2027-09-15 | 2027-12-16 | WSC-ST-STR-1000 (other project) SS, WSC-ST-STR-1010 (other project) FF | -97d | 0d |  |
| PCL-STG-MEC-1030 |  | Steam Turbine - Test Piping (Summary) | level of effort | 118.9d | 2027-10-21 | 2028-02-16 | WSC-ST-PIP-1070 (other project) SS, WSC-ST-PIP-1040 (other project) SS, WSC-ST-PIP-1050 (other project) SS, WSC-ST-PIP-1050 (other project) FF, WSC-ST-PIP-1070 (other project) FF, WSC-ST-PIP-1040 (other project) FF | -131d | 0d |  |
| PCL-STG-MEC-1040 |  | Steam Turbine - Finish ST Through Final Alignment (Summary) | level of effort | 125.9d | 2027-12-03 | 2028-04-06 | WSC-ST-MEC-1180 (other project) SS | -181d | 0d |  |
|  | 3 | **Utility Rack** |  |  | 2027-05-03 | 2027-12-03 |  |  |  |  |
| PCL-PR-STR-1010 |  | Erect Utility Rack Interior (Summary) | level of effort | 214.9d | 2027-05-03 | 2027-12-03 | WSC-PR-STL-1000 (other project) SS | -92d | 0d |  |
| PCL-PR-E&I-1000 |  | Rack Electrical (Summary) | level of effort | 141.9d | 2027-06-28 | 2027-11-16 | WSC-PR-E&I-1010 (other project) SS | -4d | 0d |  |
| PR-1020 |  | Structural Steel Fabrication and Delivery (N/A) |  | 0d | 2027-08-23 | 2027-08-23 | WSC-PR-E&I-1010 (other project) | 590d |  | start on or after 2025-11-14 |
|  | 4 | **Air Cooled Condenser** |  |  | 2026-11-23 | 2028-05-10 |  |  |  |  |
| PCL-ACC-PIP-1000 |  | ACC Pipe Installation (Summary) | level of effort | 175.9d | 2026-11-23 | 2027-05-17 | WSC-ACC-PIP-1010 (other project) SS | 108d | 0d |  |
| PCL-ACC-STR-1000 |  | ACC Steel (Summary) | level of effort | 214.9d | 2027-02-18 | 2027-09-20 | WSC-ACC-STR-1000 (other project) SS | -227.9d | 0d |  |
| PCL-ACC-PIP-1020 |  | ACC Pipe Testing (Summary) | level of effort | 99.9d | 2027-04-06 | 2027-07-14 | WSC-ACC-PIP-1040 (other project) SS | 79d | 0d |  |
| PCL-ACC-PIP-1010 |  | ACC Steam Duct (Summary) | level of effort | 49.9d | 2027-05-03 | 2027-06-21 | WSC-ACC-MEC-1110 (other project) SS, WSC-ACC-MEC-1110 (other project) FF | -164.9d | 0d |  |
| PCL-ACC-MEC-1000 |  | ACC Module Installation and Dress Out (Summary) | level of effort | 140.9d | 2027-05-17 | 2027-10-04 | WSC-ACC-MEC-1100 (other project) SS | -241.9d | 0d |  |
| PCL-ACC-E&I-1000 |  | ACC Electrical (Summary) | level of effort | 302.9d | 2027-06-01 | 2028-03-29 | WSC-ACC-E&I-1000 (other project) SS | -180d | 0d |  |
| PCL-ACC-STR-1010 |  | ACC Misc Steel (Summary) | level of effort | 118.9d | 2027-10-05 | 2028-01-31 | WSC-ACC-STR-1010 (other project) SS, WSC-ACC-STR-1010 (other project) FF | -244.9d | 0d |  |
| PCL-ACC-E&I-1010 |  | ACC Instrumentation (Summary) | level of effort | 170.9d | 2027-11-22 | 2028-05-10 | WSC-ACC-E&I-1010 (other project) SS, WSC-ACC-E&I-1050 (other project) SS | -180d | 0d |  |

| ID | WBS | Activity | Type | Duration | Start | Finish | Predecessors | Total float | Free float |
| --- | --- | --- | --- | --- | --- | --- | --- | --- | --- |
|  | 5 | **Water Treatment** |  |  | 2027-08-02 | 2027-10-25 |  |  |  |
| PCL-WT-E&I-1000 |  | Tanks / WT Electrical (Summary) | level of effort | 71d | 2027-08-02 | 2027-10-11 | WSC-WT-E&I-1000 (other project) SS | 31.9d | 0d |
| PCL-WT-E&I-1010 |  | Tanks / WT Instrumentation (Summary) | level of effort | 85d | 2027-08-02 | 2027-10-25 | WSC-WT-E&I-1030 (other project) SS | 17.9d | 0d |
|  | 6 | **BOP** |  |  | 2026-09-29 | 2028-05-11 |  |  |  |
| PCL-BOP-MEC-1010 |  | BOP Intall Ancillary Equipment (Summary) | level of effort | 442d | 2026-09-29 | 2027-12-14 | WSC-BOP-MEC-1020 (other project) SS, WSC-BOP-MEC-1250 (other project) SS, WSC-BOP-MEC-1290 (other project) SS, WSC-BOP-MEC-1010 (other project) SS, WSC-BOP-MEC-1420 (other project) SS, WSC-BOP-MEC-1110 (other project) SS, WSC-BOP-MEC-1040 (other project) SS, WSC-BOP-MEC-1170 (other project) SS, WSC-BOP-MEC-1160 (other project) SS, WSC-BOP-MEC-1000 (other project) SS, WSC-BOP-MEC-1150 (other project) SS, WSC-BOP-MEC-1220 (other project) SS, WSC-BOP-MEC-1430 (other project) SS, WSC-BOP-MEC-1130 (other project) SS, WSC-BOP-MEC-1230 (other project) SS, WSC-BOP-MEC-1080 (other project) SS, WSC-BOP-MEC-1070 (other project) SS, WSC-BOP-MEC-1210 (other project) SS, WSC-BOP-MEC-1240 (other project) SS, WSC-BOP-MEC-1340 (other project) SS, WSC-BOP-MEC-1280 (other project) SS, WSC-BOP-MEC-1260 (other project) SS, WSC-BOP-MEC-1030 (other project) SS, WSC-BOP-MEC-1050 (other project) SS, WSC-BOP-MEC-1060 (other project) SS, WSC-BOP-MEC-1140 (other project) SS, WSC-BOP-MEC-1440 (other project) SS, WSC-BOP-MEC-1300 (other project) SS, WSC-BOP-MEC-1310 (other project) SS, WSC-BOP-MEC-1320 (other project) SS, WSC-BOP-MEC-1020 (other project) FF, WSC-BOP-MEC-1250 (other project) FF, WSC-BOP-MEC-1290 (other project) FF, WSC-BOP-MEC-1010 (other project) FF, WSC-BOP-MEC-1420 (other project) FF, WSC-BOP-MEC-1110 (other project) FF, WSC-BOP-MEC-1040 (other project) FF, WSC-BOP-MEC-1170 (other project) FF, WSC-BOP-MEC-1160 (other project) FF, WSC-BOP-MEC-1000 (other project) FF, WSC-BOP-MEC-1150 (other project) FF, WSC-BOP-MEC-1220 (other project) FF, WSC-BOP-MEC-1430 (other project) FF, WSC-BOP-MEC-1130 (other project) FF, WSC-BOP-MEC-1230 (other project) FF, WSC-BOP-MEC-1080 (other project) FF, WSC-BOP-MEC-1070 (other project) FF, WSC-BOP-MEC-1210 (other project) FF, WSC-BOP-MEC-1240 (other project) FF, WSC-BOP-MEC-1340 (other project) FF, WSC-BOP-MEC-1280 (other project) FF, WSC-BOP-MEC-1260 (other project) FF, WSC-BOP-MEC-1030 (other project) FF, WSC-BOP-MEC-1050 (other project) FF, WSC-BOP-MEC-1060 (other project) FF, WSC-BOP-MEC-1140 (other project) FF, WSC-BOP-MEC-1440 (other project) FF, WSC-BOP-MEC-1300 (other project) FF, WSC-BOP-MEC-1310 (other project) FF, WSC-BOP-MEC-1320 (other project) FF | -282d | 0d |
| PCL-BOP-PIP-1010 |  | BOP AG Pipe Installation | level of effort | 60.9d | 2026-11-23 | 2027-01-22 | WSC-BOP-PIP-1150 (other project) SS | -37d | 0d |
| PCL-BOP-E&I-1000 |  | Install BOP Tray, Conduit, Cable, & Terms (Summary) | level of effort | 472.9d | 2027-01-11 | 2028-04-27 | WSC-BOP-E&I-1170 (other project) SS, WSC-BOP-E&I-1940 (other project) SS, WSC-BOP-E&I-1790 (other project) SS, WSC-BOP-E&I-1640 (other project) SS, WSC-BOP-E&I-1490 (other project) SS, WSC-BOP-E&I-1020 (other project) SS, WSC-BOP-E&I-1340 (other project) SS, WSC-BOP-E&I-1240 (other project) FF, WSC-BOP-E&I-2010 (other project) FF, WSC-BOP-E&I-1860 (other project) FF, WSC-BOP-E&I-1710 (other project) FF, WSC-BOP-E&I-1560 (other project) FF, WSC-BOP-E&I-1090 (other project) FF, WSC-BOP-E&I-1410 (other project) FF, WSC-BOP-E&I-1220 (other project) FF, WSC-BOP-E&I-1990 (other project) FF, WSC-BOP-E&I-1840 (other project) FF, WSC-BOP-E&I-1690 (other project) FF, WSC-BOP-E&I-1540 (other project) FF, WSC-BOP-E&I-1070 (other project) FF, WSC-BOP-E&I-1390 (other project) FF, WSC-BOP-E&I-1290 (other project) FF, WSC-BOP-E&I-2060 (other project) FF, WSC-BOP-E&I-1910 (other project) FF, WSC-BOP-E&I-1760 (other project) FF, WSC-BOP-E&I-1610 (other project) FF, WSC-BOP-E&I-1140 (other project) FF, WSC-BOP-E&I-1460 (other project) FF | -167d | 0d |
| PCL-BOP-STR-1000 |  | BOP Misc Steel Installation | level of effort | 194.9d | 2027-03-04 | 2027-09-14 | WSC-BOP-STL-1030 (other project) SS | -97d | 0d |
| PCL-BOP-E&I-1010 |  | BOP Instrumentation (Summary) | level of effort | 415.9d | 2027-03-23 | 2028-05-11 | WSC-BOP-E&I-1040 (other project) SS, WSC-BOP-E&I-1160 (other project) FF, WSC-BOP-E&I-1480 (other project) FF, WSC-BOP-E&I-1780 (other project) FF, WSC-BOP-E&I-1930 (other project) FF | -181d | 0d |
| PCL-BOP-SUB-1000 |  | BOP -Pipe Insulation (Summary) | level of effort | 206.9d | 2027-04-20 | 2027-11-12 | WSC-HRSG-SUB-1000 (other project) SS | -142d | 0d |
| PCL-BOP-PIP-1000 |  | Erect BOP Piping (Steam, Fuel, HRSG Supply) | level of effort | 0d | 2027-06-01 | 2027-06-01 | WSC-BOP-PIP-1120 (other project) SS | 673.9d | 0d |
|  | COMM | **Commissioning** |  |  | 2028-05-13 | 2028-08-18 |  |  |  |
|  | 1 | **Cold Commissioning** |  |  | 2028-05-13 | 2028-08-17 |  |  |  |
| Comm-01 |  | JV - Cold Commission / System Turnovers (Summary) | level of effort | 89.9d | 2028-05-13 | 2028-08-10 | Comm-01 (other project) FF, Comm-01 (other project) SS | -250d | 0d |
| Comm-06 |  | JV - Ready For First Fire | milestone | 0d | 2028-08-17 | 2028-08-17 | Comm-06 (other project) FF | 0d |  |
|  | 2 | **Hot Commissioning** |  |  | 2028-08-17 | 2028-08-18 |  |  |  |
| Comm-07 |  | First Fire, Startup to Full Speed/Fuel Gas |  | 1d | 2028-08-17 | 2028-08-18 | Comm-06 (other project) | 0d |  |
|  | 3 | **Performance Testing and Closeout** |  |  |  |  |  |  |  |

# Wolf Summit Energy Center - Civil - Production Schedule - Baker Current

Schedule from Primavera P6, 2026-04-14 to 2027-02-03, data date 2025-12-15.

## Schedule

| WBS | Activity | Start | Finish |
| --- | --- | --- | --- |
| 01 | **Unit 1** | 2026-04-14 | 2027-02-03 |
| MS | **Major Milestones** |  |  |
| DM | **Delivery Milestones** |  |  |
| ENG | **Engineering Milestones - (Need By)** |  |  |
| 2 | **EM U/G Piping Systems** |  |  |
| HRSG EM | **EM CCWA_01 HRSG Area** |  |  |
| 8 | **EM CCWA-01 HRSG Area - U/G Piping** |  |  |
| 7 | **EM CCWA-01 HRSG Area - U/G Electrical** |  |  |
| 3 | **EM HRSG CEMS - (GA Item # 25) - Foundation** |  |  |
| 1 | **EM HRSG - Main - (GA Item # 3 / 108) - Pile Layout** |  |  |
| 2 | **EM HRSG - Main - (GA Item # 3 / 108) - Foundations** |  |  |
| 4 | **EM HRSG South - (GA Item # 48 / 49 / 108) - Pile Layout** |  |  |
| 5 | **EM HRSG - South - (GA Item# 48 / 49 / 108) - Foundations** |  |  |
| 6 | **EM HRSG Blowdown Drain Sump - (GA Item# 46) - Foundation** |  |  |
| CT / ST & Turbine EM | **EM CCWA_02 CT / ST & Turbine Area** |  |  |
| 7 | **EM CCWA-02 Turbine Area - U/G Piping** |  |  |
| 1 | **EM CCWA-02 Turbine Area - U/G Electrical** |  |  |
| 15 | **EM CT / ST - (GA Item# 1 / 2 / 5 / 91) - Pile Layout** |  |  |
| 2 | **EM CT / ST - (GA Item# 1 / 2 / 5 / 91) - Foundations** |  |  |
| 3 | **EM Turbine Bldg - (GA Item# 27 / 55 / 71 / 72 / 82 / 83 / 105) - Pile Layout** |  |  |
| 4 | **EM Turbine Bldg - (GA Item# 27 / 55 / 71 / 72 / 82 / 83 / 105) - Foundations** |  |  |
| 5 | **EM ST Bypass Valve Access Platform - (GA Item# 74) - Pile Layout** |  |  |
| 6 | **EM ST Bypass Valve Access Platform - (GA Item# 74) - Foundations** |  |  |
| 8 | **EM Vacuum Drains Tank and Pit - (GA Item# 73) - Foundations** |  |  |
| 9 | **EM Air Processing Unit - (GA Item# 78) - Foundations** |  |  |
| 11 | **EM Water Wash Skid (GA Item# 42) - Foundations** |  |  |
| 12 | **EM Oil Water Separator - (GA Item# 30) - Foundations** |  |  |
| 10 | **EM Stator Cooling Water Skid / Air Processing Unit - (GA Item# 81) - Foundations** |  |  |
| 13 | **EM Fire Protection Valve House - (GA Item# 104) - Foundations** |  |  |
| Utility Rack EM | **EM CCWA_05 Utility Rack Engineering Milestones** |  |  |
| 7 | **EM CCWA_05 Utility Rack Area - U/G Electrical** |  |  |
| 1 | **EM Utility Rack - (GA Item# 56) - Pile Layout** |  |  |
| 2 | **EM Utility Rack - (GA Item# 56) - Foundations** |  |  |
| 3 | **EM LP Economizer Recirc Pumps - (GA Item# 24) - Foundations** |  |  |
| 4 | **EM CT Performance Heater - (GA Item# 47) - Foundations** |  |  |
| 1 | **EM CCWA-05 Utility Rack Area - U/G Electrical** |  |  |
| 5 | **EM Fuel Gas Absolute Separator - (GA Item# 57) - Foundations** |  |  |
| 6 | **EM Fuel Gas Electric Heater - (GA Item# 18) - Foundations** |  |  |
| ACC EM | **EM CCWA_06 ACC Engineering Milestones** |  |  |
| 13 | **EM CCWA_06 ACC Area - U/G Electrical** |  |  |
| 1 | **EM ACC - (GA Item# 4) - Pile Layout)** |  |  |
| 2 | **EM ACC - (GA Item# 4) - Foundations** |  |  |
| 3 | **EM ACC PDC - (GA Item# 21) - Foundations** |  |  |
| 4 | **EM ACC Turbine Exhaust Duct - (GA Item# 75) - Pile Layout** |  |  |
| 5 | **EM ACC Turbine Exhaust Duct - (GA Item# 75) - Foundations** |  |  |
| 6 | **EM ACC Vacuum Pump Skids - (GA Item# 23) - Foundations** |  |  |
| 7 | **EM Condensate Colletion Tank \ Deaerator - (GA Item# 43) - Foundations** |  |  |
| 8 | **EM ACC Drain Pot \ Pumps \ Pit - (GA Item# 76) - Foundations** |  |  |
| 9 | **EM ACC Cleaning Pump - (GA Item# 77) - Foundations** |  |  |
| 10 | **EM Cycle Chemical Feed Totes & Pumps - (GA Item# 85) - Foundations** |  |  |
| 11 | **EM ACC Holding Steam Jet Air Ejectors - (GA Item# 94) - Foundations** |  |  |
| 12 | **EM ACC Condensate Pumps - (GA Item# 95) - Foundations** |  |  |
| Emer. Diesel Gen. EM | **EM CCWA_07 Emergency Diesel Generator Engineering Milestones** |  |  |
| 3 | **EM CCWA_07 EDG Area - U/G Electrical** |  |  |
| 1 | **EM Emergency Diesel Generator - (GA Item# 14) - Pile Layout** |  |  |
| 2 | **EM Emergency Diesel Generator - (GA Item# 14) - Foundations** |  |  |
| LV Switchgear PDC EM | **EM CCWA_08 LV Switchgear PDC Engineering Milestones** |  |  |
| 5 | **EM CCWA_08 LV Switchgear PDC Area - U/G Electrical** |  |  |
| 1 | **EM Evap Cooler Water Skid - (GA Item# 68) - Foundations** |  |  |
| 2 | **EM CT Water Mist Skid - (GA Item# 33) - Foundations** |  |  |
| 3 | **EM CT Battery Compartment - (GA Item# 31) - Foundations** |  |  |
| 4 | **EM PEECC - (GA Item# 32) - Foundations** |  |  |
| Air Inlet Filter EM | **EM CCWA_09 Air Inlet Filter Engineering Milestones** |  |  |
| 3 | **EM CCWA_09 Air Inlet Filter Area - U/G Electrical** |  |  |
| 1 | **EM Air Inlet Filter - (GA Item# 62) - Pile Layout** |  |  |
| 2 | **EM Air Inlet Filter - (GA Item# 62) - Foundations** |  |  |
| Fin Fan Cooler EM | **EM CCWA_10 Fin Fan Cooler Engineering Milestones** |  |  |
| 3 | **EM CCWA_10 Fin Fan Cooler Area - U/G Electrical** |  |  |
| 1 | **EM Closed Cycle Cooling Water Pumps - (GA Item# 34) - Foundations** |  |  |
| 2 | **EM Finfan Cooler - (GA Item# 20) - Foundations** |  |  |

| WBS | Activity |
| --- | --- |
| Boiler Feed Pump EM | **EM CCWA_11 Boiler Feed Pump Engineering Milestones** |
| 5 | **EM CCWA_11 Boiler Feed Pump Area - U/G Electrical** |
| 1 | **EM Boiler Feed Pipe Rack - (GA Item# 67) - Pile Layout** |
| 2 | **EM Boiler Feed Pipe Rack - (GA Item# 67) - Foundations** |
| 3 | **EM Boiler Feed Pump Bldg - (GA Item# 22 \ 44 \ 45 \ 50) - Pile Layout** |
| 4 | **EM Boiler Feed Pump Bldg - (GA Item# 22 \ 44 \ 45 \ 50) - Foundations** |
| 6 | **EM HRSG PDC - (GA Item# 44)** |
| Control/Admin/WH EM | **EM CCWA_12 Control / Admin. / Warehouse Engineering Milestones** |
| 3 | **EM CCWA_12 Control Room \ Admin \ Warehouse - U/G Electrical** |
| 1 | **EM Control \ Admin \ Warehouse Bldg - (GA Item# 11\ 17) - Pile Layout** |
| 2 | **EM Control \ Admin \ Warehouse Bldg - (GA Item# 11 \ 17) - Foundations** |
| GSU EM | **EM CCWA_13 GSU Engineering Milestones** |
| 14 | **EM CCWA_13 GSU Area - U/G Electrical** |
| 1 | **EM Main PDC - (GA Item# 28) - Foundations** |
| 6 | **EM LCI and Exciter Compartment - (GA Item# 38) - Foundations** |
| 7 | **EM CT Excitation Transformer - (GA Item# 39) - Foundations** |
| 2 | **EM CT Isolation Transformer - (GA Item# 40) - Foundations** |
| 3 | **EM 6.9kV Station Service Transformers - (GA Item# 63) - Foundations** |
| 8 | **EM Generator Circuit Breaker - (GA Item# 41) - Foundations** |
| 4 | **EM Isolated Phase Bus Duct - (GA Item# 89) - Foundations** |
| 5 | **EM AC Link Reactor - (GA Item# 69) - Foundations** |
| 9 | **EM DC Link Reactor - (GA Item# 90) - Foundations** |
| 10 | **EM Generator Step-Up Transformer - (GA Item# 15) - Pile Layout** |
| 11 | **EM Generator Step-Up Transformer - (GA Item# 15) - Foundations** |
| 15 | **EM Generator Step-Up Transformer - (GA Item# 15) - Firewalls** |
| 12 | **EM Unit Aux Transformer - (GA Item# 19) - Pile Layout** |
| 13 | **EM Unit Aux Transformer - (GA Item# 19) - Foundations** |
| 16 | **EM Unit Aux Transformer - (GA Item# 19) - Firewalls** |
| Aux Boiler EM | **EM CCWA_14 Aux Boiler Engineering Milestones** |
| 3 | **EM CCWA_14 Aux Boiler Bldg Area - U/G Electrical** |
| 1 | **EM Aux Boiler Bldg - (GA Item# 10 \ 29 \ 65 \ 87 \ 97 \ 98 \ 99) - Pile Layout** |
| 2 | **EM Aux Boiler Bldg - (GA Item# 10 \ 29 \ 65 \ 87 \ 97 \ 98 \ 99) - Foundations** |
| Plant Gas Yard EM | **EM CCWA_17 Plant Gas Yard Engineering Milestones** |
| 9 | **EM CCWA_17 Plant Gas Yard Area - U/G Electrical** |
| 1 | **EM Gas Metering Station - (GA Item# 53) - Pile Layout)** |
| 2 | **EM Gas Metering Station - (GA Item# 53) - Foundations** |
| 3 | **EM Fuel Gas Dew Point Heater - (GA Item# 100) - Pile Layout** |
| 4 | **EM Fuel Gas Dew Point Heater - (GA Item# 100) - Foundations** |
| 5 | **EM Fuel Gas Conditioning Skid - (GA Item# 101) - Pile Layout** |
| 6 | **EM Fuel Gas Conditioning Skid - (GA Item# 101) - Foundations** |
| 7 | **EM Fuel Gas Drains Tank - (GA Item# 102) - Pile Layout** |
| 8 | **EM Fuel Gas Drains Tank - (GA Item# 102) - Foundations** |
| Amm. Storage Tank EM | **EM CCWA_19 Ammonia Storage Tank Engineering Milestones** |
| 3 | **EM CCWA_19 Ammonia Storage Tank Area - U/G Electrical** |
| 1 | **EM Ammonia Storage Tank - (GA Item# 13 \ 88 \ 93) - Pile Layout** |
| 2 | **EM Ammonia Storage Tank - (GA Item# 13 \ 88 \ 93) - Foundations** |
| Serv./Fire/ Demin EM | **EM CCWA_21 Serv./Fire/ Demin Engineering Milestones** |
| 14 | **EM CCWA_21 Service \ Fire Protection \ Demin Water Area - U/G Electrical** |
| 1 | **EM Demin Water Tank - (GA Item# 7) - Pile Layout** |
| 5 | **EM Demin Water Tank - (GA Item# 7) - Foundations** |
| 2 | **EM Service \ Fire Protection Water Tank - (GA Item# 8) - Pile Layout** |
| 3 | **EM Service \ Fire Protection Water Tank - (GA Item# 8) - Foundations** |
| 4 | **EM Waste Water Tank - (GA Item# 9) - Pile Layout** |
| 6 | **EM Waste Water Tank - (GA Item# 9) - Foundations** |
| 7 | **EM Waste Water Forwarding Pumps - (GA Item# 84) - Foundations** |
| 8 | **EM Service Water Pumps - (GA Item# 96) - Foundations** |
| 9 | **EM Demin Water Supply Pumps - (GA Item# 35) - Foundations** |
| 10 | **EM Demin Water Treatment Trailer Parking Pad - (GA Item# 52) - Foundations** |
| 11 | **EM Fire Pump Enclosure - (GA Item# 12) - Pile Layout** |
| 12 | **EM Fire Pump Enclosure - (GA Item# 12) - Foundations** |
| Hydrogen Storage EM | **EM CCWA_22 Hydrogen Storage Engineering Milestones** |
| 2 | **EM CCWA_22 Hydrogen Storage Area - U/G Electrical** |
| 1 | **EM Hydrogen Bulk Storage - (GA Item# 54) - Foundations** |
| PM | **Project Milestones** |
| CONT | **Contingency** |
| 00 | **CCW_00 - Balance of Plant** |
| 04 | **Engineering** |
| 02 | **Site Excavation** |
| MM | **Site Excavation Major Milestones** |
| 7 | **Site Development Engineering** |

| ID | WBS | Activity | Duration | Start | Finish | Total float | Free float |
| --- | --- | --- | --- | --- | --- | --- | --- |
|  | 4 | **Site Development Procurement** |  |  |  |  |  |
|  | 6 | **Site Development Preparation** |  |  |  |  |  |
|  | 1 | **Storm Networks** |  |  |  |  |  |
|  | 2 | **Powerblock** |  |  |  |  |  |
|  | 3 | **Mass Excavation and Backfill** |  |  |  |  |  |
|  | 5 | **Site Development - BOP** |  |  |  |  |  |
|  | 05 | **Procurement** |  |  |  |  |  |
|  | 31 | **Piling** |  |  |  |  |  |
|  | Piling Fab & Proc | **BOP - Piling Fabrication & Procurement** |  |  |  |  |  |
|  | 1 | **BOP - Piling Fabrication & Procurement** |  |  |  |  |  |
|  | 31 | **BOP - Piling Mobilization / Test / Demob** |  |  |  |  |  |
|  | 1 | **BOP Under Ground Pipe Fabrication & Procurement** |  |  |  |  |  |
|  | AST | **Fab & Proc - AST - Ammonia Storage & Transfer - Underground Piping** |  |  |  |  |  |
|  | CAI | **Fab & Proc - CAI - Instrument Air - Underground Piping** |  |  |  |  |  |
|  | CCW | **Fab & Proc - CCW - Closed Cycle Cooling Water - Underground Piping** |  |  |  |  |  |
|  | CTG | **Fab & Proc - CTG - Combustion Turbine \ Generator - Underground Piping** |  |  |  |  |  |
|  | DMN | **Fab & Proc - DMN - Demineralized Water - Underground Piping** |  |  |  |  |  |
|  | FGS | **Fab & Proc - FGS - Fuel Gas Regulating and Conditioning - Underground Piping** |  |  |  |  |  |
|  | FWS | **Fab & Proc - FWS - Firewater - Underground Piping** |  |  |  |  |  |
|  | WSP | **Fab & Proc - WSP - Potable Water - Underground Piping** |  |  |  |  |  |
|  | WSS | **Fab & Proc - WSS - Service Water Underground Piping** |  |  |  |  |  |
|  | WWC | **Fab & Proc - WWC - Waste Water Collection - Underground Piping** |  |  |  |  |  |
|  | 15 | **BOP Under Ground Pipe Install** |  |  |  |  |  |
|  | 16 | **BOP Under Ground Electrical** |  |  |  |  |  |
|  | 2 | **BOP Under Ground Electrical Fabrication & Procurement - Duct Banks / Manholes** |  |  |  |  |  |
|  | 01 | **CCWA_01 - HRSG Area** |  | 2026-04-20 | 2026-04-28 |  |  |
|  | 04 | **Engineering** |  |  |  |  |  |
|  | 05 | **Procurement** |  |  |  |  |  |
|  | 15 | **HRSG Under Ground Pipe** |  |  |  |  |  |
|  | HRSG Fab & Proc | **CCWA_01 - HRSG Fabrication & Procurement** |  |  |  |  |  |
|  | 1 | **Fab & Proc HRSG Area Piling** |  |  |  |  |  |
|  | 4 | **Fab & Proc HRSG U/G Piping** |  |  |  |  |  |
|  | 2 | **Fab & Proc HRSG Area Under Ground Electrical** |  |  |  |  |  |
|  | 3 | **Fab & Proc HRSG - Main - (GA Item# 3 / 108) - Foundation** |  |  |  |  |  |
|  | 5 | **Fab & Proc HRSG - South - (GA Item# 48 / 49 / 108) - Foundation** |  |  |  |  |  |
|  | 6 | **Fab & Proc HRSG Blowdown Drain Sump - (GA Item# 46) - Foundation** |  |  |  |  |  |
|  | 31 | **HRSG Pilings** |  |  |  |  |  |
|  | 1 | **HRSG - Main - (GA Item# 3 / 108) - Piling Install** |  |  |  |  |  |
|  | 2 | **HRSG - South - (GA Item# 48 / 49 / 108) - Piling Install** |  |  |  |  |  |
|  | 3 | **HRSG Under Ground Piping** |  |  |  |  |  |
|  | 16 | **HRSG Under Ground Electrical** |  |  |  |  |  |
|  | 03 | **HRSG Foundations** |  | 2026-04-20 | 2026-04-28 |  |  |
|  | 530 | **HRSG Base Mat (GA#3)** |  |  |  |  |  |
|  | MAIN | **HRSG - Main - (GA Item# 3 / 108) - Foundation** |  | 2026-04-20 | 2026-04-24 |  |  |
| CCWA_01-03780 |  | HRSG - Final Inspection and Turnover of HRSG Main | 5d | 2026-04-20 | 2026-04-24 | -32.62d | 0d |

| ID | WBS | Activity | Duration | Start | Finish | Total float | Free float |
| --- | --- | --- | --- | --- | --- | --- | --- |
|  | DBS | **Duct Burner Skid (GA#48)** |  |  |  |  |  |
|  | AIS | **Ammonia Injection Skid (GA#49)** |  |  |  |  |  |
|  | SOUTH | **HRSG - South - (GA Item# 48 / 49 / 108) - Foundation** |  |  |  |  |  |
|  | LERP | **LP Economizer Recirc Pumps (GA#24)** |  |  |  |  |  |
|  | 533 | **HRSG CEMS (GA#25)** |  |  |  |  |  |
|  | 536 | **HRSG Blow Down Tank (GA#26)** |  |  |  |  |  |
|  | HBDDS | **HRSG Blowdown Drain Sump - (GA Item# 46) - Foundation** |  | 2026-04-27 | 2026-04-28 |  |  |
| CCWA_01-03670 |  | Backfill - HRSG Blow Down Drain Sump | 1d | 2026-04-27 | 2026-04-28 | 89.75d | 0d |
|  | 02 | **CCWA_02 - Turbine Area** |  | 2026-04-14 | 2026-10-06 |  |  |
|  | 04 | **CCWA_02 - Turbine Fabrication & Procurement** |  |  |  |  |  |
|  | 6 | **Fab & Proc Turbine Area Piping** |  |  |  |  |  |
|  | 14 | **Fab & Proc Turbine Area Piling** |  |  |  |  |  |
|  | 13 | **Fab & Proc Turbine Area UG Electrical** |  |  |  |  |  |
|  | 1 | **Fab & Proc CT / ST / GEN - Basemat - (GA Item# 1 / 2 / 5 / 91)** |  |  |  |  |  |
|  | 2 | **Fab & Proc CT / ST / GEN - Pedestals - (GA Item# 1 / 2 / 5 / 91)** |  |  |  |  |  |
|  | 3 | **Fab & Proc CT / ST / GEN - Table Top - (GA Item# 1 / 2 / 5 / 91)** |  |  |  |  |  |
|  | 4 | **Fab & Proc ST Bypass Valve Access Platform - (GA Item# 74)** |  |  |  |  |  |
|  | 5 | **Fab & Proc Turbine Building - (GA Item# 27 / 55 / 71 / 72 / 82 / 83 / 105)** |  |  |  |  |  |
|  | 7 | **Fab & Proc Vacuum Drain Tank And Pit - (GA Item# 73)** |  |  |  |  |  |
|  | 8 | **Fab & Proc Water Wash Skid - (GA Item# 42)** |  |  |  |  |  |
|  | 9 | **Fab & Proc Air Processing Unit - (GA Item# 78)** |  |  |  |  |  |
|  | 11 | **Fab & Proc Oil Water Separator - (GA Item# 30)** |  |  |  |  |  |
|  | 12 | **Fab & Proc Fire Protection Valve House - (GA Item# 104)** |  |  |  |  |  |
|  | 10 | **Fab & Proc Wash Water Drains - Sump - (GA Item# 37)** |  |  |  |  |  |
|  | 05 | **Procurement** |  |  |  |  |  |
|  | 15 | **Turbine Under Ground Pipe** |  |  |  |  |  |
|  | 31 | **Turbine Pilings** |  |  |  |  |  |
|  | 1 | **CT / ST / GEN - Piling Install** |  |  |  |  |  |
|  | 2 | **Turbine Building - Piling Install** |  |  |  |  |  |
|  | 3 | **ST Bypass Valve Access Platform - Piling Install** |  |  |  |  |  |
|  | 1 | **Turbine Under Ground Piping** |  |  |  |  |  |
|  | 16 | **Turbine Under Ground Electrical** |  |  |  |  |  |
|  | 03 | **Turbine Foundations** |  | 2026-04-14 | 2026-10-06 |  |  |
|  | CT/ST/GEN BASEMAT | **CT/ ST / GEN - Basemat - (GA Item# 1 / 2 / 5 / 91) - Foundation** |  | 2026-06-08 | 2026-06-17 |  |  |
| CCWA_02-03740 |  | Backfill - CT/ ST / GEN - Basemat | 3.75d | 2026-06-08 | 2026-06-11 | 57.25d | 0d |
| CCWA_02-6166 |  | Final Inspection and Turnover of CT/ ST / GEN - Basemat Foundation | 5d | 2026-06-11 | 2026-06-17 | 71d | 0d |

| ID | WBS | Activity | Duration | Start | Finish | Total float | Free float |
| --- | --- | --- | --- | --- | --- | --- | --- |
|  | GT/G/ST | **CT/GEN/ST Turbine Base Fnd (GA#1)** |  |  |  |  |  |
|  | CT/ST/GEN PED | **CT / ST / GEN - Pedastals - (GA Item# 1 / 2 / 5 / 91) - Foundation** |  | 2026-07-17 | 2026-07-27 |  |  |
| CCWA_02-03840 |  | Backfill - CT / ST / Gen - Pedestals | 7d | 2026-07-17 | 2026-07-27 | 18.12d | 0d |
|  | CTP | **Combustion Turbine Pedestals (GA#1)** |  |  |  |  |  |
|  | CT/ST/GEN TABLETOP | **CT / ST / GEN - Table Top - (GA Item# 1 / 2 / 5 / 91) - Foundation** |  | 2026-08-10 | 2026-08-18 |  |  |
| CCWA_02-03830 |  | Backfill - CT / ST / Gen - Table Top | 7d | 2026-08-10 | 2026-08-18 | 141.88d | 0d |
|  | GENP | **Generator Pedestals (GA#2)** |  |  |  |  |  |
|  | ST BYPASS | **ST Bypass Valve Access Platform - (GA Item# 74) - Foundation** |  | 2026-08-28 | 2026-09-02 |  |  |
| CCWA_02-03750 |  | Backfill - Utility Pipe Rack (West) | 4d | 2026-08-28 | 2026-09-02 | 127.62d | 0d |
|  | STP | **Steam Turbine Pedestals (GA#5)** |  |  |  |  |  |
|  | TB | **Turbine Building (GA#55)** |  |  |  |  |  |
|  | TURBINE BUILDING | **Turbine Building - (GA Item# 27 / 55 / 71 / 72 / 82 / 83 / 105) - Foundation** |  | 2026-09-22 | 2026-10-06 |  |  |
| CCWA_02-03820 |  | Backfill - Turbine Building | 7d | 2026-09-22 | 2026-09-30 | 77.12d | 0d |
| CCWA_02-6266 |  | Final Inspection and Turnover of Turbine Building Foundation | 5d | 2026-09-30 | 2026-10-06 | 77.12d | 0d |
|  | LOT | **Lube Oil Tank (GA#27)** |  |  |  |  |  |
|  | VDTP | **Vacuum Drain Tank And Pit - (GA Item# 73) - Foundation** |  | 2026-09-15 | 2026-09-16 |  |  |
| CCWA_02-03410 |  | Backfill - Vacuum Drain Tank And Pit | 1d | 2026-09-15 | 2026-09-16 | 117d | 0d |
|  | WWDT | **Wash Water Drain Tank (GA#37)** |  |  |  |  |  |
|  | WWS | **Water Wash Skid - (GA Item# 42) - Foundation** |  | 2026-04-14 | 2026-04-15 |  |  |
| CCWA_02-03380 |  | Backfill - Water Wash Skid | 1d | 2026-04-14 | 2026-04-15 | 250.5d | 0d |
|  | ART | **Air Receiver Tank - (GA Item# 78) - Foundation** |  | 2026-08-18 | 2026-08-26 |  |  |
| CCWA_02-6386 |  | Backfill - Air Processing Unit | 7d | 2026-08-18 | 2026-08-26 | 218.38d | 0d |
|  | SCWS | **Stator Cooling Water Skid / Air Processing Unit - (GA Item# 81) - Foundation** |  |  |  |  |  |
|  | OWS | **Oil Water Separator - (GA Item# 30) - Foundation** |  | 2026-09-03 | 2026-09-14 |  |  |
| CCWA_02-6646 |  | Backfill - Oil Water Separator | 7d | 2026-09-03 | 2026-09-14 | 203.38d | 0d |

| ID | WBS | Activity | Duration | Start | Finish | Total float | Free float |
| --- | --- | --- | --- | --- | --- | --- | --- |
|  | FPVH | **Fire Protection Valve House - (GA Item# 104) - Foundation** |  |  |  |  |  |
|  | WWD | **Wash Water Drains - Sump - (GA Item# 37) - Foundation** |  |  |  |  |  |
|  | 13 | **CCWA_13 - Generator Step-Up Transformer (GSU) Area** |  | 2026-06-09 | 2026-10-28 |  |  |
|  | 04 | **CCWA_13 - GSU Fabrication & Procurement** |  |  |  |  |  |
|  | 13 | **Fab & Proc GSU Area Piling** |  |  |  |  |  |
|  | 12 | **Fab & Proc GSU Area UG Electrical** |  |  |  |  |  |
|  | 1 | **Fab & Proc Generator Step-Up Transformer (GSU) - (GA Item# 15)** |  |  |  |  |  |
|  | 15 | **Fab & Proc Generator Step-Up Transformer (GSU) - (GA Item# 15) - Firewalls** |  |  |  |  |  |
|  | 14 | **Fab & Proc Unit Aux Transformer Piling - (GA Item# 44)** |  |  |  |  |  |
|  | 2 | **Fab & Proc Unit Aux Transformer - (GA Item# 19)** |  |  |  |  |  |
|  | 16 | **Fab & Proc Unit Aux Transformer - (GA Item# 19) - Firewalls** |  |  |  |  |  |
|  | 3 | **Fab & Proc Isolated Phase Bus Duct - (GA Item# 89)** |  |  |  |  |  |
|  | 4 | **Fab & Proc Main PDC - (GA Item# 28)** |  |  |  |  |  |
|  | 5 | **Fab & Proc LCI and Exciter Compartment - (GA Item# 38)** |  |  |  |  |  |
|  | 6 | **Fab & Proc CT Isolation Tranformer - (GA Item# 40)** |  |  |  |  |  |
|  | 7 | **Fab & Proc Generator Circuit Breaker - (GA Item# 41)** |  |  |  |  |  |
|  | 8 | **Fab & Proc CT Excitation Transformer - (GA Item# 39)** |  |  |  |  |  |
|  | 9 | **Fab & Proc 6.9 kV Station Service Transformer - (GA Item# 63)** |  |  |  |  |  |
|  | 10 | **Fab & Proc AC Link Reactor - (GA Item# 69)** |  |  |  |  |  |
|  | 11 | **Fab & Proc DC Link Reactor - (GA Item# 90)** |  |  |  |  |  |
|  | 31 | **GSU Pilings Installs** |  |  |  |  |  |
|  | 1 | **GSU Transformer - (GA Item# 15) - Piling Install** |  |  |  |  |  |
|  | 2 | **Unit Aux Transformer - (GA Item# 19) - Piling Install** |  |  |  |  |  |
|  | 16 | **GSU Under Ground Electrical** |  |  |  |  |  |
|  | 2 | **GSU UG Electrical Install** |  |  |  |  |  |
|  | 03 | **GSU Foundations** |  | 2026-06-09 | 2026-10-28 |  |  |
|  | GSUF | **Generator Step-Up Transformer (GSU) - (GA Item# 15) - Foundation** |  | 2026-06-10 | 2026-06-15 |  |  |
| CCWA_13-03920 |  | Backfill - Generator Step-Up Transformer (GSU) | 3d | 2026-06-10 | 2026-06-15 | 192.12d | 0d |

| ID | WBS | Activity | Duration | Start | Finish | Total float | Free float |
| --- | --- | --- | --- | --- | --- | --- | --- |
|  | UAT | **Unit Aux Transformer - (GA Item# 19) - Foundation** |  | 2026-06-09 | 2026-06-12 |  |  |
| CCWA_13-03980 |  | Backfill - Unit Aux Transformer | 4d | 2026-06-09 | 2026-06-12 | 195.12d | 0d |
|  | EFW | **Equipment Fire Walls (GA#58)** |  |  |  |  |  |
|  | IPBD | **Isolated Phase Bus Duct - (GA Item# 89) - Foundation** |  | 2026-09-23 | 2026-09-25 |  |  |
| CCWA_13-03930 |  | Backfill - Isolated Phase Bus Duct | 3d | 2026-09-23 | 2026-09-25 | 112.62d | 7.75d |
|  | EB | **Electrical Building (GA#28)** |  |  |  |  |  |
|  | MPDC | **Main PDC - (GA Item# 28) - Foundation** |  | 2026-09-15 | 2026-09-16 |  |  |
| CCWA_13-03540 |  | Backfill - Electrical Building | 1d | 2026-09-15 | 2026-09-16 | 122.38d | 0d |
|  | LEC | **LCI and Exciter Compartment - (GA Item# 38) - Foundation** |  | 2026-08-11 | 2026-08-13 |  |  |
| CCWA_13-03820 |  | Backfill - Electrical Building | 2d | 2026-08-11 | 2026-08-13 | 151d | 5.38d |
|  | CIT | **CT Isolation Tranformer - (GA Item# 40) - Foundation** |  | 2026-07-14 | 2026-07-16 |  |  |
| CCWA_13-03950 |  | Backfill - CTG Isolation Tranformer | 3d | 2026-07-14 | 2026-07-16 | 175d | 2.88d |
|  | GCB | **Generator Circuit Breaker - (GA Item# 41) - Foundation** |  | 2026-10-20 | 2026-10-22 |  |  |
| CCWA_13-03830 |  | Backfill - Generator Circuit Breaker | 2d | 2026-10-20 | 2026-10-22 | 89.75d | 0d |
|  | CET | **CT Excitation Transformer - (GA Item# 39) - Foundation** |  | 2026-07-20 | 2026-07-22 |  |  |
| CCWA_13-03940 |  | Backfill - CTG Excitation Transformer | 3d | 2026-07-20 | 2026-07-22 | 170.12d | 0.25d |
|  | 6.9kVST | **6.9 kV Station Service Transformer - (GA Item# 63) - Foundation** |  | 2026-10-27 | 2026-10-28 |  |  |
| CCWA_13-03810 |  | Backfill - 6.9 kV Station Service Transformer | 1d | 2026-10-27 | 2026-10-28 | 84.38d | 0d |
|  | KBY | **138 KV Breaker Yard (GA#6)** |  |  |  |  |  |
|  | ALR | **AC Link Reactor - (GA Item# 69) - Foundation** |  | 2026-06-16 | 2026-06-17 |  |  |
| CCWA_13-62620 |  | Backfill - AC Link Reactor | 1d | 2026-06-16 | 2026-06-17 | 189.62d | 0.62d |
|  | DLR | **DC Link Reactor - (GA Item# 90) - Foundation** |  | 2026-06-16 | 2026-06-17 |  |  |
| CCWA_13-62740 |  | Backfill - DC Link Reactor | 1d | 2026-06-16 | 2026-06-17 | 200.75d | 0.62d |
|  | 14 | **CCWA_14 - Aux Boiler Area - (GA Item# 10 / 29 / 65 / 87 / 97 / 98 / 99)** |  | 2027-01-26 | 2027-02-03 |  |  |
|  | 04 | **Engineering** |  |  |  |  |  |
|  | 2 | **Fab & Proc Aux Boiler Piling** |  |  |  |  |  |
|  | 3 | **Fab & Proc Aux Boiler UG Electrical** |  |  |  |  |  |
|  | 1 | **Auxiliary Boiler Building - (GA Item# 10 / 29 / 65 / 87 / 97 / 98 / 99)** |  |  |  |  |  |
|  | 05 | **Procurement** |  |  |  |  |  |
|  | 15 | **Aux Boiler Under Ground Pipe** |  |  |  |  |  |
|  | 31 | **Aux Boiler Pilings** |  |  |  |  |  |
|  | 16 | **Aux Boiler Under Ground Electrical** |  |  |  |  |  |
|  | 03 | **Aux Boiler Foundations** |  | 2027-01-26 | 2027-02-03 |  |  |
|  | ABB | **Auxiliary Boiler Building - (GA Item# 10 / 29 / 65 / 87 / 97 / 98 / 99) - Foundation** |  | 2027-01-26 | 2027-02-03 |  |  |
| CCWA_14-03400 |  | Backfill - Auxiliary Boiler Building | 3d | 2027-01-26 | 2027-01-28 | -11d | 0d |
| CCWA_14-63804 |  | Final Inspection and Turnover of Auxiliary Boiler Building | 5d | 2027-01-28 | 2027-02-03 | -11d | 0d |

| ID | WBS | Activity | Duration | Start | Finish | Total float | Free float |
| --- | --- | --- | --- | --- | --- | --- | --- |
|  | 17 | **CCWA_17 - Plant Gas Area** |  | 2026-10-27 | 2026-11-19 |  |  |
|  | 04 | **Engineering** |  |  |  |  |  |
|  | 6 | **Fab & Proc Plant Gas Piling** |  |  |  |  |  |
|  | 5 | **Fab & Proc Plant Gas UG Electrical** |  |  |  |  |  |
|  | 1 | **Fab & Proc Fuel Gas Dew Point Heater - (GA Item# 100)** |  |  |  |  |  |
|  | 2 | **Fab & Proc Gas Metering Station - (GA Item# 53)** |  |  |  |  |  |
|  | 3 | **Fab & Proc Fuel Gas Conditioning Skid - (GA Item# 101)** |  |  |  |  |  |
|  | 4 | **Fab & Proc Fuel Gas Drain Tank - (GA Item# 102)** |  |  |  |  |  |
|  | 05 | **Procurement** |  |  |  |  |  |
|  | 15 | **Plant Gas Under Ground Pipe** |  |  |  |  |  |
|  | 1 | **Plant Gas Pilings Installs** |  |  |  |  |  |
|  | 1 | **Gas Metering Station Pilings Install** |  |  |  |  |  |
|  | 2 | **Fuel Gas Pilings Install** |  |  |  |  |  |
|  | 16 | **Plant Gas Under Ground Electrical** |  |  |  |  |  |
|  | 03 | **Plant Gas Foundations** |  | 2026-10-27 | 2026-11-19 |  |  |
|  | PGY | **Plant Gas Yard (GA#16)** |  |  |  |  |  |
|  | FGDPH | **Fuel Gas Dew Point Heater - (GA Item# 100) - Foundation** |  | 2026-10-27 | 2026-10-28 |  |  |
| CCWA_17-03320 |  | Backfill - Fuel Gas Dew Point Heater | 1d | 2026-10-27 | 2026-10-28 | 79.5d | 0d |
|  | OGMS | **Owner Gas Metering Station (GA#53)** |  |  |  |  |  |
|  | GMS | **Gas Metering Station - (GA Item# 53) - Foundation** |  | 2026-11-10 | 2026-11-10 |  |  |
| CCWA_17-03110 |  | Backfill - Gas Metering Station | 1d | 2026-11-10 | 2026-11-10 | 5d | 0d |
|  | SFGDPH | **Stack Fuel Gas Dew Point Heater (GA#AE-5)** |  |  |  |  |  |
|  | FGCS | **Fuel Gas Conditioning Skid - (GA Item# 101) - Foundation** |  | 2026-11-17 | 2026-11-19 |  |  |
| CCWA_17-03210 |  | Backfill - Fuel Gas Conditioning Skid | 3d | 2026-11-17 | 2026-11-19 | 58.75d | 0d |

| ID | WBS | Activity | Duration | Start | Finish | Total float | Free float |
| --- | --- | --- | --- | --- | --- | --- | --- |
|  | FGDT | **Fuel Gas Drain Tank - (GA Item# 102) - Foundation** |  | 2026-10-27 | 2026-10-29 |  |  |
| CCWA_17-64527 |  | Backfill - Fuel Gas Drain Tank | 3d | 2026-10-27 | 2026-10-29 | 77.62d | 0d |
|  | 19 | **CCWA_19 - Ammonia Storge Tank Area - (GA Item#13 / 88 / 93)** |  | 2027-01-26 | 2027-01-28 |  |  |
|  | 04 | **Engineering** |  |  |  |  |  |
|  | 2 | **Fab & Proc Ammonia Storge Tank Piling** |  |  |  |  |  |
|  | 3 | **Fab & Proc Ammonia Storge Tank UG Electrical** |  |  |  |  |  |
|  | 1 | **Fab & Proc Ammonia Storage Tank Foundation - (GA Item# 13 / 88 / 93)** |  |  |  |  |  |
|  | 05 | **Procurement** |  |  |  |  |  |
|  | 15 | **Ammonia Storage Tank Under Ground Pipe** |  |  |  |  |  |
|  | 31 | **Ammonia Storage Tank Pilings** |  |  |  |  |  |
|  | 03 | **Ammonia Storage Tank Foundations** |  |  |  |  |  |
|  | 16 | **Ammonia Storage Tank Under Ground Electrical** |  |  |  |  |  |
|  | 1 | **Ammonia Storage Tank Foundation** |  | 2027-01-26 | 2027-01-28 |  |  |
|  | 03 | **Ammonia Storage Tank Foundation - (GA Item# 13 / 88 / 93) - Foundation** |  | 2027-01-26 | 2027-01-28 |  |  |
| CCWA_19-03080 |  | Backfill - Ammonia Storage Tank | 3d | 2027-01-26 | 2027-01-28 | -21.38d | 0d |
|  | 21 | **CCWA_21 - Service / Fire Protection / Demin Water Area** |  | 2026-07-07 | 2026-10-21 |  |  |
|  | 04 | **CCWA_21 - Service / Fire Protection / Demin Water Area Fabrication & Procurement** |  |  |  |  |  |
|  | 11 | **Fab & Proc Demin Water Tank / Waste Water Tank Piling** |  |  |  |  |  |
|  | 10 | **Fab & Proc Fire Pump Enclosure - (GA Item#12) Piling** |  |  |  |  |  |
|  | 9 | **Fab & Proc Service/ Fire Protection / Demin Water UG Electrical** |  |  |  |  |  |
|  | 1 | **Fab & Proc Waste Water Tank - (GA Item# 9)** |  |  |  |  |  |
|  | 3 | **Fab & Proc Service / Fire Protection Water Tank - (GA Item# 8)** |  |  |  |  |  |
|  | 2 | **Fab & Proc Demin Water Supply Pumps - (GA Item# 35)** |  |  |  |  |  |
|  | 4 | **Fab & Proc Demin Water Tank - (GA Item# 7)** |  |  |  |  |  |
|  | 5 | **Fab & Proc Demin Water Treatment Trailer Parking Pad - (GA Item# 52)** |  |  |  |  |  |
|  | 6 | **Fab & Proc Fire Pump Enclosure (GA Item# 12)** |  |  |  |  |  |
|  | 7 | **Fab & Proc Waste Water Forward Pump - (GA Item# 84)** |  |  |  |  |  |
|  | 8 | **Fab & Proc Service Water Pumps - (GA Item# 96)** |  |  |  |  |  |
|  | 05 | **Procurement** |  |  |  |  |  |
|  | 15 | **Service Water/Fire Tanks Under Ground Pipe** |  |  |  |  |  |
|  | 31 | **Service / Fire Protection / Demin Water Pilings Installs** |  |  |  |  |  |
|  | 1 | **Demin Water Tank Pilings Install** |  |  |  |  |  |
|  | 2 | **Fire Pump Enclosure Piling Install** |  |  |  |  |  |
|  | 3 | **Waste Water Tank Pilings Install** |  |  |  |  |  |
|  | 16 | **Service / Fire Protection / Demin Water Under Ground Electrical** |  |  |  |  |  |
|  | 03 | **Service Water/Fire Tanks Foundations** |  | 2026-07-07 | 2026-10-21 |  |  |
|  | WWT | **Waste Water Tank - (GA Item# 9) - Foundation** |  | 2026-08-12 | 2026-08-13 |  |  |
| CCWA_21-03700 |  | Backfill - Waste Water Tank | 1d | 2026-08-12 | 2026-08-13 | 151.12d | 5.5d |

| ID | WBS | Activity | Duration | Start | Finish | Total float | Free float |
| --- | --- | --- | --- | --- | --- | --- | --- |
|  | DSWP | **Demin & Service Water Pumps (GA#35)** |  |  |  |  |  |
|  | DWSP | **Demin Water Supply Pumps - (GA Item# 35) - Foundation** |  | 2026-10-06 | 2026-10-07 |  |  |
| CCWA_21-03710 |  | Backfill - Demin Water Supply Pumps | 1d | 2026-10-06 | 2026-10-07 | 103.25d | 0d |
|  | SFPT | **Service / Fire Protection Water Tank - (GA Item# 8) - Foundation** |  |  |  |  |  |
|  | SWFPT | **Service Water/Fire Protection Tank (GA#8)** |  |  |  |  |  |
|  | DWT | **Demin Water Tank - (GA Item# 7) - Foundation** |  | 2026-09-29 | 2026-09-30 |  |  |
| CCWA_21-03530 |  | Backfill - Demin Water Tank | 1d | 2026-09-29 | 2026-09-30 | 104.5d | 0d |
|  | DWTTP | **Demin Water Treatment Trailer Parking Pad - (GA Item# 52) - Foundation** |  | 2026-10-20 | 2026-10-21 |  |  |
| CCWA_21-03730 |  | Backfill - Demin Water Treatment Trailer Parking Pad | 1d | 2026-10-20 | 2026-10-21 | 85.75d | 0d |
|  | FPE | **Fire Pump Enclosure (GA Item# 12) - Foundation** |  | 2026-07-07 | 2026-07-08 |  |  |
| CCWA_21-03720 |  | Backfill - Fire Pump Enclosure | 1d | 2026-07-07 | 2026-07-08 | -109.25d | 23.5d |
|  | SDFPH | **Stack Diesel Fire Pump House (GA#AE-4)** |  |  |  |  |  |
|  | WWFP | **Waste Water Forward Pump - (GA Item# 84) - Foundation** |  | 2026-09-29 | 2026-09-30 |  |  |
| CCWA_21-03540 |  | Backfill - Waste Water Forward Pump | 1d | 2026-09-29 | 2026-09-30 | 104.5d | 0d |
|  | SWP | **Service Water Pumps - (GA Item# 96) - Foundation** |  | 2026-09-29 | 2026-09-30 |  |  |
| CCWA_21-61122 |  | Backfill - Service Water Pumps | 1d | 2026-09-29 | 2026-09-30 | 188.25d | 0d |
|  | 05 | **CCWA_05 - Utility Rack Area** |  | 2026-06-22 | 2026-12-09 |  |  |
|  | 04 | **Engineering** |  |  |  |  |  |
|  | 7 | **Fab & Proc Utility Rack Piling** |  |  |  |  |  |
|  | 6 | **Fab & Proc Utility Rack UG Electrical** |  |  |  |  |  |
|  | 1 | **Fab & Proc Utility Pipe Rack - (GA Item# 56)** |  |  |  |  |  |
|  | 2 | **Fab & Proc CT Performance Heater - (GA Item #47)** |  |  |  |  |  |
|  | 3 | **Fab & Proc Fuel Gas Absolute Seperation (GA#57)** |  |  |  |  |  |
|  | 4 | **Fab & Proc LP Economizer Recirc Pumps - (GA Item# 24)** |  |  |  |  |  |
|  | 5 | **Fab & Proc Fuel Gas Electric Heater - (GA Item# 18)** |  |  |  |  |  |
|  | 05 | **Procurement** |  |  |  |  |  |
|  | 15 | **Utility Rack Under Ground Pipe** |  |  |  |  |  |
|  | 31 | **Utility Rack Pilings** |  |  |  |  |  |
|  | 16 | **Utility Rack Under Ground Electrical** |  |  |  |  |  |
|  | 03 | **Utility Rack Foundations** |  | 2026-06-22 | 2026-12-09 |  |  |
|  | UPR | **Utility Pipe Rack - (GA Item# 56) - Foundation** |  | 2026-08-25 | 2026-09-02 |  |  |
| CCWA_05-03320 |  | Backfill - Utility Rack Base | 3d | 2026-08-25 | 2026-08-27 | 52.5d | 0d |
| CCWA_01-6120 |  | Final Inspection and Turnover of Utility Rack Base | 5d | 2026-08-28 | 2026-09-02 | 52.5d | 89.88d |

| ID | WBS | Activity | Duration | Start | Finish | Total float | Free float |
| --- | --- | --- | --- | --- | --- | --- | --- |
|  | URB | **Utility Rack Base (GA#56)** |  |  |  |  |  |
|  | CTPH | **CT Performance Heater - (GA Item #47) - Foundation** |  | 2026-11-17 | 2026-11-18 |  |  |
| CCWA_05-03250 |  | Backfill - CTG Performance Heater | 1d | 2026-11-17 | 2026-11-18 | 60.75d | 0d |
|  | HBS | **Hydrogen Blending Skid (GA#51)** |  |  |  |  |  |
|  | CPH | **CTG Performance Heater (GA#47)** |  |  |  |  |  |
|  | FGAS | **Fuel Gas Absolute Seperation (GA#57) - Foundation** |  | 2026-12-07 | 2026-12-09 |  |  |
| CCWA_05-03240 |  | Backfill - Fuel Gas Absolute Seperation | 3d | 2026-12-07 | 2026-12-09 | 42.62d | 0d |
|  | LPERC | **LP Economizer Recirc Pumps - (GA Item# 24) - Foundation** |  | 2026-06-22 | 2026-06-29 |  |  |
| CCWA_05-61625 |  | Backfill - LP Economizer Recirc Pumps | 1d | 2026-06-22 | 2026-06-23 | 23.62d | 0d |
| CCWA_05-61635 |  | Final Inspection and Turnover of LP Economizer Recirc Pumps | 5d | 2026-06-23 | 2026-06-29 | 23.62d | 148.5d |
|  | FGEH | **Fuel Gas Electric Heater - (GA Item# 18) - Foundation** |  | 2026-11-17 | 2026-11-18 |  |  |
| CCWA_05-03430 |  | Backfill - Hydrogen Blending Skid | 1d | 2026-11-17 | 2026-11-18 | 60.75d | 0d |
|  | 09 | **CCWA_09 - Air Inlet Filter Area** |  | 2026-06-09 | 2026-06-11 |  |  |
|  | 04 | **CCWA_09 - Air Inlet Filter Fabrication & Procurement** |  |  |  |  |  |
|  | 2 | **Fab & Proc Air Inlet Filter Piling Fabrication & Procurement** |  |  |  |  |  |
|  | 1 | **Fab & Proc Air Inlet Filter UG Electrical Procurement** |  |  |  |  |  |
|  | 31 | **Air Inlet Filter Pilings** |  |  |  |  |  |
|  | 16 | **Air Inlet Filter Under Ground Electrical** |  |  |  |  |  |
|  | 03 | **Air Inlet Filter Foundations** |  | 2026-06-09 | 2026-06-11 |  |  |
|  | AAFF | **Air Inlet Filter Fdn (GA#62)** |  |  |  |  |  |
|  | AIF | **Air Inlet Filter - (GA Item# 62) - Foundation** |  | 2026-06-09 | 2026-06-11 |  |  |
| CCWA_09-03210 |  | Backfill - Air Inlet Filter | 3d | 2026-06-09 | 2026-06-11 | 205d | 0d |
|  | APS | **Air Processing Skid (GA#?)** |  |  |  |  |  |
|  | 06 | **CCWA_06 - Air Cooled Condenser Area** |  | 2026-08-19 | 2027-01-07 |  |  |
|  | 04 | **Engineering** |  |  |  |  |  |
|  | 12 | **Fab & Proc Air Cooled Condenser Piling** |  |  |  |  |  |
|  | 11 | **Fab & Proc ACC UG Electrical Fabrication & Procurement** |  |  |  |  |  |
|  | 1 | **Fab & Proc Air Cooled Condensor Foundations - (GA Item# 4)** |  |  |  |  |  |
|  | 2 | **Fab & Proc ACC PDC Foundations - (GA Item# 21)** |  |  |  |  |  |
|  | 3 | **Fab & Proc ACC Vacuum Pump Skids - (GA Item# 23)** |  |  |  |  |  |
|  | 4 | **Fab & Proc Condensate Collection Tank / Deaerator - (GA Item# 43)** |  |  |  |  |  |
|  | 5 | **Fab & Proc ACC Turbine Exhaust Duct - (GA Item #75)** |  |  |  |  |  |
|  | 6 | **Fab & Proc ACC Drain Pot / Pumps / Pit - (GA Item# 76)** |  |  |  |  |  |
|  | 7 | **Fab & Proc ACC Cleaning Pump - (GA Item# 77)** |  |  |  |  |  |
|  | 8 | **Fab & Proc Cycle Chemical Feed Totes And Pumps - (GA Item# 85)** |  |  |  |  |  |
|  | 9 | **Fab & Proc ACC Holding Steam Jet Air Ejectors - (GA Item# 94)** |  |  |  |  |  |
|  | 10 | **Fab & Proc ACC Cleaning Water Pumps - (GA Item# 95)** |  |  |  |  |  |
|  | 05 | **Procurement** |  |  |  |  |  |
|  | 15 | **Air Cooled Condenser Under Ground Pipe** |  |  |  |  |  |
|  | 31 | **Air Cooled Condenser Pilings** |  |  |  |  |  |
|  | 1 | **ACC - Piling Install** |  |  |  |  |  |
|  | 2 | **ACC Turbine Exhaust Duct - Piling Install** |  |  |  |  |  |
|  | 16 | **Air Cooled Condenser Under Ground Electrical** |  |  |  |  |  |
|  | 03 | **Air Cooled Condenser Foundations** |  | 2026-08-19 | 2027-01-07 |  |  |
|  | ACCF | **Air Cooled Condensor Foundations - (GA Item# 4) - Foundation** |  | 2026-08-24 | 2026-08-28 |  |  |
| CCWA_06-03430 |  | Backfill - ACC | 5d | 2026-08-24 | 2026-08-28 | 132.38d | 0d |

| ID | WBS | Activity | Duration | Start | Finish | Total float | Free float |
| --- | --- | --- | --- | --- | --- | --- | --- |
|  | ACCP | **ACC PDC Foundations - (GA Item# 21) - Foundation** |  | 2026-09-18 | 2026-09-23 |  |  |
| CCWA_06-03320 |  | Backfill - ACC PDC | 3d | 2026-09-18 | 2026-09-23 | 110.88d | 0d |
|  | AVPS | **ACC Vacuum Pump Skids - (GA Item# 23) - Foundation** |  | 2026-09-15 | 2026-09-16 |  |  |
| CCWA_06-03270 |  | Backfill -Vacuum Pump Skids | 1d | 2026-09-15 | 2026-09-16 | 117d | 0d |
|  | VPS | **Vacuum Pump Skids (GA#23)** |  |  |  |  |  |
|  | ACTP | **ACC Condensate Tank and Pumps (GA#43** |  |  |  |  |  |
|  | CCTD | **Condensate Collection Tank / Deaerator - (GA Item# 43) - Foundation** |  | 2026-09-15 | 2026-09-17 |  |  |
| CCWA_06-03310 |  | Backfill - Condensate Collection Tank / Deaerator | 3d | 2026-09-15 | 2026-09-17 | 115d | 0d |
|  | ATED | **ACC Turbine Exhaust Duct - (GA Item #75) - Foundation** |  | 2026-08-19 | 2026-08-20 |  |  |
| CCWA_06-65326 |  | Backfill - ACC Turbine Exhaust Duct | 2.5d | 2026-08-19 | 2026-08-20 | -32.38d | 0d |
|  | ADPPP | **ACC Drain Pot / Pumps / Pit - (GA Item# 76) - Foundation** |  | 2026-09-21 | 2026-09-23 |  |  |
| CCWA_06-65456 |  | Backfill - ACC Drain Pot / Pumps / Pit | 2.5d | 2026-09-21 | 2026-09-23 | 110.62d | 0d |
|  | ACP | **ACC Cleaning Pump - (GA Item# 77) - Foundation** |  | 2026-09-21 | 2026-09-23 |  |  |
| CCWA_06-65586 |  | Backfill - ACC Cleaning Pump | 2.5d | 2026-09-21 | 2026-09-23 | 110.62d | 0d |
|  | CCFTP | **Cycle Chemical Feed Totes And Pumps - (GA Item# 85) - Foundation** |  | 2027-01-06 | 2027-01-07 |  |  |
| CCWA_06-65716 |  | Backfill - Cycle Chemical Feed Totes & Pumps | 2.5d | 2027-01-06 | 2027-01-07 | 18.75d | 0d |
|  | AHSJAE | **ACC Holding Steam Jet Air Ejectors - (GA Item# 94) - Foundation** |  | 2026-09-21 | 2026-09-23 |  |  |
| CCWA_06-65846 |  | Backfill - ACC Turbine Exhaust Duct | 2.5d | 2026-09-21 | 2026-09-23 | 110.62d | 0d |
|  | ACWP | **ACC Cleaning Water Pumps - (GA Item# 95) - Foundation** |  | 2026-09-21 | 2026-09-23 |  |  |
| CCWA_06-66426 |  | Backfill - ACC Condensate Pumps | 2.5d | 2026-09-21 | 2026-09-23 | 194.38d | 0d |
|  | 12 | **CCWA_12 - Control/Admin/Warehouse Bldg Area - (GA Item# 11 / 17)** |  | 2026-11-17 | 2026-11-23 |  |  |
|  | 04 | **Engineering** |  |  |  |  |  |
|  | 2 | **Fab & Proc Control/Admin/Warehouse Bldg Piling** |  |  |  |  |  |
|  | 3 | **Fab & Proc Control/Admin/Warehouse Bldg UG Electrical** |  |  |  |  |  |
|  | 1 | **Fab & Proc Control/ Admin / Warehouse Bldg (GA Item# 11 / 17)** |  |  |  |  |  |
|  | 05 | **Procurement** |  |  |  |  |  |
|  | 15 | **Control/Admin/Warehouse Bldg Under Ground Pipe** |  |  |  |  |  |
|  | 31 | **Control/Admin/Warehouse Bldg Pilings** |  |  |  |  |  |
|  | 16 | **Control/Admin/Warehouse Bldg Under Ground Electrical** |  |  |  |  |  |
|  | 03 | **Control/Admin/Warehouse Bldg Foundations** |  | 2026-11-17 | 2026-11-23 |  |  |
|  | CAWHB | **Control/ Admin / Warehouse Bldg (GA Item# 11 / 17) - Foundation** |  | 2026-11-17 | 2026-11-23 |  |  |
| CCWA_12-03210 |  | Backfill - Control / Admin / Warehouse Bldg | 1d | 2026-11-17 | 2026-11-17 | 3.75d | 0d |
| CCWA_12-64601 |  | Final Inspection and Turnover of Control / Admin / Warehouse Bldg Foundation | 5d | 2026-11-18 | 2026-11-23 | 3.75d | 0d |

| ID | WBS | Activity | Duration | Start | Finish | Total float | Free float |
| --- | --- | --- | --- | --- | --- | --- | --- |
|  | WHB | **Warehouse Bldg (GA#17)** |  |  |  |  |  |
|  | CAB | **Control/Admin Bldg (GA#11)** |  |  |  |  |  |
|  | 22 | **CCWA_22 - Hydrogen Storage Area - (GA Item# 54)** |  | 2026-09-08 | 2026-09-08 |  |  |
|  | 04 | **Engineering** |  |  |  |  |  |
|  | 3 | **Fab & Proc Hydrogen Storage Tank UG Electrical** |  |  |  |  |  |
|  | 1 | **Fab & Proc Hydrogen Bulk Storage - (GA Item# 54)** |  |  |  |  |  |
|  | 05 | **Procurement** |  |  |  |  |  |
|  | 15 | **Hydrogen Storage Tank Under Ground Pipe** |  |  |  |  |  |
|  | 16 | **Hydrogen Storage Tank Under Ground Electrical** |  |  |  |  |  |
|  | 03 | **Hydrogen Storage Tank Foundations** |  | 2026-09-08 | 2026-09-08 |  |  |
|  | HBS | **Hydrogen Bulk Storage - (GA Item# 54) - Foundation** |  | 2026-09-08 | 2026-09-08 |  |  |
| CCWA_22-03090 |  | Backfill - Hydrogen Storage Area | 1d | 2026-09-08 | 2026-09-08 | 23.75d | 0d |
|  | 08 | **CCWA_08 - LV Switchgear PDC Area** |  | 2026-08-04 | 2026-09-30 |  |  |
|  | 04 | **Engineering** |  |  |  |  |  |
|  | 5 | **Fab & Proc LV Switchgear PDC UG Electrical** |  |  |  |  |  |
|  | 1 | **Fab & Proc CT Water Mist Skid - (GA Item# 33)** |  |  |  |  |  |
|  | 2 | **Fab & Proc CT Battery Compartment - (GA Item# 31)** |  |  |  |  |  |
|  | 3 | **Fab & Proc PEECC - (GA Item# 32)** |  |  |  |  |  |
|  | 4 | **Fab & Proc Evap Cooler Water Skid - (GA Item# 68)** |  |  |  |  |  |
|  | 05 | **Procurement** |  |  |  |  |  |
|  | 31 | **PDC Pilings** |  |  |  |  |  |
|  | 15 | **PDC Under Ground Pipe** |  |  |  |  |  |
|  | 16 | **PDC Under Ground Electrical** |  |  |  |  |  |
|  | 03 | **PDC Foundations** |  | 2026-08-04 | 2026-09-30 |  |  |
|  | CTWMS | **CT Water Mist Skid - (GA Item# 33) - Foundation** |  | 2026-09-29 | 2026-09-30 |  |  |
| CCWA_08-03430 |  | Backfill - CT Water Mist Skid | 1d | 2026-09-29 | 2026-09-30 | 104.5d | 0d |

| ID | WBS | Activity | Duration | Start | Finish | Total float | Free float |
| --- | --- | --- | --- | --- | --- | --- | --- |
|  | WMS | **Water Mist Skid GA#33)** |  |  |  |  |  |
|  | CTBC | **CT Battery Compartment - (GA Item# 31) - Foundation** |  | 2026-08-04 | 2026-08-05 |  |  |
| CCWA_08-03300 |  | Backfill - CT Battery Compartment | 1d | 2026-08-04 | 2026-08-05 | 9.62d | 0d |
|  | PEECC | **PEECC - (GA Item# 32) - Foundation** |  | 2026-09-28 | 2026-09-28 |  |  |
| CCWA_08-03310 |  | Backfill - PEECC | 1d | 2026-09-28 | 2026-09-28 | 106.38d | 0d |
|  | ECWS | **Evap Cooler Water Skid - (GA Item# 68) - Foundation** |  | 2026-09-29 | 2026-09-30 |  |  |
| CCWA_08-03320 |  | Backfill - Evap Cooler Water Skid | 1d | 2026-09-29 | 2026-09-30 | 104.5d | 0d |
|  | 10 | **CCWA_10 - Fin Fan Cooler Area** |  | 2026-07-20 | 2026-10-14 |  |  |
|  | 04 | **Engineering** |  |  |  |  |  |
|  | 05 | **Procurement** |  |  |  |  |  |
|  | 31 | **Fin Fan Pilings** |  |  |  |  |  |
|  | 15 | **Fin Fan Cooler Under Ground Pipe** |  |  |  |  |  |
|  | 2 | **CCWA_10 - Fin Fan Cooler Fabrication & Procurement** |  |  |  |  |  |
|  | 2 | **Fab & Proc Fin Fan Cooler UG Electrical Fabrication & Procurement** |  |  |  |  |  |
|  | 3 | **Fab & Proc Closed Cycle Cooling Water Pumps - (GA Item# 34)** |  |  |  |  |  |
|  | 1 | **Fab & Proc Fin Fan Cooler - (GA Item# 20)** |  |  |  |  |  |
|  | 16 | **Fin Fan Cooler Under Ground Electrical** |  |  |  |  |  |
|  | 03 | **Finn Fan Cooler Foundations** |  | 2026-07-20 | 2026-10-14 |  |  |
|  | FFCF | **Fin Fan Cooler - (GA Item# 20) - Foundation** |  | 2026-07-20 | 2026-07-27 |  |  |
| CCWA_10-03320 |  | Backfill - Fin Fan Cooler | 1d | 2026-07-20 | 2026-07-21 | 60.25d | 0d |
| CCWA_10-63109 |  | Final Inspection and Turnover of Fin Fan Cooler | 5d | 2026-07-21 | 2026-07-27 | 166.62d | 74.62d |
|  | CCCWP | **Closed Cycle Cooling Water Pumps - (GA Item# 34) - Foundation** |  | 2026-10-13 | 2026-10-14 |  |  |
| CCWA_10-03280 |  | Backfill - Cooling Water Pumps | 1d | 2026-10-13 | 2026-10-14 | 92d | 0d |
|  | SST | **6.9kv Station Service Transformers (GA#63)** |  |  |  |  |  |
|  | 11 | **CCWA_11 - Boiler Feed Area** |  | 2027-01-05 | 2027-01-11 |  |  |
|  | 04 | **Engineering** |  |  |  |  |  |
|  | 4 | **Fab & Proc Boiler Feed Piling** |  |  |  |  |  |
|  | 3 | **Fab & Proc Boiler Feed UG Electrical** |  |  |  |  |  |
|  | 1 | **Boiler Feed Pump Building - (GA Item# 22 / 44 / 45 / 50)** |  |  |  |  |  |
|  | 2 | **Boiler Feed Pipe Rack - (GA Item# 67)** |  |  |  |  |  |
|  | 5 | **HRSG PDC - (GA Item# 44)** |  |  |  |  |  |
|  | 05 | **Procurement** |  |  |  |  |  |
|  | 15 | **Boiler Feed Under Ground Pipe** |  |  |  |  |  |
|  | 31 | **Boiler Feed Pilings** |  |  |  |  |  |
|  | 1 | **Boiler Feed Pipe Rack Pilings Install** |  |  |  |  |  |
|  | 2 | **Boiler Feed Pump Building Pilings Install** |  |  |  |  |  |
|  | 16 | **Boiler Feed Under Ground Electrical** |  |  |  |  |  |
|  | 03 | **Boiler Feed Foundations** |  | 2027-01-05 | 2027-01-11 |  |  |
|  | BFPB | **Boiler Feed Pump Building - (GA Item# 22 / 44 / 45 / 50) - Foundation** |  | 2027-01-05 | 2027-01-11 |  |  |
| CCWA_11-03400 |  | Backfill - Boiler Feed Pump Building | 5d | 2027-01-05 | 2027-01-11 | 16.62d | 0d |

| ID | WBS | Activity | Duration | Start | Finish | Total float | Free float |
| --- | --- | --- | --- | --- | --- | --- | --- |
|  | BFPR | **Boiler Feed Pipe Rack - (GA Item# 67) - Foundation** |  | 2027-01-05 | 2027-01-11 |  |  |
| CCWA_11-03410 |  | Backfill - Boiler Feed Pipe Rack | 5d | 2027-01-05 | 2027-01-11 | 16.62d | 0d |
|  | 1 | **HRSG PDC - (GA Item #44) - Foundation** |  | 2027-01-05 | 2027-01-11 |  |  |
| CCWA_11-03530 |  | Backfill - HRSG PDC | 5d | 2027-01-05 | 2027-01-11 | -58.5d | 0d |
|  | 07 | **CCWA_07 - Emergency Diesel Area - (GA Item# 14)** |  | 2026-09-14 | 2026-09-15 |  |  |
|  | 04 | **CCWA_07 - Emergency Diesel Fabrication & Procurement** |  |  |  |  |  |
|  | 2 | **Fab & Proc Emergency Diesel Piling Fabrication & Procurement** |  |  |  |  |  |
|  | 1 | **Fab & Proc Emergency Diesel Generator UG Electrical Fabrication & Procurement** |  |  |  |  |  |
|  | 31 | **Emergency Diesel Pilings** |  |  |  |  |  |
|  | 16 | **Emergency Diesel Under Ground Electrical** |  |  |  |  |  |
|  | 03 | **Emergency Diesle Foundations** |  | 2026-09-14 | 2026-09-15 |  |  |
|  | EDG | **Emergency Diesel Generator - (GA Item# 14) - Foundation** |  | 2026-09-14 | 2026-09-15 |  |  |
| CCWA_07-03210 |  | Backfill - Emergency Diesel Generator | 1d | 2026-09-14 | 2026-09-15 | 55.25d | 0d |
